# HR Portal

How a schedule from MS Project changed from version to version. A marks actual dates.

## Version 1 (saved 2019-10-29, file GPI19-02-EX2.mpp)

Note of the change: Added solved project

| ID | WBS | Task | Duration | Start | Finish | Predecessors | Total float | Constraint |
| --- | --- | --- | --- | --- | --- | --- | --- | --- |
| 1 | 1 | **Project Management** | 147d | 2019-12-02 | 2020-07-01 |  | 0d |  |
| 2 | 1.1 | **Project Initiation** | 3d | 2019-12-02 | 2019-12-04 |  | 0d |  |
| 3 |  | Review Project Charter | 1d | 2019-12-02 | 2019-12-02 |  | 0d |  |
| 4 |  | Review Stakeholders Identification | 1d | 2019-12-03 | 2019-12-03 | 3 | 0d |  |
| 5 |  | Establish Project Team | 1d | 2019-12-04 | 2019-12-04 | 4 | 0d |  |
| 6 |  | Project Started | 0d | 2019-12-04 | 2019-12-04 | 5 | 0d |  |
| 7 | 1.2 | **Project Planning** | 5d | 2019-12-05 | 2019-12-11 |  | 0d |  |
| 8 |  | Review Project Scope and Time | 1d | 2019-12-05 | 2019-12-05 | 6 | 0d |  |
| 9 |  | Define Project Organization | 1d | 2019-12-06 | 2019-12-06 | 8 | 0d |  |
| 10 |  | Define Communication plan | 1d | 2019-12-09 | 2019-12-09 | 9 | 0d |  |
| 11 |  | Review Project Plan | 1d | 2019-12-10 | 2019-12-10 | 10 | 0d |  |
| 12 |  | Kick-off Meeting | 1d | 2019-12-11 | 2019-12-11 | 11 | 0d |  |
| 13 |  | Project Plan Approved | 0d | 2019-12-11 | 2019-12-11 | 12 | 0d |  |
| 14 | 1.3 | **Control** | 68d | 2019-12-13 | 2020-03-20 |  | 70d |  |
| 15 |  | Control 1 | 1d | 2019-12-13 | 2019-12-13 |  | 137d | start no earlier than 2019-12-13 |
| 16 |  | Control 2 | 1d | 2019-12-20 | 2019-12-20 |  | 132d | start no earlier than 2019-12-20 |
| 17 |  | Control 3 | 1d | 2019-12-27 | 2019-12-27 |  | 129d | start no earlier than 2019-12-27 |
| 18 |  | Control 4 | 1d | 2020-01-03 | 2020-01-03 |  | 125d | start no earlier than 2020-01-03 |
| 19 |  | Control 5 | 1d | 2020-01-10 | 2020-01-10 |  | 120d | start no earlier than 2020-01-10 |
| 20 |  | Control 6 | 1d | 2020-01-17 | 2020-01-17 |  | 115d | start no earlier than 2020-01-17 |
| 21 |  | Control 7 | 1d | 2020-01-24 | 2020-01-24 |  | 110d | start no earlier than 2020-01-24 |
| 22 |  | Control 8 | 1d | 2020-01-31 | 2020-01-31 |  | 105d | start no earlier than 2020-01-31 |
| 23 |  | Control 9 | 1d | 2020-02-07 | 2020-02-07 |  | 100d | start no earlier than 2020-02-07 |
| 24 |  | Control 10 | 1d | 2020-02-14 | 2020-02-14 |  | 95d | start no earlier than 2020-02-14 |
| 25 |  | Control 11 | 1d | 2020-02-21 | 2020-02-21 |  | 90d | start no earlier than 2020-02-21 |
| 26 |  | Control 12 | 1d | 2020-02-28 | 2020-02-28 |  | 85d | start no earlier than 2020-02-28 |
| 27 |  | Control 13 | 1d | 2020-03-06 | 2020-03-06 |  | 80d | start no earlier than 2020-03-06 |
| 28 |  | Control 14 | 1d | 2020-03-13 | 2020-03-13 |  | 75d | start no earlier than 2020-03-13 |
| 29 |  | Control 15 | 1d | 2020-03-20 | 2020-03-20 |  | 70d | start no earlier than 2020-03-20 |
| 30 | 1.4 | **Project Close** | 66d | 2020-03-27 | 2020-07-01 |  | 0d |  |
| 31 |  | Review Project Objectives | 1d | 2020-03-27 | 2020-03-27 | 125 | 62d |  |
| 32 |  | Collect Lessons Learned | 1d | 2020-03-30 | 2020-03-30 | 31 | 62d |  |
| 33 |  | Provide Feedback | 1d | 2020-03-31 | 2020-03-31 | 32 | 62d |  |
| 34 |  | Close Contracts | 1d | 2020-07-01 | 2020-07-01 | 33, 128 | 0d |  |
| 35 |  | Project Closed | 0d | 2020-07-01 | 2020-07-01 | 34 | 0d |  |
| 36 | 2 | **Definition** | 10d | 2019-12-12 | 2019-12-27 |  | 0d |  |
| 37 | 2.1 | **Analyse Actual Situation** | 5d | 2019-12-12 | 2019-12-18 |  | 0d |  |
| 38 |  | Describe processes for Employees Register | 1d | 2019-12-12 | 2019-12-12 | 13 | 0d |  |
| 39 |  | Describe processes for Holidays and Absences | 1d | 2019-12-13 | 2019-12-13 | 38 | 0d |  |
| 40 |  | Describe processes for Training Management | 1d | 2019-12-16 | 2019-12-16 | 39 | 0d |  |
| 41 |  | Describe processes for Interface Implementation | 1d | 2019-12-17 | 2019-12-17 | 40 | 0d |  |
| 42 |  | Describe processes for Corporate Information | 1d | 2019-12-18 | 2019-12-18 | 41 | 0d |  |
| 43 |  | Described Current Processes | 0d | 2019-12-18 | 2019-12-18 | 42 | 0d |  |
| 44 | 2.2 | **Requirement Specification** | 5d | 2019-12-19 | 2019-12-27 |  | 0d |  |
| 45 |  | Gap Analysis For Each Model | 3d | 2019-12-19 | 2019-12-23 | 43 | 0d |  |
| 46 |  | Identify Parameters That Will Be Used For Each Module | 1d | 2019-12-26 | 2019-12-26 | 45 | 0d |  |
| 47 |  | Revise Technical Constraints | 1d | 2019-12-27 | 2019-12-27 | 46 | 0d |  |
| 48 |  | Reviewed All Of The Project Requirements | 0d | 2019-12-27 | 2019-12-27 | 47 | 0d |  |
| 49 | 3 | **Analysis & Design** | 5d | 2019-12-30 | 2020-01-06 |  | 0d |  |
| 50 | 3.1 | **Framework Interface Design** | 3d | 2019-12-30 | 2020-01-02 |  | 0d |  |
| 51 |  | Design the WebService | 1d | 2019-12-30 | 2019-12-30 | 48 | 0d |  |
| 52 |  | Create Interface To Access Employees' Data | 1d | 2019-12-31 | 2019-12-31 | 51 | 0d |  |
| 53 |  | Create Interface To Access Employees' Salary | 1d | 2020-01-02 | 2020-01-02 | 52 | 0d |  |
| 54 |  | Framework Interface Design Finished | 0d | 2020-01-02 | 2020-01-02 | 53 | 0d |  |
| 55 | 3.2 | **Tests Specification** | 2d | 2020-01-03 | 2020-01-06 |  | 0d |  |
| 56 |  | List all requirements | 1d | 2020-01-03 | 2020-01-03 | 54 | 0d |  |
| 57 |  | Define the Tests | 1d | 2020-01-06 | 2020-01-06 | 56 | 0d |  |
| 58 |  | Tests Specification Defined | 0d | 2020-01-06 | 2020-01-06 | 57 | 0d |  |
| 59 | 4 | **Realization** | 36d | 2020-01-07 | 2020-02-25 |  | 0d |  |
| 60 | 4.1 | **Employees Register** | 5d | 2020-01-07 | 2020-01-13 |  | 1d |  |
| 61 |  | Parametrize The Module | 1d | 2020-01-07 | 2020-01-07 | 58 | 1d |  |
| 62 |  | Implement New Requirements | 2d | 2020-01-08 | 2020-01-09 | 61 | 1d |  |
| 63 |  | Implement Profile Configuration | 1d | 2020-01-10 | 2020-01-10 | 62 | 1d |  |
| 64 |  | Test The Implementation | 1d | 2020-01-13 | 2020-01-13 | 63 | 1d |  |
| 65 |  | Finished Module 1 Implementation | 0d | 2020-01-13 | 2020-01-13 | 64 | 1d |  |
| 66 | 4.2 | **Holidays and Absences** | 10d | 2020-01-14 | 2020-01-27 |  | 1d |  |
| 67 |  | Parametrize The Module | 2d | 2020-01-14 | 2020-01-15 | 65 | 1d |  |
| 68 |  | Implement New Requirements | 4d | 2020-01-16 | 2020-01-21 | 67 | 1d |  |
| 69 |  | Implement Profile Configuration | 2d | 2020-01-22 | 2020-01-23 | 68 | 1d |  |
| 70 |  | Test The Implementation | 2d | 2020-01-24 | 2020-01-27 | 69 | 1d |  |

| ID | WBS | Task | Duration | Start | Finish | Predecessors | Total float |
| --- | --- | --- | --- | --- | --- | --- | --- |
| 71 |  | Finished Module 2 Implementation | 0d | 2020-01-27 | 2020-01-27 | 70 | 1d |
| 72 | 4.3 | **Training Management** | 10d | 2020-01-28 | 2020-02-10 |  | 1d |
| 73 |  | Parametrize The Module | 2d | 2020-01-28 | 2020-01-29 | 71 | 1d |
| 74 |  | Implement New Requirements | 4d | 2020-01-30 | 2020-02-04 | 73 | 1d |
| 75 |  | Create Script For Data Migration | 2d | 2020-02-05 | 2020-02-06 | 74 | 1d |
| 76 |  | Test The Implementation | 2d | 2020-02-07 | 2020-02-10 | 75 | 1d |
| 77 |  | Finished Module 3 Implementation | 0d | 2020-02-10 | 2020-02-10 | 76 | 1d |
| 78 | 4.4 | **Interface Implementation** | 5d | 2020-02-11 | 2020-02-17 |  | 1d |
| 79 |  | Implement the WebService | 3d | 2020-02-11 | 2020-02-13 | 77 | 1d |
| 80 |  | Test The Implementation | 2d | 2020-02-14 | 2020-02-17 | 79 | 1d |
| 81 |  | Finished Module 5 Implementation | 0d | 2020-02-17 | 2020-02-17 | 80 | 1d |
| 82 | 4.5 | **Corporate Information** | 31d | 2020-01-07 | 2020-02-18 |  | 0d |
| 83 |  | Create Backlog | 1d | 2020-01-07 | 2020-01-07 | 58 | 0d |
| 84 | 4.5.2 | **Sprint 1** | 10d | 2020-01-08 | 2020-01-21 |  | 0d |
| 85 |  | Plan The Sprint | 1d | 2020-01-08 | 2020-01-08 | 83 | 0d |
| 86 |  | Realize The Sprint | 8d | 2020-01-09 | 2020-01-20 | 85 | 0d |
| 87 |  | Review The Results | 1d | 2020-01-21 | 2020-01-21 | 86 | 0d |
| 88 | 4.5.3 | **Sprint 2** | 10d | 2020-01-22 | 2020-02-04 |  | 0d |
| 89 |  | Plan The Sprint | 1d | 2020-01-22 | 2020-01-22 | 87 | 0d |
| 90 |  | Realize The Sprint | 8d | 2020-01-23 | 2020-02-03 | 89 | 0d |
| 91 |  | Review The Results | 1d | 2020-02-04 | 2020-02-04 | 90 | 0d |
| 92 | 4.5.4 | **Sprint 3** | 10d | 2020-02-05 | 2020-02-18 |  | 0d |
| 93 |  | Plan The Sprint | 1d | 2020-02-05 | 2020-02-05 | 91 | 0d |
| 94 |  | Realize The Sprint | 8d | 2020-02-06 | 2020-02-17 | 93 | 0d |
| 95 |  | Review The Results | 1d | 2020-02-18 | 2020-02-18 | 94 | 0d |
| 96 |  | Sprints Completed | 0d | 2020-02-18 | 2020-02-18 | 95 | 0d |
| 97 | 4.6 | **Integration Tests** | 5d | 2020-02-19 | 2020-02-25 |  | 0d |
| 98 |  | Integration Test Every Module | 5d | 2020-02-19 | 2020-02-25 | 96, 81 | 0d |
| 99 |  | Fix Bugs | 5d | 2020-02-19 | 2020-02-25 | 98FF | 0d |
| 100 |  | Passed All Integration Tests | 0d | 2020-02-25 | 2020-02-25 | 99 | 0d |
| 101 | 5 | **Transition** | 22d | 2020-02-26 | 2020-03-26 |  | 0d |
| 102 | 5.1 | **Hardware and Infrastructure** | 3d | 2020-02-26 | 2020-02-28 |  | 0d |
| 103 |  | Planning of the setup | 1d | 2020-02-26 | 2020-02-26 | 100 | 0d |
| 104 |  | Setup of Hardware and Infrastructure | 2d | 2020-02-27 | 2020-02-28 | 103 | 0d |
| 105 |  | Hardware and Infrastructure Installed | 0d | 2020-02-28 | 2020-02-28 | 104 | 0d |
| 106 | 5.2 | **Software Installation** | 3d | 2020-03-02 | 2020-03-04 |  | 0d |
| 107 |  | Preparation of the environment for Installation | 1d | 2020-03-02 | 2020-03-02 | 105 | 0d |
| 108 |  | Installation of Software | 2d | 2020-03-03 | 2020-03-04 | 107 | 0d |
| 109 |  | Software Installed | 0d | 2020-03-04 | 2020-03-04 | 108 | 0d |
| 110 | 5.3 | **Data Migration** | 2d | 2020-03-05 | 2020-03-06 |  | 0d |
| 111 |  | Prepare the system to receive training data | 1d | 2020-03-05 | 2020-03-05 | 109 | 0d |
| 112 |  | Migrate training information to the system | 1d | 2020-03-06 | 2020-03-06 | 111 | 0d |
| 113 |  | Data Migrated | 0d | 2020-03-06 | 2020-03-06 | 112 | 0d |
| 114 | 5.4 | **Training** | 4d | 2020-03-09 | 2020-03-12 |  | 0d |
| 115 |  | Train The HRD Staff To Use The Software | 2d | 2020-03-09 | 2020-03-10 | 113 | 0d |
| 116 |  | Train The DSI Staff To Use The Software | 2d | 2020-03-11 | 2020-03-12 | 115 | 0d |
| 117 |  | Target Users Trained | 0d | 2020-03-12 | 2020-03-12 | 116 | 0d |
| 118 | 5.5 | **System Tests** | 5d | 2020-03-13 | 2020-03-19 |  | 0d |
| 119 |  | Run System Tests | 5d | 2020-03-13 | 2020-03-19 | 117 | 0d |
| 120 |  | Fix Bugs | 5d | 2020-03-13 | 2020-03-19 | 119FF | 0d |
| 121 |  | Project Transition Completed | 0d | 2020-03-19 | 2020-03-19 | 120 | 0d |
| 122 | 5.6 | **Acceptance Tests** | 5d | 2020-03-20 | 2020-03-26 |  | 0d |
| 123 |  | Run Acceptance Tests | 5d | 2020-03-20 | 2020-03-26 | 121 | 0d |
| 124 |  | Fix Bugs | 5d | 2020-03-20 | 2020-03-26 | 123FF | 0d |
| 125 |  | Acceptance Tests Approved | 0d | 2020-03-26 | 2020-03-26 | 124 | 0d |
| 126 | 6 | **Operation** | 65d | 2020-03-27 | 2020-06-30 |  | 0d |
| 127 |  | Support | 1w | 2020-03-27 | 2020-04-02 | 125 | 0d |
| 128 |  | Warranty | 3mo | 2020-04-03 | 2020-06-30 | 127 | 0d |

## Version 2 (saved 2019-11-05, file GPI19-02-EX2.mpp)

Note of the change: Add people to project

Last finish 2020-07-01 → 2020-06-29 (-2d).

Added:

| ID | Task | Duration | Start | Finish | Predecessors |
| --- | --- | --- | --- | --- | --- |
| 56 | Define Integration Tests | 1d | 2020-01-03 | 2020-01-03 | 54 |
| 81 | Implement the interface to access employees' Data | 1d | 2020-02-17 | 2020-02-17 | 80 |
| 82 | Implement the interface to access employees' Salaries | 1d | 2020-02-17 | 2020-02-17 | 80 |

Changed:

| ID | Task | Start | Finish | Duration | Total float | Predecessors | Other |
| --- | --- | --- | --- | --- | --- | --- | --- |
| 1 | **Project Management** |  | 2020-07-01 → 2020-06-29 (-2d) | 147d → 145d |  |  |  |
| 30 | **Project Close** | 2020-03-27 → 2020-03-25 (-2d) | 2020-07-01 → 2020-06-29 (-2d) |  |  |  |  |
| 31 | Review Project Objectives | 2020-03-27 → 2020-03-25 (-2d) | 2020-03-27 → 2020-03-25 (-2d) |  |  |  |  |
| 32 | Collect Lessons Learned | 2020-03-30 → 2020-03-26 (-4d) | 2020-03-30 → 2020-03-26 (-4d) |  |  |  |  |
| 33 | Provide Feedback | 2020-03-31 → 2020-03-27 (-4d) | 2020-03-31 → 2020-03-27 (-4d) |  |  |  |  |
| 34 | Close Contracts | 2020-07-01 → 2020-06-29 (-2d) | 2020-07-01 → 2020-06-29 (-2d) |  |  |  |  |
| 35 | Project Closed | 2020-07-01 → 2020-06-29 (-2d) | 2020-07-01 → 2020-06-29 (-2d) |  |  |  |  |
| 47 | Review project requirements |  |  |  |  |  | was named Revise Technical Constraints |
| 48 | Reviewed Project Requirements |  |  |  |  |  | was named Reviewed All Of The Project Requirements |
| 49 | **Analysis & Design** |  | 2020-01-06 → 2020-01-07 (+1d) | 5d → 6d |  |  |  |
| 52 | Design Interface To Access Employees' Data |  |  |  |  |  | was named Create Interface To Access Employees' Data |
| 53 | Design Interface To Access Employees' Salary |  |  |  |  |  | was named Create Interface To Access Employees' Salary |
| 55 | **Tests Specification** |  | 2020-01-06 → 2020-01-07 (+1d) | 2d → 3d |  |  |  |
| 57 | Define System tests | 2020-01-03 → 2020-01-06 (+3d) | 2020-01-03 → 2020-01-06 (+3d) |  |  | 54 → 56 | was named List all requirements |
| 58 | Define Acceptance Tests | 2020-01-06 → 2020-01-07 (+1d) | 2020-01-06 → 2020-01-07 (+1d) |  |  |  | was named Define the Tests |
| 59 | Tests Specification Defined | 2020-01-06 → 2020-01-07 (+1d) | 2020-01-06 → 2020-01-07 (+1d) |  |  |  |  |
| 60 | **Realization** | 2020-01-07 → 2020-01-08 (+1d) | 2020-02-25 → 2020-02-26 (+1d) |  |  |  |  |
| 61 | **Employees Register** | 2020-01-07 → 2020-01-08 (+1d) | 2020-01-13 → 2020-01-14 (+1d) |  | 1d → 0d |  |  |
| 62 | Parametrize The Module | 2020-01-07 → 2020-01-08 (+1d) | 2020-01-07 → 2020-01-08 (+1d) |  | 1d → 0d |  |  |
| 63 | Implement New Requirements | 2020-01-08 → 2020-01-09 (+1d) | 2020-01-09 → 2020-01-10 (+1d) |  | 1d → 0d |  |  |
| 64 | Implement Profile Configuration | 2020-01-10 → 2020-01-13 (+3d) | 2020-01-10 → 2020-01-13 (+3d) |  | 1d → 0d |  |  |
| 65 | Test The Implementation | 2020-01-13 → 2020-01-14 (+1d) | 2020-01-13 → 2020-01-14 (+1d) |  | 1d → 0d |  |  |
| 66 | Finished Module 1 Implementation | 2020-01-13 → 2020-01-14 (+1d) | 2020-01-13 → 2020-01-14 (+1d) |  | 1d → 0d |  |  |
| 67 | **Holidays and Absences** | 2020-01-14 → 2020-01-15 (+1d) | 2020-01-27 → 2020-01-28 (+1d) |  | 1d → 0d |  |  |
| 68 | Parametrize The Module | 2020-01-14 → 2020-01-15 (+1d) | 2020-01-15 → 2020-01-16 (+1d) |  | 1d → 0d |  |  |
| 69 | Implement New Requirements | 2020-01-16 → 2020-01-17 (+1d) | 2020-01-21 → 2020-01-22 (+1d) |  | 1d → 0d |  |  |
| 70 | Implement Profile Configuration | 2020-01-22 → 2020-01-23 (+1d) | 2020-01-23 → 2020-01-24 (+1d) |  | 1d → 0d |  |  |
| 71 | Test The Implementation | 2020-01-24 → 2020-01-27 (+3d) | 2020-01-27 → 2020-01-28 (+1d) |  | 1d → 0d |  |  |
| 72 | Finished Module 2 Implementation | 2020-01-27 → 2020-01-28 (+1d) | 2020-01-27 → 2020-01-28 (+1d) |  | 1d → 0d |  |  |
| 73 | **Training Management** | 2020-01-28 → 2020-01-29 (+1d) | 2020-02-10 → 2020-02-11 (+1d) |  | 1d → 0d |  |  |
| 74 | Parametrize The Module | 2020-01-28 → 2020-01-29 (+1d) | 2020-01-29 → 2020-01-30 (+1d) |  | 1d → 0d |  |  |
| 75 | Implement New Requirements | 2020-01-30 → 2020-01-31 (+1d) | 2020-02-04 → 2020-02-05 (+1d) |  | 1d → 0d |  |  |
| 76 | Create Script For Data Migration | 2020-02-05 → 2020-02-06 (+1d) | 2020-02-06 → 2020-02-07 (+1d) |  | 1d → 0d |  |  |
| 77 | Test The Implementation | 2020-02-07 → 2020-02-10 (+3d) | 2020-02-10 → 2020-02-11 (+1d) |  | 1d → 0d |  |  |
| 78 | Finished Module 3 Implementation | 2020-02-10 → 2020-02-11 (+1d) | 2020-02-10 → 2020-02-11 (+1d) |  | 1d → 0d |  |  |
| 79 | **Interface Implementation** | 2020-02-11 → 2020-02-12 (+1d) | 2020-02-17 → 2020-02-19 (+2d) | 5d → 6d | 1d → 0d |  |  |
| 80 | Implement the WebService | 2020-02-11 → 2020-02-12 (+1d) | 2020-02-13 → 2020-02-14 (+1d) |  | 1d → 0d |  |  |
| 83 | Test The Implementation | 2020-02-14 → 2020-02-18 (+4d) | 2020-02-17 → 2020-02-19 (+2d) |  | 1d → 0d | 80 → 82, 81 |  |
| 84 | Finished Module 5 Implementation | 2020-02-17 → 2020-02-19 (+2d) | 2020-02-17 → 2020-02-19 (+2d) |  | 1d → 0d |  |  |
| 85 | **Corporate Information** | 2020-01-07 → 2020-01-08 (+1d) | 2020-02-18 → 2020-02-19 (+1d) |  |  |  |  |
| 86 | Create Backlog | 2020-01-07 → 2020-01-08 (+1d) | 2020-01-07 → 2020-01-08 (+1d) |  |  |  |  |
| 87 | **Sprint 1** | 2020-01-08 → 2020-01-09 (+1d) | 2020-01-21 → 2020-01-22 (+1d) |  |  |  |  |
| 88 | Plan The Sprint | 2020-01-08 → 2020-01-09 (+1d) | 2020-01-08 → 2020-01-09 (+1d) |  |  |  |  |
| 89 | Realize The Sprint | 2020-01-09 → 2020-01-10 (+1d) | 2020-01-20 → 2020-01-21 (+1d) |  |  |  |  |
| 90 | Review The Results | 2020-01-21 → 2020-01-22 (+1d) | 2020-01-21 → 2020-01-22 (+1d) |  |  |  |  |
| 91 | **Sprint 2** | 2020-01-22 → 2020-01-23 (+1d) | 2020-02-04 → 2020-02-05 (+1d) |  |  |  |  |
| 92 | Plan The Sprint | 2020-01-22 → 2020-01-23 (+1d) | 2020-01-22 → 2020-01-23 (+1d) |  |  |  |  |
| 93 | Realize The Sprint | 2020-01-23 → 2020-01-24 (+1d) | 2020-02-03 → 2020-02-04 (+1d) |  |  |  |  |
| 94 | Review The Results | 2020-02-04 → 2020-02-05 (+1d) | 2020-02-04 → 2020-02-05 (+1d) |  |  |  |  |
| 95 | **Sprint 3** | 2020-02-05 → 2020-02-06 (+1d) | 2020-02-18 → 2020-02-19 (+1d) |  |  |  |  |
| 96 | Plan The Sprint | 2020-02-05 → 2020-02-06 (+1d) | 2020-02-05 → 2020-02-06 (+1d) |  |  |  |  |
| 97 | Realize The Sprint | 2020-02-06 → 2020-02-07 (+1d) | 2020-02-17 → 2020-02-18 (+1d) |  |  |  |  |
| 98 | Review The Results | 2020-02-18 → 2020-02-19 (+1d) | 2020-02-18 → 2020-02-19 (+1d) |  |  |  |  |
| 99 | Sprints Completed | 2020-02-18 → 2020-02-19 (+1d) | 2020-02-18 → 2020-02-19 (+1d) |  |  |  |  |
| 100 | **Integration Tests** | 2020-02-19 → 2020-02-20 (+1d) | 2020-02-25 → 2020-02-26 (+1d) |  |  |  |  |
| 101 | Integration Test Every Module | 2020-02-19 → 2020-02-20 (+1d) | 2020-02-25 → 2020-02-26 (+1d) |  |  |  |  |
| 102 | Fix Bugs | 2020-02-19 → 2020-02-20 (+1d) | 2020-02-25 → 2020-02-26 (+1d) |  |  |  |  |
| 103 | Passed All Integration Tests | 2020-02-25 → 2020-02-26 (+1d) | 2020-02-25 → 2020-02-26 (+1d) |  |  |  |  |
| 104 | **Transition** | 2020-02-26 → 2019-12-30 (-58d) | 2020-03-26 → 2020-03-24 (-2d) | 22d → 61d |  |  |  |
| 105 | **Hardware and Infrastructure** | 2020-02-26 → 2019-12-30 (-58d) | 2020-02-28 → 2020-01-02 (-57d) |  | 0d → 39d |  |  |
| 106 | Planning of the setup | 2020-02-26 → 2019-12-30 (-58d) | 2020-02-26 → 2019-12-30 (-58d) |  | 0d → 39d | 103 → 44 |  |
| 107 | Setup of Hardware and Infrastructure | 2020-02-27 → 2019-12-31 (-58d) | 2020-02-28 → 2020-01-02 (-57d) |  | 0d → 39d |  |  |
| 108 | Hardware and Infrastructure Installed | 2020-02-28 → 2020-01-02 (-57d) | 2020-02-28 → 2020-01-02 (-57d) |  | 0d → 39d |  |  |
| 109 | **Software Installation** | 2020-03-02 → 2020-02-27 (-4d) | 2020-03-04 → 2020-03-02 (-2d) |  |  |  |  |
| 110 | Preparation of the environment for Installation | 2020-03-02 → 2020-02-27 (-4d) | 2020-03-02 → 2020-02-27 (-4d) |  |  | 108 → 108, 100 |  |
| 111 | Installation of Software | 2020-03-03 → 2020-02-28 (-4d) | 2020-03-04 → 2020-03-02 (-2d) |  |  |  |  |
| 112 | Software Installed | 2020-03-04 → 2020-03-02 (-2d) | 2020-03-04 → 2020-03-02 (-2d) |  |  |  |  |
| 113 | **Data Migration** | 2020-03-05 → 2020-03-03 (-2d) | 2020-03-06 → 2020-03-04 (-2d) |  |  |  |  |
| 114 | Prepare the system to receive training data | 2020-03-05 → 2020-03-03 (-2d) | 2020-03-05 → 2020-03-03 (-2d) |  |  |  |  |
| 115 | Migrate training information to the system | 2020-03-06 → 2020-03-04 (-2d) | 2020-03-06 → 2020-03-04 (-2d) |  |  |  |  |

| ID | Task | Start | Finish |
| --- | --- | --- | --- |
| 116 | Data Migrated | 2020-03-06 → 2020-03-04 (-2d) | 2020-03-06 → 2020-03-04 (-2d) |
| 117 | **Training** | 2020-03-09 → 2020-03-05 (-4d) | 2020-03-12 → 2020-03-10 (-2d) |
| 118 | Train The HRD Staff To Use The Software | 2020-03-09 → 2020-03-05 (-4d) | 2020-03-10 → 2020-03-06 (-4d) |
| 119 | Train The DSI Staff To Use The Software | 2020-03-11 → 2020-03-09 (-2d) | 2020-03-12 → 2020-03-10 (-2d) |
| 120 | Target Users Trained | 2020-03-12 → 2020-03-10 (-2d) | 2020-03-12 → 2020-03-10 (-2d) |
| 121 | **System Tests** | 2020-03-13 → 2020-03-11 (-2d) | 2020-03-19 → 2020-03-17 (-2d) |
| 122 | Run System Tests | 2020-03-13 → 2020-03-11 (-2d) | 2020-03-19 → 2020-03-17 (-2d) |
| 123 | Fix Bugs | 2020-03-13 → 2020-03-11 (-2d) | 2020-03-19 → 2020-03-17 (-2d) |
| 124 | Project Transition Completed | 2020-03-19 → 2020-03-17 (-2d) | 2020-03-19 → 2020-03-17 (-2d) |
| 125 | **Acceptance Tests** | 2020-03-20 → 2020-03-18 (-2d) | 2020-03-26 → 2020-03-24 (-2d) |
| 126 | Run Acceptance Tests | 2020-03-20 → 2020-03-18 (-2d) | 2020-03-26 → 2020-03-24 (-2d) |
| 127 | Fix Bugs | 2020-03-20 → 2020-03-18 (-2d) | 2020-03-26 → 2020-03-24 (-2d) |
| 128 | Acceptance Tests Approved | 2020-03-26 → 2020-03-24 (-2d) | 2020-03-26 → 2020-03-24 (-2d) |
| 129 | **Operation** | 2020-03-27 → 2020-03-25 (-2d) | 2020-06-30 → 2020-06-26 (-4d) |
| 130 | Support | 2020-03-27 → 2020-03-25 (-2d) | 2020-04-02 → 2020-03-31 (-2d) |
| 131 | Warranty | 2020-04-03 → 2020-04-01 (-2d) | 2020-06-30 → 2020-06-26 (-4d) |

## Version 3 (saved 2019-11-09, file GPI19-02-EX2.mpp)

Note of the change: Added costs to Resources Sheet + resources for each task (task usage)

Last finish stays 2020-06-29.

Changed:

| ID | Task | Total float | Other |
| --- | --- | --- | --- |
| 1 | **Project Management (FALTA PÔR UNITS EM TODOS)** |  | was named Project Management |
| 3 | Review Project Charter |  | resources none → Project Manager; ISTRetail Project Manager; Project Sponsor; HRD Director; SID Director |
| 4 | Review Stakeholders Identification |  | resources none → ISTRetail Project Manager; Project Sponsor; HRD Director; SID Director |
| 5 | Establish Project Team |  | resources none → ISTRetail Project Manager; Project Manager |
| 8 | Review Project Scope and Time |  | resources none → Project Sponsor; HRD Director; SID Director; ISTRetail Project Manager; Technical Coordinator; HRD Delegate |
| 9 | Define Project Organization |  | resources none → ISTRetail Project Manager; Project Manager; Scrum Master |
| 10 | Define Communication plan |  | resources none → ISTRetail Project Manager; ISTRetail Technical Coordinator; Project Manager |
| 11 | Review Project Plan |  | resources none → Project Sponsor; HRD Director; SID Director; ISTRetail Project Manager; HRD Delegate; Project Manager |
| 12 | Kick-off Meeting |  | resources none → Project Sponsor; HRD Director; SID Director; ISTRetail Project Manager; Project Manager; Technical Coordinator; Scrum Master; HRD Delegate; ISTRetail Technical Coordinator |
| 15 | Control 1 | 134d → 135d | resources none → ISTRetail Project Manager; Project Manager |
| 16 | Control 2 | 129d → 130d | resources none → ISTRetail Project Manager; Technical Coordinator |
| 17 | Control 3 | 126d → 127d | resources none → ISTRetail Project Manager; Scrum Master |
| 18 | Control 4 | 122d → 123d | resources none → ISTRetail Project Manager; HRD Delegate |
| 19 | Control 5 | 117d → 118d | resources none → ISTRetail Project Manager; ISTRetail Technical Coordinator |
| 20 | Control 6 | 112d → 113d | resources none → ISTRetail Project Manager; Project Manager |
| 21 | Control 7 | 107d → 108d | resources none → ISTRetail Project Manager; Technical Coordinator |
| 22 | Control 8 | 102d → 103d | resources none → ISTRetail Project Manager; Scrum Master |
| 23 | Control 9 | 97d → 98d | resources none → ISTRetail Project Manager; HRD Delegate |
| 24 | Control 10 | 92d → 93d | resources none → ISTRetail Project Manager; ISTRetail Technical Coordinator |
| 25 | Control 11 | 87d → 88d | resources none → ISTRetail Project Manager; Project Manager |
| 26 | Control 12 | 82d → 83d | resources none → ISTRetail Project Manager; Technical Coordinator |
| 27 | Control 13 | 77d → 78d | resources none → ISTRetail Project Manager; Scrum Master |
| 28 | Control 14 | 72d → 73d | resources none → ISTRetail Project Manager; HRD Delegate |
| 29 | Control 15 | 67d → 68d | resources none → ISTRetail Project Manager; ISTRetail Technical Coordinator |
| 31 | Review Project Objectives |  | resources none → Project Sponsor; HRD Director; SID Director; ISTRetail Project Manager; Project Manager; Technical Coordinator |
| 32 | Collect Lessons Learned |  | resources none → ISTRetail Project Manager; Project Manager; Technical Coordinator; Scrum Master; HRD Delegate; ISTRetail Technical Coordinator |
| 33 | Provide Feedback (feedback from who? Client onl?) |  | was named Provide Feedback; resources none → ISTRetail Project Manager; Project Manager; Technical Coordinator; HRD Delegate |
| 34 | Close Contracts |  | resources none → ISTRetail Project Manager; HRD Director; Project Manager |
| 36 | **Definition (FALTA PÔR UNITS EM TODOS)** |  | was named Definition |
| 38 | Describe processes for Employees Register |  | resources none → Technical Coordinator; ISTRetail Project Manager; Consultant 1 (TC); HR Employee Record Specialist |
| 39 | Describe processes for Holidays and Absences |  | resources none → Technical Coordinator; ISTRetail Project Manager; HR Payroll Specialist; Consultant 1 (TC) |
| 40 | Describe processes for Training Management |  | resources none → Technical Coordinator; ISTRetail Project Manager; Consultant 1 (TC); HR Training Management Specialist |
| 41 | Describe processes for Interface Implementation |  | resources none → Technical Coordinator; ISTRetail Project Manager; ISTRetail Technical Coordinator; Consultant 1 (TC) |
| 42 | Describe processes for Corporate Information |  | resources none → Technical Coordinator; ISTRetail Project Manager; Consultant 1 (TC); Scrum Master |
| 45 | Gap Analysis For Each Model (c/ HRD Delegate?) |  | was named Gap Analysis For Each Model; resources none → ISTRetail Project Manager; Technical Coordinator; Consultant 2 (TC); HRD Delegate |
| 46 | Identify Parameters That Will Be Used For Each Module (c/ HRD delegate?) |  | was named Identify Parameters That Will Be Used For Each Module; resources none → ISTRetail Project Manager; Technical Coordinator; Consultant 2 (TC); HRD Delegate |
| 47 | Review project requirements |  | resources none → HRD Director; SID Director; ISTRetail Project Manager; Technical Coordinator; Project Manager; Scrum Master; HRD Delegate; ISTRetail Technical Coordinator |
| 49 | **Analysis & Design (FALTA PÔR UNITS EM TODOS)** |  | was named Analysis & Design |
| 51 | Design the WebService |  | resources none → Project Manager; ISTRetail Technical Coordinator; ISTRetail Project Manager; IT Infrastructure Specialist |
| 52 | Design Interface To Access Employees' Data (ver se faz sentido o technical coo. Estar aqui) |  | was named Design Interface To Access Employees' Data; resources none → Project Manager; ISTRetail Technical Coordinator; Technical Coordinator; Consultant 1 (TC); IT Infrastructure Specialist |
| 53 | Design Interface To Access Employees' Salary |  | resources none → Project Manager; ISTRetail Technical Coordinator; IT Infrastructure Specialist; Trainee |
| 56 | Define Integration Tests |  | resources none → Project Manager; Technical Coordinator; Consultant 1 (TC); Trainee; Scrum Master; HRD Delegate; ISTRetail Technical Coordinator |
| 57 | Define System tests |  | resources none → Project Manager; Technical Coordinator; Consultant 1 (TC); ISTRetail Project Manager; ISTRetail Technical Coordinator |
| 58 | Define Acceptance Tests |  | resources none → Project Manager; Technical Coordinator; Consultant 1 (TC); HRD Delegate |
| 60 | **Realization (FALTA PÔR UNITS EM TODOS)** |  | was named Realization |
| 62 | Parametrize The Module |  | resources none → Project Manager; Technical Coordinator; Consultant 2 (TC); HRD Delegate; Trainee |
| 63 | Implement New Requirements (dar fix, tem recursos overallocated) |  | was named Implement New Requirements; resources none → Project Manager; Technical Coordinator; Consultant 2 (TC); HRD Delegate; ISTRetail Project Manager |
| 64 | Implement Profile Configuration |  | resources none → Project Manager; Technical Coordinator; Consultant 2 (TC); HRD Delegate |
| 65 | Test The Implementation |  | resources none → Project Manager; Technical Coordinator; Consultant 2 (TC); ISTRetail Project Manager |
| 68 | Parametrize The Module |  | resources none → Project Manager; Technical Coordinator; Consultant 1 (TC); HRD Delegate; Trainee |
| 69 | Implement New Requirements (Dar fix, tem recursos overallocated) |  | was named Implement New Requirements; resources none → Project Manager; Technical Coordinator; Consultant 1 (TC); HRD Delegate; ISTRetail Project Manager |
| 70 | Implement Profile Configuration (Dar fix, tem recursos overallocated) |  | was named Implement Profile Configuration; resources none → Project Manager; Technical Coordinator; Consultant 1 (TC); HRD Delegate |
| 71 | Test The Implementation |  | resources none → Project Manager; ISTRetail Project Manager; Technical Coordinator; Consultant 1 (TC) |
| 74 | Parametrize The Module |  | resources none → Project Manager; Technical Coordinator; Consultant 2 (TC); Trainee; HRD Delegate |
| 75 | Implement New Requirements (Dar fix, tem recursos overallocated) |  | was named Implement New Requirements; resources none → Project Manager; Technical Coordinator; Consultant 2 (TC); ISTRetail Project Manager; HRD Delegate |
| 76 | Create Script For Data Migration |  | resources none → Project Manager; Technical Coordinator; Consultant 2 (TC); Trainee |
| 77 | Test The Implementation |  | resources none → Technical Coordinator; Consultant 2 (TC); Project Manager; ISTRetail Project Manager |
| 80 | Implement the WebService (Dar fix, tem recursos overallocated) |  | was named Implement the WebService; resources none → Project Manager; ISTRetail Technical Coordinator; IT Infrastructure Specialist; Technical Coordinator |
| 81 | Implement the interface to access employees' Data (está paralelo, como fazer com os recursos) |  | was named Implement the interface to access employees' Data; resources none → Project Manager; ISTRetail Technical Coordinator; IT Infrastructure Specialist; Trainee; ISTRetail Project Manager |
| 82 | Implement the interface to access employees' Salaries (está paralelo, como fazer com os recursos) |  | was named Implement the interface to access employees' Salaries; resources none → Project Manager; ISTRetail Technical Coordinator; IT Infrastructure Specialist; Technical Coordinator; Trainee |
| 83 | Test The Implementation |  | resources none → Project Manager; ISTRetail Project Manager; ISTRetail Technical Coordinator; IT Infrastructure Specialist |
| 86 | Create Backlog |  | resources none → Project Manager; Scrum Master; Consultant 1 (SM); HRD Delegate |
| 88 | Plan The Sprint |  | resources none → Scrum Master; Consultant 1 (SM); Consultant 2 (SM); Project Manager; ISTRetail Project Manager |
| 89 | Realize The Sprint |  | resources none → Project Manager; Scrum Master; Consultant 1 (SM) |
| 90 | Review The Results (makes sense c os dois consultants? E para os outros reviews do sprint tambem?) |  | was named Review The Results; resources none → Project Manager; ISTRetail Project Manager; HRD Delegate; Scrum Master; Consultant 1 (SM); Consultant 2 (SM) |
| 92 | Plan The Sprint |  | resources none → Scrum Master; Consultant 1 (SM); Consultant 2 (SM); Project Manager; ISTRetail Project Manager |
| 93 | Realize The Sprint |  | resources none → Project Manager; Scrum Master; Consultant 2 (SM) |
| 94 | Review The Results |  | resources none → Scrum Master; Consultant 2 (SM); HRD Delegate; Project Manager; ISTRetail Project Manager; Consultant 1 (SM) |
| 96 | Plan The Sprint |  | resources none → Project Manager; Scrum Master; Consultant 1 (SM); Consultant 2 (SM); ISTRetail Project Manager |
| 97 | Realize The Sprint |  | resources none → Project Manager; Scrum Master; Consultant 1 (SM) |

| ID | Task | Other |
| --- | --- | --- |
| 98 | Review The Results | resources none → Scrum Master; Consultant 1 (SM); Project Manager; ISTRetail Project Manager; HRD Delegate; Consultant 2 (SM) |
| 101 | Integration Test Every Module | resources none → Project Manager; Technical Coordinator; Consultant 1 (TC); HRD Delegate; ISTRetail Technical Coordinator; Scrum Master; ISTRetail Project Manager |
| 102 | Fix Bugs | resources none → Project Manager; Technical Coordinator; Consultant 1 (TC) |
| 104 | **Transition (FALTA PÔR UNITS EM TODOS)** | was named Transition |
| 106 | Planning of the setup | resources none → Project Manager; ISTRetail Project Manager; ISTRetail Technical Coordinator; IT Infrastructure Specialist |
| 107 | Setup of Hardware and Infrastructure | resources none → Project Manager; ISTRetail Technical Coordinator; IT Infrastructure Specialist |
| 110 | Preparation of the environment for Installation | resources none → Project Manager; ISTRetail Project Manager; Technical Coordinator; Consultant 2 (TC); Trainee |
| 111 | Installation of Software | resources none → Technical Coordinator; Consultant 2 (TC); Project Manager; ISTRetail Technical Coordinator |
| 114 | Prepare the system to receive training data | resources none → Project Manager; ISTRetail Project Manager; Technical Coordinator; Consultant 1 (TC); Trainee |
| 115 | Migrate training information to the system | resources none → Project Manager; Technical Coordinator; Consultant 1 (TC); ISTRetail Technical Coordinator |
| 118 | Train The HRD Staff To Use The Software | resources none → Project Manager; Technical Coordinator; Consultant 2 (TC); HRD Delegate; ISTRetail Project Manager |
| 119 | Train The DSI Staff To Use The Software | resources none → Project Manager; Technical Coordinator; Consultant 2 (TC) |
| 122 | Run System Tests | resources none → Project Manager; ISTRetail Technical Coordinator; IT Infrastructure Specialist; Trainee; Technical Coordinator |
| 123 | Fix Bugs | resources none → Project Manager; ISTRetail Technical Coordinator; IT Infrastructure Specialist |
| 126 | Run Acceptance Tests | resources none → ISTRetail Technical Coordinator; IT Infrastructure Specialist; HRD Delegate; Scrum Master; Technical Coordinator; Project Manager; ISTRetail Project Manager |
| 127 | Fix Bugs | resources none → ISTRetail Technical Coordinator; IT Infrastructure Specialist; Project Manager |
| 128 | Acceptance Tests Approved (ver se é assim, e se sim, preencher milestones para trás) | was named Acceptance Tests Approved; resources none → HRD Director; SID Director |
| 129 | **Operation (FALTA PÔR UNITS EM TODOS)** | was named Operation |
| 130 | Support | resources none → Technical Coordinator; Consultant 1 (TC); Project Manager; ISTRetail Project Manager |
| 131 | Warranty | resources none → Technical Coordinator; Consultant 1 (TC); Project Manager; ISTRetail Project Manager |

## Version 4 (saved 2019-11-11, file GPI19-02-EX2.mpp)

Note of the change: Updated mpp

Last finish stays 2020-06-29.

Changed:

| ID | Task | Other |
| --- | --- | --- |
| 74 | Parametrize The Module | resources Project Manager; Technical Coordinator; Consultant 2 (TC); Trainee; HRD Delegate → Project Manager; Technical Coordinator; Consultant 2 (TC); Trainee; HRD Delegate; ISTRetail Project Manager |
| 75 | Implement New Requirements (Dar fix, tem recursos overallocated) | resources Project Manager; Technical Coordinator; Consultant 2 (TC); ISTRetail Project Manager; HRD Delegate → Project Manager; Technical Coordinator; Consultant 2 (TC); HRD Delegate |
| 77 | Test The Implementation | resources Technical Coordinator; Consultant 2 (TC); Project Manager; ISTRetail Project Manager → Technical Coordinator; Consultant 2 (TC); Project Manager |
| 126 | Run Acceptance Tests | resources ISTRetail Technical Coordinator; IT Infrastructure Specialist; HRD Delegate; Scrum Master; Technical Coordinator; Project Manager; ISTRetail Project Manager → ISTRetail Technical Coordinator; IT Infrastructure Specialist; HRD Delegate; Scrum Master; Technical Coordinator; Project Manager; ISTRetail Project Manager; SID Director; HRD Director |
| 128 | Acceptance Tests Approved | was named Acceptance Tests Approved (ver se é assim, e se sim, preencher milestones para trás); resources HRD Director; SID Director → none |

## Version 5 (saved 2019-11-12, file GPI19-02-EX2.mpp)

Note of the change: All overwork solved

Last finish stays 2020-06-29.

Changed:

| ID | Task | Other |
| --- | --- | --- |
| 1 | **Project Management** | was named Project Management (FALTA PÔR UNITS EM TODOS) |
| 3 | Review Project Charter | resources Project Manager; ISTRetail Project Manager; Project Sponsor; HRD Director; SID Director → Project Manager; ISTRetail Project Manager; Project Sponsor [50%]; HRD Director [50%]; SID Director [50%] |
| 4 | Review Stakeholders Identification | resources ISTRetail Project Manager; Project Sponsor; HRD Director; SID Director → ISTRetail Project Manager; Project Sponsor [50%]; HRD Director [50%]; SID Director [50%]; Project Manager |
| 8 | Review Project Scope and Time | resources Project Sponsor; HRD Director; SID Director; ISTRetail Project Manager; Technical Coordinator; HRD Delegate → Project Sponsor [50%]; HRD Director [50%]; SID Director [50%]; ISTRetail Project Manager; HRD Delegate; Project Manager |
| 9 | Define Project Organization | resources ISTRetail Project Manager; Project Manager; Scrum Master → ISTRetail Project Manager; Project Manager |
| 10 | Define Communication plan | resources ISTRetail Project Manager; ISTRetail Technical Coordinator; Project Manager → ISTRetail Project Manager; Project Manager |
| 16 | Control 2 | resources ISTRetail Project Manager; Technical Coordinator → ISTRetail Project Manager; Project Manager |
| 17 | Control 3 | resources ISTRetail Project Manager; Scrum Master → ISTRetail Project Manager; Project Manager |
| 18 | Control 4 | resources ISTRetail Project Manager; HRD Delegate → ISTRetail Project Manager; Project Manager |
| 19 | Control 5 | resources ISTRetail Project Manager; ISTRetail Technical Coordinator → ISTRetail Project Manager; Project Manager |
| 21 | Control 7 | resources ISTRetail Project Manager; Technical Coordinator → ISTRetail Project Manager; Project Manager |
| 22 | Control 8 | resources ISTRetail Project Manager; Scrum Master → ISTRetail Project Manager; Project Manager |
| 23 | Control 9 | resources ISTRetail Project Manager; HRD Delegate → ISTRetail Project Manager; Project Manager |
| 24 | Control 10 | resources ISTRetail Project Manager; ISTRetail Technical Coordinator → ISTRetail Project Manager; Project Manager |
| 26 | Control 12 | resources ISTRetail Project Manager; Technical Coordinator → ISTRetail Project Manager; Project Manager |
| 27 | Control 13 | resources ISTRetail Project Manager; Scrum Master → ISTRetail Project Manager; Project Manager |
| 28 | Control 14 | resources ISTRetail Project Manager; HRD Delegate → ISTRetail Project Manager; Project Manager |
| 29 | Control 15 | resources ISTRetail Project Manager; ISTRetail Technical Coordinator → ISTRetail Project Manager; Project Manager |
| 31 | Review Project Objectives | resources Project Sponsor; HRD Director; SID Director; ISTRetail Project Manager; Project Manager; Technical Coordinator → Project Sponsor [50%]; HRD Director [50%]; SID Director [50%]; ISTRetail Project Manager; Project Manager; Technical Coordinator [50%]; ISTRetail Technical Coordinator; HRD Delegate |
| 32 | Collect Lessons Learned | resources ISTRetail Project Manager; Project Manager; Technical Coordinator; Scrum Master; HRD Delegate; ISTRetail Technical Coordinator → ISTRetail Project Manager; Project Manager |
| 33 | Provide Feedback | was named Provide Feedback (feedback from who? Client onl?); resources ISTRetail Project Manager; Project Manager; Technical Coordinator; HRD Delegate → ISTRetail Project Manager; Project Manager |
| 34 | Close Contracts | resources ISTRetail Project Manager; HRD Director; Project Manager → ISTRetail Project Manager; HRD Director [50%]; Project Manager; Project Sponsor [50%]; SID Director [50%] |
| 36 | **Definition** | was named Definition (FALTA PÔR UNITS EM TODOS) |
| 38 | Describe processes for Employees Register | resources Technical Coordinator; ISTRetail Project Manager; Consultant 1 (TC); HR Employee Record Specialist → Technical Coordinator; HR Employee Record Specialist; HRD Delegate |
| 39 | Describe processes for Holidays and Absences | resources Technical Coordinator; ISTRetail Project Manager; HR Payroll Specialist; Consultant 1 (TC) → Technical Coordinator; HR Payroll Specialist; HRD Delegate |
| 40 | Describe processes for Training Management | resources Technical Coordinator; ISTRetail Project Manager; Consultant 1 (TC); HR Training Management Specialist → Technical Coordinator; HR Training Management Specialist; HRD Delegate |
| 41 | Describe processes for Interface Implementation | resources Technical Coordinator; ISTRetail Project Manager; ISTRetail Technical Coordinator; Consultant 1 (TC) → Technical Coordinator; ISTRetail Technical Coordinator; HRD Delegate |
| 42 | Describe processes for Corporate Information | resources Technical Coordinator; ISTRetail Project Manager; Consultant 1 (TC); Scrum Master → Technical Coordinator; Scrum Master; HRD Delegate |
| 45 | Gap Analysis For Each Module | was named Gap Analysis For Each Model (c/ HRD Delegate?); resources ISTRetail Project Manager; Technical Coordinator; Consultant 2 (TC); HRD Delegate → Technical Coordinator; HRD Delegate |
| 46 | Identify Parameters That Will Be Used For Each Module | was named Identify Parameters That Will Be Used For Each Module (c/ HRD delegate?); resources ISTRetail Project Manager; Technical Coordinator; Consultant 2 (TC); HRD Delegate → Technical Coordinator; HRD Delegate |
| 47 | Review project requirements | resources HRD Director; SID Director; ISTRetail Project Manager; Technical Coordinator; Project Manager; Scrum Master; HRD Delegate; ISTRetail Technical Coordinator → HRD Director [50%]; SID Director [50%]; Technical Coordinator; Scrum Master; HRD Delegate; ISTRetail Technical Coordinator |
| 49 | **Analysis & Design** | was named Analysis & Design (FALTA PÔR UNITS EM TODOS) |
| 51 | Design the WebService | resources Project Manager; ISTRetail Technical Coordinator; ISTRetail Project Manager; IT Infrastructure Specialist → ISTRetail Technical Coordinator [50%]; IT Infrastructure Specialist [50%]; Trainee (ISTRetail) [50%] |
| 52 | Design Interface To Access Employees' Data | was named Design Interface To Access Employees' Data (ver se faz sentido o technical coo. Estar aqui); resources Project Manager; ISTRetail Technical Coordinator; Technical Coordinator; Consultant 1 (TC); IT Infrastructure Specialist → ISTRetail Technical Coordinator [50%]; Technical Coordinator; IT Infrastructure Specialist [50%]; Trainee (ISTRetail) [50%] |
| 53 | Design Interface To Access Employees' Salary | resources Project Manager; ISTRetail Technical Coordinator; IT Infrastructure Specialist; Trainee → ISTRetail Technical Coordinator [50%]; IT Infrastructure Specialist [50%]; Technical Coordinator; Trainee (ISTRetail) [50%] |
| 56 | Define Integration Tests | resources Project Manager; Technical Coordinator; Consultant 1 (TC); Trainee; Scrum Master; HRD Delegate; ISTRetail Technical Coordinator → Technical Coordinator; Scrum Master; HRD Delegate; ISTRetail Technical Coordinator |
| 57 | Define System tests | resources Project Manager; Technical Coordinator; Consultant 1 (TC); ISTRetail Project Manager; ISTRetail Technical Coordinator → Technical Coordinator; ISTRetail Technical Coordinator |
| 58 | Define Acceptance Tests | resources Project Manager; Technical Coordinator; Consultant 1 (TC); HRD Delegate → Technical Coordinator; HRD Delegate |
| 60 | **Realization** | was named Realization (FALTA PÔR UNITS EM TODOS) |
| 62 | Parametrize The Module | resources Project Manager; Technical Coordinator; Consultant 2 (TC); HRD Delegate; Trainee → Technical Coordinator; HRD Delegate [50%] |
| 63 | Implement New Requirements | was named Implement New Requirements (dar fix, tem recursos overallocated); resources Project Manager; Technical Coordinator; Consultant 2 (TC); HRD Delegate; ISTRetail Project Manager → Technical Coordinator; Consultant 2 (TC); Consultant 1 (TC); Trainee |
| 64 | Implement Profile Configuration | resources Project Manager; Technical Coordinator; Consultant 2 (TC); HRD Delegate → Technical Coordinator; Consultant 2 (TC); Consultant 1 (TC); Trainee |
| 65 | Test The Implementation | resources Project Manager; Technical Coordinator; Consultant 2 (TC); ISTRetail Project Manager → Technical Coordinator; Trainee; Consultant 1 (TC) |
| 68 | Parametrize The Module | resources Project Manager; Technical Coordinator; Consultant 1 (TC); HRD Delegate; Trainee → Technical Coordinator; HRD Delegate |
| 69 | Implement New Requirements | was named Implement New Requirements (Dar fix, tem recursos overallocated); resources Project Manager; Technical Coordinator; Consultant 1 (TC); HRD Delegate; ISTRetail Project Manager → Technical Coordinator; Consultant 1 (TC); Consultant 2 (TC); Trainee |
| 70 | Implement Profile Configuration | was named Implement Profile Configuration (Dar fix, tem recursos overallocated); resources Project Manager; Technical Coordinator; Consultant 1 (TC); HRD Delegate → Technical Coordinator; Consultant 1 (TC); Trainee; Consultant 2 (TC) |
| 71 | Test The Implementation | resources Project Manager; ISTRetail Project Manager; Technical Coordinator; Consultant 1 (TC) → Technical Coordinator; Consultant 2 (TC); Trainee |
| 74 | Parametrize The Module | resources Project Manager; Technical Coordinator; Consultant 2 (TC); Trainee; HRD Delegate; ISTRetail Project Manager → Technical Coordinator; HRD Delegate |
| 75 | Implement New Requirements | was named Implement New Requirements (Dar fix, tem recursos overallocated); resources Project Manager; Technical Coordinator; Consultant 2 (TC); HRD Delegate → Technical Coordinator; Consultant 2 (TC); Consultant 1 (TC); Trainee |
| 76 | Create Script For Data Migration | resources Project Manager; Technical Coordinator; Consultant 2 (TC); Trainee → Technical Coordinator; Consultant 2 (TC); Trainee; Consultant 1 (TC) |
| 77 | Test The Implementation | resources Technical Coordinator; Consultant 2 (TC); Project Manager → Technical Coordinator; Consultant 1 (TC); Trainee |
| 80 | Implement the WebService | was named Implement the WebService (Dar fix, tem recursos overallocated); resources Project Manager; ISTRetail Technical Coordinator; IT Infrastructure Specialist; Technical Coordinator → ISTRetail Technical Coordinator; IT Infrastructure Specialist; Trainee (ISTRetail) |
| 81 | Implement the interface to access employees' Data | was named Implement the interface to access employees' Data (está paralelo, como fazer com os recursos); resources Project Manager; ISTRetail Technical Coordinator; IT Infrastructure Specialist; Trainee; ISTRetail Project Manager → ISTRetail Technical Coordinator [50%]; IT Infrastructure Specialist [50%]; Trainee (ISTRetail) [50%]; Technical Coordinator [50%] |
| 82 | Implement the interface to access employees' Salaries (está paralelo, como fazer com os recursos) | resources Project Manager; ISTRetail Technical Coordinator; IT Infrastructure Specialist; Technical Coordinator; Trainee → ISTRetail Technical Coordinator [50%]; IT Infrastructure Specialist [50%]; Technical Coordinator [50%]; Trainee (ISTRetail) [50%] |
| 83 | Test The Implementation | resources Project Manager; ISTRetail Project Manager; ISTRetail Technical Coordinator; IT Infrastructure Specialist → ISTRetail Technical Coordinator; IT Infrastructure Specialist; Trainee (ISTRetail) |
| 86 | Create Backlog | resources Project Manager; Scrum Master; Consultant 1 (SM); HRD Delegate → Scrum Master; HRD Delegate [50%] |
| 88 | Plan The Sprint | resources Scrum Master; Consultant 1 (SM); Consultant 2 (SM); Project Manager; ISTRetail Project Manager → Scrum Master; Consultant 1 (SM); Consultant 2 (SM) |
| 89 | Realize The Sprint | resources Project Manager; Scrum Master; Consultant 1 (SM) → Scrum Master; Consultant 1 (SM); Consultant 2 (SM) |
| 90 | Review The Results | was named Review The Results (makes sense c os dois consultants? E para os outros reviews do sprint tambem?); resources Project Manager; ISTRetail Project Manager; HRD Delegate; Scrum Master; Consultant 1 (SM); Consultant 2 (SM) → Scrum Master; Consultant 1 (SM); Consultant 2 (SM) |
| 92 | Plan The Sprint | resources Scrum Master; Consultant 1 (SM); Consultant 2 (SM); Project Manager; ISTRetail Project Manager → Scrum Master; Consultant 1 (SM); Consultant 2 (SM) |
| 93 | Realize The Sprint | resources Project Manager; Scrum Master; Consultant 2 (SM) → Scrum Master; Consultant 2 (SM); Consultant 1 (SM) |
| 94 | Review The Results | resources Scrum Master; Consultant 2 (SM); HRD Delegate; Project Manager; ISTRetail Project Manager; Consultant 1 (SM) → Scrum Master; Consultant 2 (SM); Consultant 1 (SM) |
| 96 | Plan The Sprint | resources Project Manager; Scrum Master; Consultant 1 (SM); Consultant 2 (SM); ISTRetail Project Manager → Scrum Master; Consultant 1 (SM); Consultant 2 (SM) |
| 97 | Realize The Sprint | resources Project Manager; Scrum Master; Consultant 1 (SM) → Scrum Master; Consultant 1 (SM); Consultant 2 (SM) |
| 98 | Review The Results | resources Scrum Master; Consultant 1 (SM); Project Manager; ISTRetail Project Manager; HRD Delegate; Consultant 2 (SM) → Scrum Master; Consultant 1 (SM); Consultant 2 (SM) |
| 101 | Integration Test Every Module | resources Project Manager; Technical Coordinator; Consultant 1 (TC); HRD Delegate; ISTRetail Technical Coordinator; Scrum Master; ISTRetail Project Manager → Technical Coordinator [50%]; Consultant 1 (TC) [50%]; HRD Delegate; ISTRetail Technical Coordinator [50%]; Scrum Master [50%]; Consultant 1 (SM) [50%]; Consultant 2 (SM) [50%]; Consultant 2 (TC) [50%]; Trainee [50%]; IT Infrastructure Specialist [50%]; Trainee (ISTRetail) [50%] |
| 102 | Fix Bugs | resources Project Manager; Technical Coordinator; Consultant 1 (TC) → Technical Coordinator [50%]; Consultant 1 (TC) [50%]; Consultant 1 (SM) [50%]; Consultant 2 (SM) [50%]; Consultant 2 (TC) [50%]; Scrum Master [50%]; Trainee [50%]; IT Infrastructure Specialist [50%]; Trainee (ISTRetail) [50%]; ISTRetail Technical Coordinator [50%] |
| 104 | **Transition** | was named Transition (FALTA PÔR UNITS EM TODOS) |
| 106 | Planning of the setup | resources Project Manager; ISTRetail Project Manager; ISTRetail Technical Coordinator; IT Infrastructure Specialist → ISTRetail Technical Coordinator [50%]; IT Infrastructure Specialist [50%] |
| 107 | Setup of Hardware and Infrastructure | resources Project Manager; ISTRetail Technical Coordinator; IT Infrastructure Specialist → ISTRetail Technical Coordinator [50%]; IT Infrastructure Specialist [50%]; Trainee (ISTRetail) [50%] |

| ID | Task | Other |
| --- | --- | --- |
| 110 | Preparation of the environment for Installation | resources Project Manager; ISTRetail Project Manager; Technical Coordinator; Consultant 2 (TC); Trainee → Technical Coordinator; Consultant 2 (TC); Trainee; Consultant 1 (TC); ISTRetail Technical Coordinator |
| 111 | Installation of Software | resources Technical Coordinator; Consultant 2 (TC); Project Manager; ISTRetail Technical Coordinator → Technical Coordinator; Consultant 2 (TC); Consultant 1 (TC); Trainee |
| 114 | Prepare the system to receive training data | resources Project Manager; ISTRetail Project Manager; Technical Coordinator; Consultant 1 (TC); Trainee → Technical Coordinator; Consultant 1 (TC); Trainee; Consultant 2 (TC); ISTRetail Technical Coordinator |
| 115 | Migrate training information to the system | resources Project Manager; Technical Coordinator; Consultant 1 (TC); ISTRetail Technical Coordinator → Technical Coordinator; Consultant 1 (TC); Consultant 2 (TC); Trainee |
| 118 | Train The HRD Staff To Use The Software | resources Project Manager; Technical Coordinator; Consultant 2 (TC); HRD Delegate; ISTRetail Project Manager → Technical Coordinator; Consultant 2 (TC); HRD Delegate; Consultant 1 (TC); Trainee |
| 119 | Train The DSI Staff To Use The Software | resources Project Manager; Technical Coordinator; Consultant 2 (TC) → Technical Coordinator; Consultant 2 (TC); Consultant 1 (TC); Trainee |
| 122 | Run System Tests | resources Project Manager; ISTRetail Technical Coordinator; IT Infrastructure Specialist; Trainee; Technical Coordinator → ISTRetail Technical Coordinator; IT Infrastructure Specialist; Trainee (ISTRetail) |
| 123 | Fix Bugs | resources Project Manager; ISTRetail Technical Coordinator; IT Infrastructure Specialist → Technical Coordinator; Consultant 1 (TC); Consultant 2 (TC); Trainee; Scrum Master; Consultant 1 (SM); Consultant 2 (SM) |
| 126 | Run Acceptance Tests | resources ISTRetail Technical Coordinator; IT Infrastructure Specialist; HRD Delegate; Scrum Master; Technical Coordinator; Project Manager; ISTRetail Project Manager; SID Director; HRD Director → ISTRetail Technical Coordinator; IT Infrastructure Specialist; HRD Delegate; SID Director [10%]; HRD Director [10%]; Trainee (ISTRetail) |
| 127 | Fix Bugs | resources ISTRetail Technical Coordinator; IT Infrastructure Specialist; Project Manager → Technical Coordinator; Consultant 1 (TC); Consultant 2 (TC); Trainee; Scrum Master; Consultant 1 (SM); Consultant 2 (SM) |
| 129 | **Operation** | was named Operation (FALTA PÔR UNITS EM TODOS) |
| 130 | Support | resources Technical Coordinator; Consultant 1 (TC); Project Manager; ISTRetail Project Manager → Technical Coordinator [50%]; Consultant 1 (TC); Consultant 2 (TC); Trainee |
| 131 | Warranty | resources Technical Coordinator; Consultant 1 (TC); Project Manager; ISTRetail Project Manager → Technical Coordinator [10%] |

## Version 6 (saved 2019-11-14, file GPI19-02-EX2.mpp)

Note of the change: Updated Project

Last finish stays 2020-06-29.

Changed:

| ID | Task | Other |
| --- | --- | --- |
| 8 | Review Project Scope and Time | resources Project Sponsor [50%]; HRD Director [50%]; SID Director [50%]; ISTRetail Project Manager; HRD Delegate; Project Manager → ISTRetail Project Manager; Project Manager |
| 11 | Review Project Plan | resources Project Sponsor; HRD Director; SID Director; ISTRetail Project Manager; HRD Delegate; Project Manager → ISTRetail Project Manager; Project Manager |
| 34 | Close Contracts | resources ISTRetail Project Manager; HRD Director [50%]; Project Manager; Project Sponsor [50%]; SID Director [50%] → ISTRetail Project Manager; Project Manager |
| 38 | Describe processes for Employees Register | resources Technical Coordinator; HR Employee Record Specialist; HRD Delegate → Technical Coordinator; HR Employee Record Specialist |
| 39 | Describe processes for Holidays and Absences | resources Technical Coordinator; HR Payroll Specialist; HRD Delegate → Technical Coordinator; HR Payroll Specialist |
| 40 | Describe processes for Training Management | resources Technical Coordinator; HR Training Management Specialist; HRD Delegate → Technical Coordinator; HR Training Management Specialist |
| 41 | Describe processes for Interface Implementation | resources Technical Coordinator; ISTRetail Technical Coordinator; HRD Delegate → Technical Coordinator; ISTRetail Technical Coordinator |
| 42 | Describe processes for Corporate Information | resources Technical Coordinator; Scrum Master; HRD Delegate → Technical Coordinator; Scrum Master |
| 51 | Design the WebService | resources ISTRetail Technical Coordinator [50%]; IT Infrastructure Specialist [50%]; Trainee (ISTRetail) [50%] → ISTRetail Technical Coordinator [50%]; Trainee (ISTRetail) |
| 52 | Design Interface To Access Employees' Data | resources ISTRetail Technical Coordinator [50%]; Technical Coordinator; IT Infrastructure Specialist [50%]; Trainee (ISTRetail) [50%] → ISTRetail Technical Coordinator [50%]; Technical Coordinator; Trainee (ISTRetail) |
| 53 | Design Interface To Access Employees' Salary | resources ISTRetail Technical Coordinator [50%]; IT Infrastructure Specialist [50%]; Technical Coordinator; Trainee (ISTRetail) [50%] → ISTRetail Technical Coordinator [50%]; Technical Coordinator; Trainee (ISTRetail) |
| 106 | Planning of the setup | resources ISTRetail Technical Coordinator [50%]; IT Infrastructure Specialist [50%] → ISTRetail Technical Coordinator [50%]; IT Infrastructure Specialist |
| 107 | Setup of Hardware and Infrastructure | resources ISTRetail Technical Coordinator [50%]; IT Infrastructure Specialist [50%]; Trainee (ISTRetail) [50%] → ISTRetail Technical Coordinator [50%]; IT Infrastructure Specialist |
| 110 | Preparation of the environment for Installation | resources Technical Coordinator; Consultant 2 (TC); Trainee; Consultant 1 (TC); ISTRetail Technical Coordinator → Technical Coordinator; Consultant 1 (TC); ISTRetail Technical Coordinator |
| 111 | Installation of Software | resources Technical Coordinator; Consultant 2 (TC); Consultant 1 (TC); Trainee → Technical Coordinator; Consultant 1 (TC); ISTRetail Technical Coordinator |
| 115 | Migrate training information to the system | resources Technical Coordinator; Consultant 1 (TC); Consultant 2 (TC); Trainee → Technical Coordinator; Consultant 1 (TC); Consultant 2 (TC); Trainee; ISTRetail Technical Coordinator |
| 118 | Train The HRD Staff To Use The Software | resources Technical Coordinator; Consultant 2 (TC); HRD Delegate; Consultant 1 (TC); Trainee → Technical Coordinator; Consultant 2 (TC); HRD Delegate |
| 119 | Train The DSI Staff To Use The Software | resources Technical Coordinator; Consultant 2 (TC); Consultant 1 (TC); Trainee → Technical Coordinator; Consultant 2 (TC) |
| 126 | Run Acceptance Tests | resources ISTRetail Technical Coordinator; IT Infrastructure Specialist; HRD Delegate; SID Director [10%]; HRD Director [10%]; Trainee (ISTRetail) → HRD Delegate; HR Employee Record Specialist; HR Payroll Specialist; HR Training Management Specialist |
| 127 | Fix Bugs | resources Technical Coordinator; Consultant 1 (TC); Consultant 2 (TC); Trainee; Scrum Master; Consultant 1 (SM); Consultant 2 (SM) → Technical Coordinator; Consultant 1 (TC); Consultant 2 (TC); Trainee; Scrum Master; Consultant 1 (SM); Consultant 2 (SM); ISTRetail Technical Coordinator; Trainee (ISTRetail); IT Infrastructure Specialist |

## Version 7 (saved 2019-11-15, file GPI19-02-EX2.mpp)

Note of the change: All files final update

Last finish 2020-06-29 → 2020-06-30 (+1d).

Added:

| ID | Task | Duration | Start | Finish | Predecessors | Resources |
| --- | --- | --- | --- | --- | --- | --- |
| 77 | Allowance | 2d | 2020-02-10 | 2020-02-11 | 76 | Technical Coordinator; Consultant 1 (TC); Consultant 2 (TC); Trainee |

Changed:

| ID | Task | Start | Finish | Duration | Predecessors | Other |
| --- | --- | --- | --- | --- | --- | --- |
| 1 | **Project Management** |  | 2020-06-29 → 2020-06-30 (+1d) | 145d → 146d |  |  |
| 30 | **Project Close** | 2020-03-25 → 2020-03-26 (+1d) | 2020-06-29 → 2020-06-30 (+1d) |  |  |  |
| 31 | Review Project Objectives | 2020-03-25 → 2020-03-26 (+1d) | 2020-03-25 → 2020-03-26 (+1d) |  |  |  |
| 32 | Collect Lessons Learned | 2020-03-26 → 2020-03-27 (+1d) | 2020-03-26 → 2020-03-27 (+1d) |  |  |  |
| 33 | Provide Feedback | 2020-03-27 → 2020-03-30 (+3d) | 2020-03-27 → 2020-03-30 (+3d) |  |  |  |
| 34 | Close Contracts | 2020-06-29 → 2020-06-30 (+1d) | 2020-06-29 → 2020-06-30 (+1d) |  |  |  |
| 35 | Project Closed | 2020-06-29 → 2020-06-30 (+1d) | 2020-06-29 → 2020-06-30 (+1d) |  |  |  |
| 42 | Describe processes for Corporate Information |  |  |  |  | resources Technical Coordinator; Scrum Master → Technical Coordinator; Scrum Master; HRD Delegate |
| 56 | Define Integration Tests |  |  |  |  | resources Technical Coordinator; Scrum Master; HRD Delegate; ISTRetail Technical Coordinator → Technical Coordinator; Scrum Master; ISTRetail Technical Coordinator |
| 60 | **Realization** |  | 2020-02-26 → 2020-02-27 (+1d) | 36d → 37d |  |  |
| 73 | **Training Management** |  | 2020-02-11 → 2020-02-13 (+2d) | 10d → 12d |  |  |
| 78 | Test The Implementation | 2020-02-10 → 2020-02-12 (+2d) | 2020-02-11 → 2020-02-13 (+2d) |  | 76 → 77 |  |
| 79 | Finished Module 3 Implementation | 2020-02-11 → 2020-02-13 (+2d) | 2020-02-11 → 2020-02-13 (+2d) |  |  |  |
| 80 | **Interface Implementation** | 2020-02-12 → 2020-02-14 (+2d) | 2020-02-19 → 2020-02-20 (+1d) | 6d → 5d |  |  |
| 81 | Implement the WebService | 2020-02-12 → 2020-02-14 (+2d) |  | 3d → 1d |  |  |
| 82 | Implement the interface to access employees' Data |  |  |  |  | resources ISTRetail Technical Coordinator [50%]; IT Infrastructure Specialist [50%]; Trainee (ISTRetail) [50%]; Technical Coordinator [50%] → ISTRetail Technical Coordinator; IT Infrastructure Specialist; Trainee (ISTRetail); Technical Coordinator |
| 83 | Implement the interface to access employees' Salaries | 2020-02-17 → 2020-02-18 (+1d) | 2020-02-17 → 2020-02-18 (+1d) |  | 81 → 82 | was named Implement the interface to access employees' Salaries (está paralelo, como fazer com os recursos); resources ISTRetail Technical Coordinator [50%]; IT Infrastructure Specialist [50%]; Technical Coordinator [50%]; Trainee (ISTRetail) [50%] → ISTRetail Technical Coordinator; IT Infrastructure Specialist; Technical Coordinator; Trainee (ISTRetail) |
| 84 | Test The Implementation | 2020-02-18 → 2020-02-19 (+1d) | 2020-02-19 → 2020-02-20 (+1d) |  | 83, 82 → 83 |  |
| 85 | Finished Module 5 Implementation | 2020-02-19 → 2020-02-20 (+1d) | 2020-02-19 → 2020-02-20 (+1d) |  |  |  |
| 101 | **Integration Tests** | 2020-02-20 → 2020-02-21 (+1d) | 2020-02-26 → 2020-02-27 (+1d) |  |  |  |
| 102 | Integration Test Every Module | 2020-02-20 → 2020-02-21 (+1d) | 2020-02-26 → 2020-02-27 (+1d) |  |  |  |
| 103 | Fix Bugs | 2020-02-20 → 2020-02-21 (+1d) | 2020-02-26 → 2020-02-27 (+1d) |  |  |  |
| 104 | Passed All Integration Tests | 2020-02-26 → 2020-02-27 (+1d) | 2020-02-26 → 2020-02-27 (+1d) |  |  |  |
| 105 | **Transition** |  | 2020-03-24 → 2020-03-25 (+1d) | 61d → 62d |  |  |
| 110 | **Software Installation** | 2020-02-27 → 2020-02-28 (+1d) | 2020-03-02 → 2020-03-03 (+1d) |  |  |  |
| 111 | Preparation of the environment for Installation | 2020-02-27 → 2020-02-28 (+1d) | 2020-02-27 → 2020-02-28 (+1d) |  |  |  |
| 112 | Installation of Software | 2020-02-28 → 2020-03-02 (+3d) | 2020-03-02 → 2020-03-03 (+1d) |  |  |  |
| 113 | Software Installed | 2020-03-02 → 2020-03-03 (+1d) | 2020-03-02 → 2020-03-03 (+1d) |  |  |  |
| 114 | **Data Migration** | 2020-03-03 → 2020-03-04 (+1d) | 2020-03-04 → 2020-03-05 (+1d) |  |  |  |
| 115 | Prepare the system to receive training data | 2020-03-03 → 2020-03-04 (+1d) | 2020-03-03 → 2020-03-04 (+1d) |  |  |  |
| 116 | Migrate training information to the system | 2020-03-04 → 2020-03-05 (+1d) | 2020-03-04 → 2020-03-05 (+1d) |  |  |  |
| 117 | Data Migrated | 2020-03-04 → 2020-03-05 (+1d) | 2020-03-04 → 2020-03-05 (+1d) |  |  |  |
| 118 | **Training** | 2020-03-05 → 2020-03-06 (+1d) | 2020-03-10 → 2020-03-11 (+1d) |  |  |  |
| 119 | Train The HRD Staff To Use The Software | 2020-03-05 → 2020-03-06 (+1d) | 2020-03-06 → 2020-03-09 (+3d) |  |  |  |
| 120 | Train The DSI Staff To Use The Software | 2020-03-09 → 2020-03-10 (+1d) | 2020-03-10 → 2020-03-11 (+1d) |  |  |  |
| 121 | Target Users Trained | 2020-03-10 → 2020-03-11 (+1d) | 2020-03-10 → 2020-03-11 (+1d) |  |  |  |
| 122 | **System Tests** | 2020-03-11 → 2020-03-12 (+1d) | 2020-03-17 → 2020-03-18 (+1d) |  |  |  |
| 123 | Run System Tests | 2020-03-11 → 2020-03-12 (+1d) | 2020-03-17 → 2020-03-18 (+1d) |  |  |  |
| 124 | Fix Bugs | 2020-03-11 → 2020-03-12 (+1d) | 2020-03-17 → 2020-03-18 (+1d) |  |  |  |
| 125 | Project Transition Completed | 2020-03-17 → 2020-03-18 (+1d) | 2020-03-17 → 2020-03-18 (+1d) |  |  |  |
| 126 | **Acceptance Tests** | 2020-03-18 → 2020-03-19 (+1d) | 2020-03-24 → 2020-03-25 (+1d) |  |  |  |
| 127 | Run Acceptance Tests | 2020-03-18 → 2020-03-19 (+1d) | 2020-03-24 → 2020-03-25 (+1d) |  |  | resources HRD Delegate; HR Employee Record Specialist; HR Payroll Specialist; HR Training Management Specialist → HRD Delegate; HR Employee Record Specialist; HR Payroll Specialist; HR Training Management Specialist; HRD Director [10%]; SID Director [10%] |
| 128 | Fix Bugs | 2020-03-18 → 2020-03-19 (+1d) | 2020-03-24 → 2020-03-25 (+1d) |  |  |  |
| 129 | Acceptance Tests Approved | 2020-03-24 → 2020-03-25 (+1d) | 2020-03-24 → 2020-03-25 (+1d) |  |  |  |
| 130 | **Operation** | 2020-03-25 → 2020-03-26 (+1d) | 2020-06-26 → 2020-06-29 (+3d) |  |  |  |
| 131 | Support | 2020-03-25 → 2020-03-26 (+1d) | 2020-03-31 → 2020-04-01 (+1d) |  |  |  |
| 132 | Warranty | 2020-04-01 → 2020-04-02 (+1d) | 2020-06-26 → 2020-06-29 (+3d) |  |  |  |

## Version 8 (saved 2019-11-19, file GPI19-02-EX2-Original.mpp)

Note of the change: Project Original + Entrega 4

Last finish stays 2020-06-30.

Changed:

| ID | Task | Total float | Other |
| --- | --- | --- | --- |
| 1 | **Project Management** |  | baseline start none → 2019-12-02; baseline finish none → 2020-06-30 |
| 2 | **Project Initiation** |  | baseline start none → 2019-12-02; baseline finish none → 2019-12-04 |
| 3 | Review Project Charter |  | baseline start none → 2019-12-02; baseline finish none → 2019-12-02 |
| 4 | Review Stakeholders Identification |  | baseline start none → 2019-12-03; baseline finish none → 2019-12-03 |
| 5 | Establish Project Team |  | baseline start none → 2019-12-04; baseline finish none → 2019-12-04 |
| 6 | Project Started |  | baseline start none → 2019-12-04; baseline finish none → 2019-12-04 |
| 7 | **Project Planning** |  | baseline start none → 2019-12-05; baseline finish none → 2019-12-11 |
| 8 | Review Project Scope and Time |  | baseline start none → 2019-12-05; baseline finish none → 2019-12-05 |
| 9 | Define Project Organization |  | baseline start none → 2019-12-06; baseline finish none → 2019-12-06 |
| 10 | Define Communication plan |  | baseline start none → 2019-12-09; baseline finish none → 2019-12-09 |
| 11 | Review Project Plan |  | baseline start none → 2019-12-10; baseline finish none → 2019-12-10 |
| 12 | Kick-off Meeting |  | baseline start none → 2019-12-11; baseline finish none → 2019-12-11 |
| 13 | Project Plan Approved |  | baseline start none → 2019-12-11; baseline finish none → 2019-12-11 |
| 14 | **Control** |  | baseline start none → 2019-12-13; baseline finish none → 2020-03-20 |
| 15 | Control 1 | 135d → 136d | baseline start none → 2019-12-13; baseline finish none → 2019-12-13 |
| 16 | Control 2 | 130d → 131d | baseline start none → 2019-12-20; baseline finish none → 2019-12-20 |
| 17 | Control 3 | 127d → 128d | baseline start none → 2019-12-27; baseline finish none → 2019-12-27 |
| 18 | Control 4 | 123d → 124d | baseline start none → 2020-01-03; baseline finish none → 2020-01-03 |
| 19 | Control 5 | 118d → 119d | baseline start none → 2020-01-10; baseline finish none → 2020-01-10 |
| 20 | Control 6 | 113d → 114d | baseline start none → 2020-01-17; baseline finish none → 2020-01-17 |
| 21 | Control 7 | 108d → 109d | baseline start none → 2020-01-24; baseline finish none → 2020-01-24 |
| 22 | Control 8 | 103d → 104d | baseline start none → 2020-01-31; baseline finish none → 2020-01-31 |
| 23 | Control 9 | 98d → 99d | baseline start none → 2020-02-07; baseline finish none → 2020-02-07 |
| 24 | Control 10 | 93d → 94d | baseline start none → 2020-02-14; baseline finish none → 2020-02-14 |
| 25 | Control 11 | 88d → 89d | baseline start none → 2020-02-21; baseline finish none → 2020-02-21 |
| 26 | Control 12 | 83d → 84d | baseline start none → 2020-02-28; baseline finish none → 2020-02-28 |
| 27 | Control 13 | 78d → 79d | baseline start none → 2020-03-06; baseline finish none → 2020-03-06 |
| 28 | Control 14 | 73d → 74d | baseline start none → 2020-03-13; baseline finish none → 2020-03-13 |
| 29 | Control 15 | 68d → 69d | baseline start none → 2020-03-20; baseline finish none → 2020-03-20 |
| 30 | **Project Close** |  | baseline start none → 2020-03-26; baseline finish none → 2020-06-30 |
| 31 | Review Project Objectives |  | baseline start none → 2020-03-26; baseline finish none → 2020-03-26 |
| 32 | Collect Lessons Learned |  | baseline start none → 2020-03-27; baseline finish none → 2020-03-27 |
| 33 | Provide Feedback |  | baseline start none → 2020-03-30; baseline finish none → 2020-03-30 |
| 34 | Close Contracts |  | baseline start none → 2020-06-30; baseline finish none → 2020-06-30 |
| 35 | Project Closed |  | baseline start none → 2020-06-30; baseline finish none → 2020-06-30 |
| 36 | **Definition** |  | baseline start none → 2019-12-12; baseline finish none → 2019-12-27 |
| 37 | **Analyse Actual Situation** |  | baseline start none → 2019-12-12; baseline finish none → 2019-12-18 |
| 38 | Describe processes for Employees Register |  | baseline start none → 2019-12-12; baseline finish none → 2019-12-12 |
| 39 | Describe processes for Holidays and Absences |  | baseline start none → 2019-12-13; baseline finish none → 2019-12-13 |
| 40 | Describe processes for Training Management |  | baseline start none → 2019-12-16; baseline finish none → 2019-12-16 |
| 41 | Describe processes for Interface Implementation |  | baseline start none → 2019-12-17; baseline finish none → 2019-12-17 |
| 42 | Describe processes for Corporate Information |  | baseline start none → 2019-12-18; baseline finish none → 2019-12-18 |
| 43 | Described Current Processes |  | baseline start none → 2019-12-18; baseline finish none → 2019-12-18 |
| 44 | **Requirement Specification** |  | baseline start none → 2019-12-19; baseline finish none → 2019-12-27 |
| 45 | Gap Analysis For Each Module |  | baseline start none → 2019-12-19; baseline finish none → 2019-12-23 |
| 46 | Identify Parameters That Will Be Used For Each Module |  | baseline start none → 2019-12-26; baseline finish none → 2019-12-26 |
| 47 | Review project requirements |  | baseline start none → 2019-12-27; baseline finish none → 2019-12-27 |
| 48 | Reviewed Project Requirements |  | baseline start none → 2019-12-27; baseline finish none → 2019-12-27 |
| 49 | **Analysis & Design** |  | baseline start none → 2019-12-30; baseline finish none → 2020-01-07 |
| 50 | **Framework Interface Design** |  | baseline start none → 2019-12-30; baseline finish none → 2020-01-02 |
| 51 | Design the WebService |  | baseline start none → 2019-12-30; baseline finish none → 2019-12-30 |
| 52 | Design Interface To Access Employees' Data |  | baseline start none → 2019-12-31; baseline finish none → 2019-12-31 |
| 53 | Design Interface To Access Employees' Salary |  | baseline start none → 2020-01-02; baseline finish none → 2020-01-02 |
| 54 | Framework Interface Design Finished |  | baseline start none → 2020-01-02; baseline finish none → 2020-01-02 |
| 55 | **Tests Specification** |  | baseline start none → 2020-01-03; baseline finish none → 2020-01-07 |
| 56 | Define Integration Tests |  | baseline start none → 2020-01-03; baseline finish none → 2020-01-03 |
| 57 | Define System tests |  | baseline start none → 2020-01-06; baseline finish none → 2020-01-06 |
| 58 | Define Acceptance Tests |  | baseline start none → 2020-01-07; baseline finish none → 2020-01-07 |
| 59 | Tests Specification Defined |  | baseline start none → 2020-01-07; baseline finish none → 2020-01-07 |
| 60 | **Realization** |  | baseline start none → 2020-01-08; baseline finish none → 2020-02-27 |
| 61 | **Employees Register** |  | baseline start none → 2020-01-08; baseline finish none → 2020-01-14 |
| 62 | Parametrize The Module |  | baseline start none → 2020-01-08; baseline finish none → 2020-01-08 |
| 63 | Implement New Requirements |  | baseline start none → 2020-01-09; baseline finish none → 2020-01-10 |
| 64 | Implement Profile Configuration |  | baseline start none → 2020-01-13; baseline finish none → 2020-01-13 |
| 65 | Test The Implementation |  | baseline start none → 2020-01-14; baseline finish none → 2020-01-14 |
| 66 | Finished Module 1 Implementation |  | baseline start none → 2020-01-14; baseline finish none → 2020-01-14 |
| 67 | **Holidays and Absences** |  | baseline start none → 2020-01-15; baseline finish none → 2020-01-28 |
| 68 | Parametrize The Module |  | baseline start none → 2020-01-15; baseline finish none → 2020-01-16 |
| 69 | Implement New Requirements |  | baseline start none → 2020-01-17; baseline finish none → 2020-01-22 |
| 70 | Implement Profile Configuration |  | baseline start none → 2020-01-23; baseline finish none → 2020-01-24 |

| ID | Task | Other |
| --- | --- | --- |
| 71 | Test The Implementation | baseline start none → 2020-01-27; baseline finish none → 2020-01-28 |
| 72 | Finished Module 2 Implementation | baseline start none → 2020-01-28; baseline finish none → 2020-01-28 |
| 73 | **Training Management** | baseline start none → 2020-01-29; baseline finish none → 2020-02-13 |
| 74 | Parametrize The Module | baseline start none → 2020-01-29; baseline finish none → 2020-01-30 |
| 75 | Implement New Requirements | baseline start none → 2020-01-31; baseline finish none → 2020-02-05 |
| 76 | Create Script For Data Migration | baseline start none → 2020-02-06; baseline finish none → 2020-02-07 |
| 77 | Allowance | baseline start none → 2020-02-10; baseline finish none → 2020-02-11 |
| 78 | Test The Implementation | baseline start none → 2020-02-12; baseline finish none → 2020-02-13 |
| 79 | Finished Module 3 Implementation | baseline start none → 2020-02-13; baseline finish none → 2020-02-13 |
| 80 | **Interface Implementation** | baseline start none → 2020-02-14; baseline finish none → 2020-02-20 |
| 81 | Implement the WebService | baseline start none → 2020-02-14; baseline finish none → 2020-02-14 |
| 82 | Implement the interface to access employees' Data | baseline start none → 2020-02-17; baseline finish none → 2020-02-17 |
| 83 | Implement the interface to access employees' Salaries | baseline start none → 2020-02-18; baseline finish none → 2020-02-18 |
| 84 | Test The Implementation | baseline start none → 2020-02-19; baseline finish none → 2020-02-20 |
| 85 | Finished Module 5 Implementation | baseline start none → 2020-02-20; baseline finish none → 2020-02-20 |
| 86 | **Corporate Information** | baseline start none → 2020-01-08; baseline finish none → 2020-02-19 |
| 87 | Create Backlog | baseline start none → 2020-01-08; baseline finish none → 2020-01-08 |
| 88 | **Sprint 1** | baseline start none → 2020-01-09; baseline finish none → 2020-01-22 |
| 89 | Plan The Sprint | baseline start none → 2020-01-09; baseline finish none → 2020-01-09 |
| 90 | Realize The Sprint | baseline start none → 2020-01-10; baseline finish none → 2020-01-21 |
| 91 | Review The Results | baseline start none → 2020-01-22; baseline finish none → 2020-01-22 |
| 92 | **Sprint 2** | baseline start none → 2020-01-23; baseline finish none → 2020-02-05 |
| 93 | Plan The Sprint | baseline start none → 2020-01-23; baseline finish none → 2020-01-23 |
| 94 | Realize The Sprint | baseline start none → 2020-01-24; baseline finish none → 2020-02-04 |
| 95 | Review The Results | baseline start none → 2020-02-05; baseline finish none → 2020-02-05 |
| 96 | **Sprint 3** | baseline start none → 2020-02-06; baseline finish none → 2020-02-19 |
| 97 | Plan The Sprint | baseline start none → 2020-02-06; baseline finish none → 2020-02-06 |
| 98 | Realize The Sprint | baseline start none → 2020-02-07; baseline finish none → 2020-02-18 |
| 99 | Review The Results | baseline start none → 2020-02-19; baseline finish none → 2020-02-19 |
| 100 | Sprints Completed | baseline start none → 2020-02-19; baseline finish none → 2020-02-19 |
| 101 | **Integration Tests** | baseline start none → 2020-02-21; baseline finish none → 2020-02-27 |
| 102 | Integration Test Every Module | baseline start none → 2020-02-21; baseline finish none → 2020-02-27 |
| 103 | Fix Bugs | baseline start none → 2020-02-21; baseline finish none → 2020-02-27 |
| 104 | Passed All Integration Tests | baseline start none → 2020-02-27; baseline finish none → 2020-02-27 |
| 105 | **Transition** | baseline start none → 2019-12-30; baseline finish none → 2020-03-25 |
| 106 | **Hardware and Infrastructure** | baseline start none → 2019-12-30; baseline finish none → 2020-01-02 |
| 107 | Planning of the setup | baseline start none → 2019-12-30; baseline finish none → 2019-12-30 |
| 108 | Setup of Hardware and Infrastructure | baseline start none → 2019-12-31; baseline finish none → 2020-01-02 |
| 109 | Hardware and Infrastructure Installed | baseline start none → 2020-01-02; baseline finish none → 2020-01-02 |
| 110 | **Software Installation** | baseline start none → 2020-02-28; baseline finish none → 2020-03-03 |
| 111 | Preparation of the environment for Installation | baseline start none → 2020-02-28; baseline finish none → 2020-02-28 |
| 112 | Installation of Software | baseline start none → 2020-03-02; baseline finish none → 2020-03-03 |
| 113 | Software Installed | baseline start none → 2020-03-03; baseline finish none → 2020-03-03 |
| 114 | **Data Migration** | baseline start none → 2020-03-04; baseline finish none → 2020-03-05 |
| 115 | Prepare the system to receive training data | baseline start none → 2020-03-04; baseline finish none → 2020-03-04 |
| 116 | Migrate training information to the system | baseline start none → 2020-03-05; baseline finish none → 2020-03-05 |
| 117 | Data Migrated | baseline start none → 2020-03-05; baseline finish none → 2020-03-05 |
| 118 | **Training** | baseline start none → 2020-03-06; baseline finish none → 2020-03-11 |
| 119 | Train The HRD Staff To Use The Software | baseline start none → 2020-03-06; baseline finish none → 2020-03-09 |
| 120 | Train The DSI Staff To Use The Software | baseline start none → 2020-03-10; baseline finish none → 2020-03-11 |
| 121 | Target Users Trained | baseline start none → 2020-03-11; baseline finish none → 2020-03-11 |
| 122 | **System Tests** | baseline start none → 2020-03-12; baseline finish none → 2020-03-18 |
| 123 | Run System Tests | baseline start none → 2020-03-12; baseline finish none → 2020-03-18 |
| 124 | Fix Bugs | baseline start none → 2020-03-12; baseline finish none → 2020-03-18 |
| 125 | Project Transition Completed | baseline start none → 2020-03-18; baseline finish none → 2020-03-18 |
| 126 | **Acceptance Tests** | baseline start none → 2020-03-19; baseline finish none → 2020-03-25 |
| 127 | Run Acceptance Tests | baseline start none → 2020-03-19; baseline finish none → 2020-03-25 |
| 128 | Fix Bugs | baseline start none → 2020-03-19; baseline finish none → 2020-03-25 |
| 129 | Acceptance Tests Approved | baseline start none → 2020-03-25; baseline finish none → 2020-03-25 |
| 130 | **Operation** | baseline start none → 2020-03-26; baseline finish none → 2020-06-29 |
| 131 | Support | baseline start none → 2020-03-26; baseline finish none → 2020-04-01 |
| 132 | Warranty | baseline start none → 2020-04-02; baseline finish none → 2020-06-29 |

## Version 9 (data date 2020-01-30, saved 2019-11-19, file GPI19-02-EX2-Actual.mpp)

Note of the change: Project Original + Entrega 4

Last finish 2020-06-30 → 2020-07-15 (+15d). Complete tasks 0 → 46.

Added:

| ID | Task | Duration | Start | Finish | Predecessors | Resources |
| --- | --- | --- | --- | --- | --- | --- |
| 46 | ISHR interfaces specification | 5d | 2020-01-03 A | 2020-01-09 A | 45 | Consultant 1 (TC); Consultant 2 (TC); Technical Coordinator |

Removed: 29 Control 15

Changed:

| ID | Task | Start | Finish | Duration | Complete | Total float | Predecessors | Other |
| --- | --- | --- | --- | --- | --- | --- | --- | --- |
| 1 | **Project Management** | 2019-12-02 A | 2020-06-30 → 2020-07-15 (+15d) | 146d → 157d | 0% → 54% |  |  |  |
| 2 | **Project Initiation** | 2019-12-02 A | 2019-12-04 A |  | 0% → 100% | 0d → none |  |  |
| 3 | Review Project Charter | 2019-12-02 A | 2019-12-02 A |  | 0% → 100% | 0d → none |  |  |
| 4 | Review Stakeholders Identification | 2019-12-03 A | 2019-12-03 A |  | 0% → 100% | 0d → none |  |  |
| 5 | Establish Project Team | 2019-12-04 A | 2019-12-04 A |  | 0% → 100% | 0d → none |  |  |
| 6 | Project Started | 2019-12-04 A | 2019-12-04 A |  | 0% → 100% | 0d → none |  |  |
| 7 | **Project Planning** | 2019-12-05 A | 2019-12-11 → 2019-12-17 A (+6d) | 5d → 9d | 0% → 100% | 0d → none |  |  |
| 8 | Review Project Scope and Time | 2019-12-05 A | 2019-12-05 A |  | 0% → 100% | 0d → none |  |  |
| 9 | Define Project Organization | 2019-12-06 A | 2019-12-06 A |  | 0% → 100% | 0d → none |  |  |
| 10 | Define Communication plan | 2019-12-09 A | 2019-12-09 A |  | 0% → 100% | 0d → none |  |  |
| 11 | Review Project Plan | 2019-12-10 → 2019-12-16 A (+6d) | 2019-12-10 → 2019-12-16 A (+6d) |  | 0% → 100% | 0d → none |  |  |
| 12 | Kick-off Meeting | 2019-12-11 → 2019-12-17 A (+6d) | 2019-12-11 → 2019-12-17 A (+6d) |  | 0% → 100% | 0d → none |  |  |
| 13 | Project Plan Approved | 2019-12-11 → 2019-12-17 A (+6d) | 2019-12-11 → 2019-12-17 A (+6d) |  | 0% → 100% | 0d → none |  |  |
| 14 | **Control** | 2019-12-13 → 2019-12-20 A (+7d) |  | 68d → 63d | 0% → 43% | 69d → 80d |  |  |
| 15 | Control 1 | 2019-12-13 → 2019-12-20 A (+7d) | 2019-12-13 → 2019-12-20 A (+7d) |  | 0% → 100% | 136d → none |  | constraint start no earlier than 2019-12-13 → start no earlier than 2019-12-20 |
| 16 | Control 2 | 2019-12-20 → 2019-12-27 A (+7d) | 2019-12-20 → 2019-12-27 A (+7d) |  | 0% → 100% | 131d → none |  | constraint start no earlier than 2019-12-20 → start no earlier than 2019-12-27 |
| 17 | Control 3 | 2019-12-27 → 2020-01-03 A (+7d) | 2019-12-27 → 2020-01-03 A (+7d) |  | 0% → 100% | 128d → none |  | constraint start no earlier than 2019-12-27 → start no earlier than 2020-01-03 |
| 18 | Control 4 | 2020-01-03 → 2020-01-10 A (+7d) | 2020-01-03 → 2020-01-10 A (+7d) |  | 0% → 100% | 124d → none |  | constraint start no earlier than 2020-01-03 → start no earlier than 2020-01-10 |
| 19 | Control 5 | 2020-01-10 → 2020-01-17 A (+7d) | 2020-01-10 → 2020-01-17 A (+7d) |  | 0% → 100% | 119d → none |  | constraint start no earlier than 2020-01-10 → start no earlier than 2020-01-17 |
| 20 | Control 6 | 2020-01-17 → 2020-01-24 A (+7d) | 2020-01-17 → 2020-01-24 A (+7d) |  | 0% → 100% | 114d → none |  | constraint start no earlier than 2020-01-17 → start no earlier than 2020-01-24 |
| 21 | Control 7 | 2020-01-24 → 2020-01-31 (+7d) | 2020-01-24 → 2020-01-31 (+7d) |  |  | 109d → 115d |  | constraint start no earlier than 2020-01-24 → start no earlier than 2020-01-31 |
| 22 | Control 8 | 2020-01-31 → 2020-02-07 (+7d) | 2020-01-31 → 2020-02-07 (+7d) |  |  | 104d → 110d |  | constraint start no earlier than 2020-01-31 → start no earlier than 2020-02-07 |
| 23 | Control 9 | 2020-02-07 → 2020-02-14 (+7d) | 2020-02-07 → 2020-02-14 (+7d) |  |  | 99d → 105d |  | constraint start no earlier than 2020-02-07 → start no earlier than 2020-02-14 |
| 24 | Control 10 | 2020-02-14 → 2020-02-21 (+7d) | 2020-02-14 → 2020-02-21 (+7d) |  |  | 94d → 100d |  | constraint start no earlier than 2020-02-14 → start no earlier than 2020-02-21 |
| 25 | Control 11 | 2020-02-21 → 2020-02-28 (+7d) | 2020-02-21 → 2020-02-28 (+7d) |  |  | 89d → 95d |  | constraint start no earlier than 2020-02-21 → start no earlier than 2020-02-28 |
| 26 | Control 12 | 2020-02-28 → 2020-03-06 (+7d) | 2020-02-28 → 2020-03-06 (+7d) |  |  | 84d → 90d |  | constraint start no earlier than 2020-02-28 → start no earlier than 2020-03-06 |
| 27 | Control 13 | 2020-03-06 → 2020-03-13 (+7d) | 2020-03-06 → 2020-03-13 (+7d) |  |  | 79d → 85d |  | constraint start no earlier than 2020-03-06 → start no earlier than 2020-03-13 |
| 28 | Control 14 | 2020-03-13 → 2020-03-20 (+7d) | 2020-03-13 → 2020-03-20 (+7d) |  |  | 74d → 80d |  | constraint start no earlier than 2020-03-13 → start no earlier than 2020-03-20 |
| 29 | **Project Close** | 2020-03-26 → 2020-04-13 (+18d) | 2020-06-30 → 2020-07-15 (+15d) |  |  |  |  |  |
| 30 | Review Project Objectives | 2020-03-26 → 2020-04-13 (+18d) | 2020-03-26 → 2020-04-13 (+18d) |  |  |  |  |  |
| 31 | Collect Lessons Learned | 2020-03-27 → 2020-04-14 (+18d) | 2020-03-27 → 2020-04-14 (+18d) |  |  |  |  |  |
| 32 | Provide Feedback | 2020-03-30 → 2020-04-15 (+16d) | 2020-03-30 → 2020-04-15 (+16d) |  |  |  |  |  |
| 33 | Close Contracts | 2020-06-30 → 2020-07-15 (+15d) | 2020-06-30 → 2020-07-15 (+15d) |  |  |  |  |  |
| 34 | Project Closed | 2020-06-30 → 2020-07-15 (+15d) | 2020-06-30 → 2020-07-15 (+15d) |  |  |  |  |  |
| 35 | **Definition** | 2019-12-12 → 2019-12-18 A (+6d) | 2019-12-27 → 2020-01-10 A (+14d) | 10d → 15d | 0% → 100% | 0d → none |  |  |
| 36 | **Analyse Actual Situation** | 2019-12-12 → 2019-12-18 A (+6d) | 2019-12-18 → 2019-12-26 A (+8d) |  | 0% → 100% | 0d → none |  |  |
| 37 | Describe processes for Employees Register | 2019-12-12 → 2019-12-18 A (+6d) | 2019-12-12 → 2019-12-18 A (+6d) |  | 0% → 100% | 0d → none |  |  |
| 38 | Describe processes for Holidays and Absences | 2019-12-13 → 2019-12-19 A (+6d) | 2019-12-13 → 2019-12-19 A (+6d) |  | 0% → 100% | 0d → none |  |  |
| 39 | Describe processes for Training Management | 2019-12-16 → 2019-12-20 A (+4d) | 2019-12-16 → 2019-12-20 A (+4d) |  | 0% → 100% | 0d → none |  |  |
| 40 | Describe processes for Interface Implementation | 2019-12-17 → 2019-12-23 A (+6d) | 2019-12-17 → 2019-12-23 A (+6d) |  | 0% → 100% | 0d → none |  |  |
| 41 | Describe processes for Corporate Information | 2019-12-18 → 2019-12-26 A (+8d) | 2019-12-18 → 2019-12-26 A (+8d) |  | 0% → 100% | 0d → none |  |  |
| 42 | Described Current Processes | 2019-12-18 → 2019-12-26 A (+8d) | 2019-12-18 → 2019-12-26 A (+8d) |  | 0% → 100% | 0d → none |  |  |
| 43 | **Requirement Specification** | 2019-12-19 → 2019-12-27 A (+8d) | 2019-12-27 → 2020-01-10 A (+14d) | 5d → 10d | 0% → 100% | 0d → none |  |  |
| 44 | Gap Analysis For Each Module | 2019-12-19 → 2019-12-27 A (+8d) | 2019-12-23 → 2019-12-31 A (+8d) |  | 0% → 100% | 0d → none |  |  |
| 45 | Identify Parameters That Will Be Used For Each Module | 2019-12-26 → 2020-01-02 A (+7d) | 2019-12-26 → 2020-01-02 A (+7d) |  | 0% → 100% | 0d → none |  |  |
| 47 | Review project requirements | 2019-12-27 → 2020-01-10 A (+14d) | 2019-12-27 → 2020-01-10 A (+14d) |  | 0% → 100% | 0d → none | 45 → 46 |  |
| 48 | Reviewed Project Requirements | 2019-12-27 → 2020-01-10 A (+14d) | 2019-12-27 → 2020-01-10 A (+14d) |  | 0% → 100% | 0d → none |  |  |
| 49 | **Analysis & Design** | 2019-12-30 → 2020-01-13 A (+14d) | 2020-01-07 → 2020-01-20 A (+13d) |  | 0% → 100% | 0d → none |  |  |
| 50 | **Framework Interface Design** | 2019-12-30 → 2020-01-13 A (+14d) | 2020-01-02 → 2020-01-15 A (+13d) |  | 0% → 100% | 0d → none |  |  |
| 51 | Design the WebService | 2019-12-30 → 2020-01-13 A (+14d) | 2019-12-30 → 2020-01-13 A (+14d) |  | 0% → 100% | 0d → none |  |  |
| 52 | Design Interface To Access Employees' Data | 2019-12-31 → 2020-01-14 A (+14d) | 2019-12-31 → 2020-01-14 A (+14d) |  | 0% → 100% | 0d → none |  |  |
| 53 | Design Interface To Access Employees' Salary | 2020-01-02 → 2020-01-15 A (+13d) | 2020-01-02 → 2020-01-15 A (+13d) |  | 0% → 100% | 0d → none |  |  |
| 54 | Framework Interface Design Finished | 2020-01-02 → 2020-01-15 A (+13d) | 2020-01-02 → 2020-01-15 A (+13d) |  | 0% → 100% | 0d → none |  |  |
| 55 | **Tests Specification** | 2020-01-03 → 2020-01-16 A (+13d) | 2020-01-07 → 2020-01-20 A (+13d) |  | 0% → 100% | 0d → none |  |  |
| 56 | Define Integration Tests | 2020-01-03 → 2020-01-16 A (+13d) | 2020-01-03 → 2020-01-16 A (+13d) |  | 0% → 100% | 0d → none |  |  |
| 57 | Define System tests | 2020-01-06 → 2020-01-17 A (+11d) | 2020-01-06 → 2020-01-17 A (+11d) |  | 0% → 100% | 0d → none |  |  |
| 58 | Define Acceptance Tests | 2020-01-07 → 2020-01-20 A (+13d) | 2020-01-07 → 2020-01-20 A (+13d) |  | 0% → 100% | 0d → none |  |  |
| 59 | Tests Specification Defined | 2020-01-07 → 2020-01-20 A (+13d) | 2020-01-07 → 2020-01-20 A (+13d) |  | 0% → 100% | 0d → none |  |  |
| 60 | **Realization** | 2020-01-08 → 2020-01-21 A (+13d) | 2020-02-27 → 2020-03-13 (+15d) | 37d → 39d | 0% → 22% |  |  |  |
| 61 | **Employees Register** | 2020-01-08 → 2020-01-21 A (+13d) | 2020-01-14 → 2020-01-27 A (+13d) |  | 0% → 100% | 0d → none |  |  |
| 62 | Parametrize The Module | 2020-01-08 → 2020-01-21 A (+13d) | 2020-01-08 → 2020-01-21 A (+13d) |  | 0% → 100% | 0d → none |  |  |
| 63 | Implement New Requirements | 2020-01-09 → 2020-01-22 A (+13d) | 2020-01-10 → 2020-01-23 A (+13d) |  | 0% → 100% | 0d → none |  |  |
| 64 | Implement Profile Configuration | 2020-01-13 → 2020-01-24 A (+11d) | 2020-01-13 → 2020-01-24 A (+11d) |  | 0% → 100% | 0d → none |  |  |
| 65 | Test The Implementation | 2020-01-14 → 2020-01-27 A (+13d) | 2020-01-14 → 2020-01-27 A (+13d) |  | 0% → 100% | 0d → none |  |  |
| 66 | Finished Module 1 Implementation | 2020-01-14 → 2020-01-27 A (+13d) | 2020-01-14 → 2020-01-27 A (+13d) |  | 0% → 100% | 0d → none |  |  |
| 67 | **Holidays and Absences** | 2020-01-15 → 2020-01-28 A (+13d) | 2020-01-28 → 2020-02-10 (+13d) |  | 0% → 30% | 0d → 2d |  |  |
| 68 | Parametrize The Module | 2020-01-15 → 2020-01-28 A (+13d) | 2020-01-16 → 2020-01-29 A (+13d) |  | 0% → 100% | 0d → none |  |  |
| 69 | Implement New Requirements | 2020-01-17 → 2020-01-30 A (+13d) | 2020-01-22 → 2020-02-04 (+13d) |  | 0% → 25% | 0d → 2d |  |  |
| 70 | Implement Profile Configuration | 2020-01-23 → 2020-02-05 (+13d) | 2020-01-24 → 2020-02-06 (+13d) |  |  | 0d → 2d |  |  |
| 71 | Test The Implementation | 2020-01-27 → 2020-02-07 (+11d) | 2020-01-28 → 2020-02-10 (+13d) |  |  | 0d → 2d |  |  |

| ID | Task | Start | Finish | Duration | Complete | Total float | Other |
| --- | --- | --- | --- | --- | --- | --- | --- |
| 72 | Finished Module 2 Implementation | 2020-01-28 → 2020-02-10 (+13d) | 2020-01-28 → 2020-02-10 (+13d) |  |  | 0d → 2d |  |
| 73 | **Training Management** | 2020-01-29 → 2020-02-11 (+13d) | 2020-02-13 → 2020-02-26 (+13d) |  |  | 0d → 2d |  |
| 74 | Parametrize The Module | 2020-01-29 → 2020-02-11 (+13d) | 2020-01-30 → 2020-02-12 (+13d) |  |  | 0d → 2d |  |
| 75 | Implement New Requirements | 2020-01-31 → 2020-02-13 (+13d) | 2020-02-05 → 2020-02-18 (+13d) |  |  | 0d → 2d |  |
| 76 | Create Script For Data Migration | 2020-02-06 → 2020-02-19 (+13d) | 2020-02-07 → 2020-02-20 (+13d) |  |  | 0d → 2d |  |
| 77 | Allowance | 2020-02-10 → 2020-02-21 (+11d) | 2020-02-11 → 2020-02-24 (+13d) |  |  | 0d → 2d |  |
| 78 | Test The Implementation | 2020-02-12 → 2020-02-25 (+13d) | 2020-02-13 → 2020-02-26 (+13d) |  |  | 0d → 2d |  |
| 79 | Finished Module 3 Implementation | 2020-02-13 → 2020-02-26 (+13d) | 2020-02-13 → 2020-02-26 (+13d) |  |  | 0d → 2d |  |
| 80 | **Interface Implementation** | 2020-02-14 → 2020-03-02 (+17d) | 2020-02-20 → 2020-03-06 (+15d) |  |  |  |  |
| 81 | Implement the WebService | 2020-02-14 → 2020-03-02 (+17d) | 2020-02-14 → 2020-03-02 (+17d) |  |  |  | constraint none → start no earlier than 2020-03-02 |
| 82 | Implement the interface to access employees' Data | 2020-02-17 → 2020-03-03 (+15d) | 2020-02-17 → 2020-03-03 (+15d) |  |  |  |  |
| 83 | Implement the interface to access employees' Salaries | 2020-02-18 → 2020-03-04 (+15d) | 2020-02-18 → 2020-03-04 (+15d) |  |  |  |  |
| 84 | Test The Implementation | 2020-02-19 → 2020-03-05 (+15d) | 2020-02-20 → 2020-03-06 (+15d) |  |  |  |  |
| 85 | Finished Module 5 Implementation | 2020-02-20 → 2020-03-06 (+15d) | 2020-02-20 → 2020-03-06 (+15d) |  |  |  |  |
| 86 | **Corporate Information** | 2020-01-08 → 2020-01-21 A (+13d) | 2020-02-19 → 2020-03-03 (+13d) |  | 0% → 26% | 1d → 3d |  |
| 87 | Create Backlog | 2020-01-08 → 2020-01-21 A (+13d) | 2020-01-08 → 2020-01-21 A (+13d) |  | 0% → 100% | 1d → none |  |
| 88 | **Sprint 1** | 2020-01-09 → 2020-01-22 A (+13d) | 2020-01-22 → 2020-02-04 (+13d) |  | 0% → 70% | 1d → 3d |  |
| 89 | Plan The Sprint | 2020-01-09 → 2020-01-22 A (+13d) | 2020-01-09 → 2020-01-22 A (+13d) |  | 0% → 100% | 1d → none |  |
| 90 | Realize The Sprint | 2020-01-10 → 2020-01-23 A (+13d) | 2020-01-21 → 2020-02-03 (+13d) |  | 0% → 75% | 1d → 3d |  |
| 91 | Review The Results | 2020-01-22 → 2020-02-04 (+13d) | 2020-01-22 → 2020-02-04 (+13d) |  |  | 1d → 3d |  |
| 92 | **Sprint 2** | 2020-01-23 → 2020-02-05 (+13d) | 2020-02-05 → 2020-02-18 (+13d) |  |  | 1d → 3d |  |
| 93 | Plan The Sprint | 2020-01-23 → 2020-02-05 (+13d) | 2020-01-23 → 2020-02-05 (+13d) |  |  | 1d → 3d |  |
| 94 | Realize The Sprint | 2020-01-24 → 2020-02-06 (+13d) | 2020-02-04 → 2020-02-17 (+13d) |  |  | 1d → 3d |  |
| 95 | Review The Results | 2020-02-05 → 2020-02-18 (+13d) | 2020-02-05 → 2020-02-18 (+13d) |  |  | 1d → 3d |  |
| 96 | **Sprint 3** | 2020-02-06 → 2020-02-19 (+13d) | 2020-02-19 → 2020-03-03 (+13d) |  |  | 1d → 3d |  |
| 97 | Plan The Sprint | 2020-02-06 → 2020-02-19 (+13d) | 2020-02-06 → 2020-02-19 (+13d) |  |  | 1d → 3d |  |
| 98 | Realize The Sprint | 2020-02-07 → 2020-02-20 (+13d) | 2020-02-18 → 2020-03-02 (+13d) |  |  | 1d → 3d |  |
| 99 | Review The Results | 2020-02-19 → 2020-03-03 (+13d) | 2020-02-19 → 2020-03-03 (+13d) |  |  | 1d → 3d |  |
| 100 | Sprints Completed | 2020-02-19 → 2020-03-03 (+13d) | 2020-02-19 → 2020-03-03 (+13d) |  |  | 1d → 3d |  |
| 101 | **Integration Tests** | 2020-02-21 → 2020-03-09 (+17d) | 2020-02-27 → 2020-03-13 (+15d) |  |  |  |  |
| 102 | Integration Test Every Module | 2020-02-21 → 2020-03-09 (+17d) | 2020-02-27 → 2020-03-13 (+15d) |  |  |  |  |
| 103 | Fix Bugs | 2020-02-21 → 2020-03-09 (+17d) | 2020-02-27 → 2020-03-13 (+15d) |  |  |  |  |
| 104 | Passed All Integration Tests | 2020-02-27 → 2020-03-13 (+15d) | 2020-02-27 → 2020-03-13 (+15d) |  |  |  |  |
| 105 | **Transition** | 2019-12-30 → 2020-01-13 A (+14d) | 2020-03-25 → 2020-04-09 (+15d) | 62d → 64d | 0% → 9% |  |  |
| 106 | **Hardware and Infrastructure** | 2019-12-30 → 2020-01-13 A (+14d) | 2020-01-02 → 2020-01-15 A (+13d) |  | 0% → 100% | 40d → none |  |
| 107 | Planning of the setup | 2019-12-30 → 2020-01-13 A (+14d) | 2019-12-30 → 2020-01-13 A (+14d) |  | 0% → 100% | 40d → none |  |
| 108 | Setup of Hardware and Infrastructure | 2019-12-31 → 2020-01-14 A (+14d) | 2020-01-02 → 2020-01-15 A (+13d) |  | 0% → 100% | 40d → none |  |
| 109 | Hardware and Infrastructure Installed | 2020-01-02 → 2020-01-15 A (+13d) | 2020-01-02 → 2020-01-15 A (+13d) |  | 0% → 100% | 40d → none |  |
| 110 | **Software Installation** | 2020-02-28 → 2020-03-16 (+17d) | 2020-03-03 → 2020-03-18 (+15d) |  |  |  |  |
| 111 | Preparation of the environment for Installation | 2020-02-28 → 2020-03-16 (+17d) | 2020-02-28 → 2020-03-16 (+17d) |  |  |  |  |
| 112 | Installation of Software | 2020-03-02 → 2020-03-17 (+15d) | 2020-03-03 → 2020-03-18 (+15d) |  |  |  |  |
| 113 | Software Installed | 2020-03-03 → 2020-03-18 (+15d) | 2020-03-03 → 2020-03-18 (+15d) |  |  |  |  |
| 114 | **Data Migration** | 2020-03-04 → 2020-03-19 (+15d) | 2020-03-05 → 2020-03-20 (+15d) |  |  |  |  |
| 115 | Prepare the system to receive training data | 2020-03-04 → 2020-03-19 (+15d) | 2020-03-04 → 2020-03-19 (+15d) |  |  |  |  |
| 116 | Migrate training information to the system | 2020-03-05 → 2020-03-20 (+15d) | 2020-03-05 → 2020-03-20 (+15d) |  |  |  |  |
| 117 | Data Migrated | 2020-03-05 → 2020-03-20 (+15d) | 2020-03-05 → 2020-03-20 (+15d) |  |  |  |  |
| 118 | **Training** | 2020-03-06 → 2020-03-23 (+17d) | 2020-03-11 → 2020-03-26 (+15d) |  |  |  |  |
| 119 | Train The HRD Staff To Use The Software | 2020-03-06 → 2020-03-23 (+17d) | 2020-03-09 → 2020-03-24 (+15d) |  |  |  |  |
| 120 | Train The DSI Staff To Use The Software | 2020-03-10 → 2020-03-25 (+15d) | 2020-03-11 → 2020-03-26 (+15d) |  |  |  |  |
| 121 | Target Users Trained | 2020-03-11 → 2020-03-26 (+15d) | 2020-03-11 → 2020-03-26 (+15d) |  |  |  |  |
| 122 | **System Tests** | 2020-03-12 → 2020-03-27 (+15d) | 2020-03-18 → 2020-04-02 (+15d) |  |  |  |  |
| 123 | Run System Tests | 2020-03-12 → 2020-03-27 (+15d) | 2020-03-18 → 2020-04-02 (+15d) |  |  |  |  |
| 124 | Fix Bugs | 2020-03-12 → 2020-03-27 (+15d) | 2020-03-18 → 2020-04-02 (+15d) |  |  |  |  |
| 125 | Project Transition Completed | 2020-03-18 → 2020-04-02 (+15d) | 2020-03-18 → 2020-04-02 (+15d) |  |  |  |  |
| 126 | **Acceptance Tests** | 2020-03-19 → 2020-04-03 (+15d) | 2020-03-25 → 2020-04-09 (+15d) |  |  |  |  |
| 127 | Run Acceptance Tests | 2020-03-19 → 2020-04-03 (+15d) | 2020-03-25 → 2020-04-09 (+15d) |  |  |  |  |
| 128 | Fix Bugs | 2020-03-19 → 2020-04-03 (+15d) | 2020-03-25 → 2020-04-09 (+15d) |  |  |  |  |
| 129 | Acceptance Tests Approved | 2020-03-25 → 2020-04-09 (+15d) | 2020-03-25 → 2020-04-09 (+15d) |  |  |  |  |
| 130 | **Operation** | 2020-03-26 → 2020-04-13 (+18d) | 2020-06-29 → 2020-07-14 (+15d) |  |  |  |  |
| 131 | Support | 2020-03-26 → 2020-04-13 (+18d) | 2020-04-01 → 2020-04-17 (+16d) |  |  |  |  |
| 132 | Warranty | 2020-04-02 → 2020-04-20 (+18d) | 2020-06-29 → 2020-07-14 (+15d) |  |  |  |  |

## Version 10 (data date 2020-01-30, saved 2019-11-29, file GPI19-02-EX2-Actual.mpp)

Note of the change: Added change on Hardware date

Last finish stays 2020-07-15. Complete tasks 46 → 43.

Changed:

| ID | Task | Start | Finish | Duration | Complete | Total float | Other |
| --- | --- | --- | --- | --- | --- | --- | --- |
| 105 | **Transition** | 2020-01-13 A → 2020-02-28 (+46d) |  | 64d → 30d | 9% → 0% |  |  |
| 106 | **Hardware and Infrastructure** | 2020-01-13 A → 2020-02-28 (+46d) | 2020-01-15 A → 2020-03-03 (+48d) |  | 100% → 0% |  |  |
| 107 | Planning of the setup | 2020-01-13 A → 2020-02-28 (+46d) | 2020-01-13 A → 2020-02-28 (+46d) |  | 100% → 0% | none → 8d | constraint none → finish no earlier than 2020-02-28 |
| 108 | Setup of Hardware and Infrastructure | 2020-01-14 A → 2020-03-02 (+48d) | 2020-01-15 A → 2020-03-03 (+48d) |  | 100% → 0% | none → 8d |  |
| 109 | Hardware and Infrastructure Installed | 2020-01-15 A → 2020-03-03 (+48d) | 2020-01-15 A → 2020-03-03 (+48d) |  | 100% → 0% | none → 8d |  |

## Version 11 (data date 2020-01-30, saved 2019-12-03, file Status31Jan.mpp)

Note of the change: Added Status31Jan version

Last finish stays 2020-07-15.

Added:

| ID | Task | Duration | Start | Finish | Constraint |
| --- | --- | --- | --- | --- | --- |
| 29 | Control 15 | 1d | 2020-03-27 | 2020-03-27 | start no earlier than 2020-03-27 |
| 30 | Control 16 | 1d | 2020-04-03 | 2020-04-03 | start no earlier than 2020-04-03 |

Changed:

| ID | Task | Finish | Duration | Complete | Total float |
| --- | --- | --- | --- | --- | --- |
| 1 | **Project Management** |  |  | 54% → 50% |  |
| 14 | **Control** | 2020-03-20 → 2020-04-03 (+14d) | 63d → 73d | 43% → 38% | 80d → 70d |

## Version 12 (data date 2020-01-31, saved 2019-12-03, file Status31Jan.mpp)

Note of the change: Status 31 finished

Last finish 2020-07-15 → 2020-07-10 (-5d). Complete tasks 43 → 45.

Added:

| ID | Task | Duration | Start | Finish | Predecessors | Resources |
| --- | --- | --- | --- | --- | --- | --- |
| 48 | ISHR Interfaces Specification | 5d | 2020-01-02 A | 2020-01-08 A | 47 | Technical Coordinator; Consultant 1 (TC); Consultant 2 (TC) |

Removed: 48 ISHR interfaces specification

Changed:

| ID | Task | Start | Finish | Duration | Complete | Total float | Predecessors | Other |
| --- | --- | --- | --- | --- | --- | --- | --- | --- |
| 1 | **Project Management** |  | 2020-07-15 → 2020-07-10 (-5d) | 157d → 154d | 50% → 54% |  |  |  |
| 7 | **Project Planning** |  |  | 9d → 8d |  |  |  |  |
| 11 | Review Project Plan | 2019-12-16 A → 2019-12-10 A (-6d) | 2019-12-16 A → 2019-12-10 A (-6d) |  |  |  |  |  |
| 12 | Kick-off Meeting | 2019-12-17 A → 2019-12-11 A (-6d) | 2019-12-17 A → 2019-12-11 A (-6d) |  |  |  |  |  |
| 13 | Project Plan Approved |  |  |  |  |  |  | constraint none → start no earlier than 2019-12-17 |
| 14 | **Control** |  |  |  | 38% → 44% | 70d → 67d |  |  |
| 21 | Control 7 | 2020-01-31 A | 2020-01-31 A |  | 0% → 100% | 115d → none |  |  |
| 31 | **Project Close** | 2020-04-13 → 2020-04-07 (-6d) | 2020-07-15 → 2020-07-10 (-5d) |  |  |  |  |  |
| 32 | Review Project Objectives | 2020-04-13 → 2020-04-07 (-6d) | 2020-04-13 → 2020-04-07 (-6d) |  |  |  |  |  |
| 33 | Collect Lessons Learned | 2020-04-14 → 2020-04-08 (-6d) | 2020-04-14 → 2020-04-08 (-6d) |  |  |  |  |  |
| 34 | Provide Feedback | 2020-04-15 → 2020-04-09 (-6d) | 2020-04-15 → 2020-04-09 (-6d) |  |  |  |  |  |
| 35 | Close Contracts | 2020-07-15 → 2020-07-10 (-5d) | 2020-07-15 → 2020-07-10 (-5d) |  |  |  |  |  |
| 36 | Project Closed | 2020-07-15 → 2020-07-10 (-5d) | 2020-07-15 → 2020-07-10 (-5d) |  |  |  |  |  |
| 37 | **Definition** | 2019-12-18 A → 2019-12-17 A (-1d) | 2020-01-10 A → 2020-01-09 A (-1d) |  |  |  |  |  |
| 38 | **Analyse Actual Situation** | 2019-12-18 A → 2019-12-17 A (-1d) | 2019-12-26 A → 2019-12-23 A (-3d) |  |  |  |  |  |
| 39 | Describe processes for Employees Register | 2019-12-18 A → 2019-12-17 A (-1d) | 2019-12-18 A → 2019-12-17 A (-1d) |  |  |  |  |  |
| 40 | Describe processes for Holidays and Absences | 2019-12-19 A → 2019-12-18 A (-1d) | 2019-12-19 A → 2019-12-18 A (-1d) |  |  |  |  |  |
| 41 | Describe processes for Training Management | 2019-12-20 A → 2019-12-19 A (-1d) | 2019-12-20 A → 2019-12-19 A (-1d) |  |  |  |  |  |
| 42 | Describe processes for Interface Implementation | 2019-12-23 A → 2019-12-20 A (-3d) | 2019-12-23 A → 2019-12-20 A (-3d) |  |  |  |  |  |
| 43 | Describe processes for Corporate Information | 2019-12-26 A → 2019-12-23 A (-3d) | 2019-12-26 A → 2019-12-23 A (-3d) |  |  |  |  |  |
| 44 | Described Current Processes | 2019-12-26 A → 2019-12-23 A (-3d) | 2019-12-26 A → 2019-12-23 A (-3d) |  |  |  |  |  |
| 45 | **Requirement Specification** | 2019-12-27 A → 2019-12-26 A (-1d) | 2020-01-10 A → 2020-01-09 A (-1d) |  |  |  |  |  |
| 46 | Gap Analysis For Each Module | 2019-12-27 A → 2019-12-26 A (-1d) | 2019-12-31 A → 2019-12-30 A (-1d) |  |  |  |  |  |
| 47 | Identify Parameters That Will Be Used For Each Module | 2020-01-02 A → 2019-12-31 A (-2d) | 2020-01-02 A → 2019-12-31 A (-2d) |  |  |  |  |  |
| 49 | Review project requirements | 2020-01-10 A → 2020-01-09 A (-1d) | 2020-01-10 A → 2020-01-09 A (-1d) |  |  |  | ISHR interfaces specification → 48 |  |
| 50 | Reviewed Project Requirements | 2020-01-10 A → 2020-01-09 A (-1d) | 2020-01-10 A → 2020-01-09 A (-1d) |  |  |  |  |  |
| 51 | **Analysis & Design** | 2020-01-13 A → 2020-01-10 A (-3d) | 2020-01-20 A → 2020-01-17 A (-3d) |  |  |  |  |  |
| 52 | **Framework Interface Design** | 2020-01-13 A → 2020-01-10 A (-3d) | 2020-01-15 A → 2020-01-14 A (-1d) |  |  |  |  |  |
| 53 | Design the WebService | 2020-01-13 A → 2020-01-10 A (-3d) | 2020-01-13 A → 2020-01-10 A (-3d) |  |  |  |  |  |
| 54 | Design Interface To Access Employees' Data | 2020-01-14 A → 2020-01-13 A (-1d) | 2020-01-14 A → 2020-01-13 A (-1d) |  |  |  |  |  |
| 55 | Design Interface To Access Employees' Salary | 2020-01-15 A → 2020-01-14 A (-1d) | 2020-01-15 A → 2020-01-14 A (-1d) |  |  |  |  |  |
| 56 | Framework Interface Design Finished | 2020-01-15 A → 2020-01-14 A (-1d) | 2020-01-15 A → 2020-01-14 A (-1d) |  |  |  |  |  |
| 57 | **Tests Specification** | 2020-01-16 A → 2020-01-15 A (-1d) | 2020-01-20 A → 2020-01-17 A (-3d) |  |  |  |  |  |
| 58 | Define Integration Tests | 2020-01-16 A → 2020-01-15 A (-1d) | 2020-01-16 A → 2020-01-15 A (-1d) |  |  |  |  |  |
| 59 | Define System tests | 2020-01-17 A → 2020-01-16 A (-1d) | 2020-01-17 A → 2020-01-16 A (-1d) |  |  |  |  |  |
| 60 | Define Acceptance Tests | 2020-01-20 A → 2020-01-17 A (-3d) | 2020-01-20 A → 2020-01-17 A (-3d) |  |  |  |  |  |
| 61 | Tests Specification Defined | 2020-01-20 A → 2020-01-17 A (-3d) | 2020-01-20 A → 2020-01-17 A (-3d) |  |  |  |  |  |
| 62 | **Realization** | 2020-01-21 A → 2020-01-20 A (-1d) | 2020-03-13 → 2020-03-10 (-3d) | 39d → 37d | 22% → 27% |  |  |  |
| 63 | **Employees Register** | 2020-01-21 A → 2020-01-20 A (-1d) | 2020-01-27 A → 2020-01-24 A (-3d) |  |  |  |  |  |
| 64 | Parametrize The Module | 2020-01-21 A → 2020-01-20 A (-1d) | 2020-01-21 A → 2020-01-20 A (-1d) |  |  |  |  |  |
| 65 | Implement New Requirements | 2020-01-22 A → 2020-01-21 A (-1d) | 2020-01-23 A → 2020-01-22 A (-1d) |  |  |  |  |  |
| 66 | Implement Profile Configuration | 2020-01-24 A → 2020-01-23 A (-1d) | 2020-01-24 A → 2020-01-23 A (-1d) |  |  |  |  |  |
| 67 | Test The Implementation | 2020-01-27 A → 2020-01-24 A (-3d) | 2020-01-27 A → 2020-01-24 A (-3d) |  |  |  |  |  |
| 68 | Finished Module 1 Implementation | 2020-01-27 A → 2020-01-24 A (-3d) | 2020-01-27 A → 2020-01-24 A (-3d) |  |  |  |  |  |
| 69 | **Holidays and Absences** | 2020-01-28 A → 2020-01-27 A (-1d) | 2020-02-10 → 2020-02-07 (-3d) |  | 30% → 50% | 2d → 0d |  |  |
| 70 | Parametrize The Module | 2020-01-28 A → 2020-01-27 A (-1d) | 2020-01-29 A → 2020-01-28 A (-1d) |  |  |  |  |  |
| 71 | Implement New Requirements | 2020-01-30 A → 2020-01-29 A (-1d) | 2020-02-04 → 2020-02-03 (-1d) |  | 25% → 75% | 2d → 0d |  |  |
| 72 | Implement Profile Configuration | 2020-02-05 → 2020-02-04 (-1d) | 2020-02-06 → 2020-02-05 (-1d) |  |  | 2d → 0d |  |  |
| 73 | Test The Implementation | 2020-02-07 → 2020-02-06 (-1d) | 2020-02-10 → 2020-02-07 (-3d) |  |  | 2d → 0d |  |  |
| 74 | Finished Module 2 Implementation | 2020-02-10 → 2020-02-07 (-3d) | 2020-02-10 → 2020-02-07 (-3d) |  |  | 2d → 0d |  |  |
| 75 | **Training Management** | 2020-02-11 → 2020-02-10 (-1d) | 2020-02-26 → 2020-02-25 (-1d) |  |  | 2d → 0d |  |  |
| 76 | Parametrize The Module | 2020-02-11 → 2020-02-10 (-1d) | 2020-02-12 → 2020-02-11 (-1d) |  |  | 2d → 0d |  |  |
| 77 | Implement New Requirements | 2020-02-13 → 2020-02-12 (-1d) | 2020-02-18 → 2020-02-17 (-1d) |  |  | 2d → 0d |  |  |
| 78 | Create Script For Data Migration | 2020-02-19 → 2020-02-18 (-1d) | 2020-02-20 → 2020-02-19 (-1d) |  |  | 2d → 0d |  |  |
| 79 | Allowance | 2020-02-21 → 2020-02-20 (-1d) | 2020-02-24 → 2020-02-21 (-3d) |  |  | 2d → 0d |  |  |
| 80 | Test The Implementation | 2020-02-25 → 2020-02-24 (-1d) | 2020-02-26 → 2020-02-25 (-1d) |  |  | 2d → 0d |  |  |
| 81 | Finished Module 3 Implementation | 2020-02-26 → 2020-02-25 (-1d) | 2020-02-26 → 2020-02-25 (-1d) |  |  | 2d → 0d |  |  |
| 82 | **Interface Implementation** | 2020-03-02 → 2020-02-26 (-5d) | 2020-03-06 → 2020-03-03 (-3d) |  |  |  |  |  |
| 83 | Implement the WebService | 2020-03-02 → 2020-02-26 (-5d) | 2020-03-02 → 2020-02-26 (-5d) |  |  |  |  | constraint start no earlier than 2020-03-02 → none |
| 84 | Implement the interface to access employees' Data | 2020-03-03 → 2020-02-27 (-5d) | 2020-03-03 → 2020-02-27 (-5d) |  |  |  |  |  |
| 85 | Implement the interface to access employees' Salaries | 2020-03-04 → 2020-02-28 (-5d) | 2020-03-04 → 2020-02-28 (-5d) |  |  |  |  |  |
| 86 | Test The Implementation | 2020-03-05 → 2020-03-02 (-3d) | 2020-03-06 → 2020-03-03 (-3d) |  |  |  |  |  |
| 87 | Finished Module 5 Implementation | 2020-03-06 → 2020-03-03 (-3d) | 2020-03-06 → 2020-03-03 (-3d) |  |  |  |  |  |
| 88 | **Corporate Information** | 2020-01-21 A → 2020-01-20 A (-1d) | 2020-03-03 → 2020-03-02 (-1d) |  | 26% → 32% | 3d → 1d |  |  |
| 89 | Create Backlog | 2020-01-21 A → 2020-01-20 A (-1d) | 2020-01-21 A → 2020-01-20 A (-1d) |  |  |  |  |  |
| 90 | **Sprint 1** | 2020-01-22 A → 2020-01-21 A (-1d) | 2020-02-04 → 2020-02-03 (-1d) |  | 70% → 90% | 3d → 1d |  |  |
| 91 | Plan The Sprint | 2020-01-22 A → 2020-01-21 A (-1d) | 2020-01-22 A → 2020-01-21 A (-1d) |  |  |  |  |  |
| 92 | Realize The Sprint | 2020-01-23 A → 2020-01-22 A (-1d) | 2020-02-03 → 2020-01-31 A (-3d) |  | 75% → 100% | 3d → none |  |  |
| 93 | Review The Results | 2020-02-04 → 2020-02-03 (-1d) | 2020-02-04 → 2020-02-03 (-1d) |  |  | 3d → 1d |  |  |
| 94 | **Sprint 2** | 2020-02-05 → 2020-02-04 (-1d) | 2020-02-18 → 2020-02-17 (-1d) |  |  | 3d → 1d |  |  |

| ID | Task | Start | Finish | Duration | Total float | Other |
| --- | --- | --- | --- | --- | --- | --- |
| 95 | Plan The Sprint | 2020-02-05 → 2020-02-04 (-1d) | 2020-02-05 → 2020-02-04 (-1d) |  | 3d → 1d |  |
| 96 | Realize The Sprint | 2020-02-06 → 2020-02-05 (-1d) | 2020-02-17 → 2020-02-14 (-3d) |  | 3d → 1d |  |
| 97 | Review The Results | 2020-02-18 → 2020-02-17 (-1d) | 2020-02-18 → 2020-02-17 (-1d) |  | 3d → 1d |  |
| 98 | **Sprint 3** | 2020-02-19 → 2020-02-18 (-1d) | 2020-03-03 → 2020-03-02 (-1d) |  | 3d → 1d |  |
| 99 | Plan The Sprint | 2020-02-19 → 2020-02-18 (-1d) | 2020-02-19 → 2020-02-18 (-1d) |  | 3d → 1d |  |
| 100 | Realize The Sprint | 2020-02-20 → 2020-02-19 (-1d) | 2020-03-02 → 2020-02-28 (-3d) |  | 3d → 1d |  |
| 101 | Review The Results | 2020-03-03 → 2020-03-02 (-1d) | 2020-03-03 → 2020-03-02 (-1d) |  | 3d → 1d |  |
| 102 | Sprints Completed | 2020-03-03 → 2020-03-02 (-1d) | 2020-03-03 → 2020-03-02 (-1d) |  | 3d → 1d |  |
| 103 | **Integration Tests** | 2020-03-09 → 2020-03-04 (-5d) | 2020-03-13 → 2020-03-10 (-3d) |  |  |  |
| 104 | Integration Test Every Module | 2020-03-09 → 2020-03-04 (-5d) | 2020-03-13 → 2020-03-10 (-3d) |  |  |  |
| 105 | Fix Bugs | 2020-03-09 → 2020-03-04 (-5d) | 2020-03-13 → 2020-03-10 (-3d) |  |  |  |
| 106 | Passed All Integration Tests | 2020-03-13 → 2020-03-10 (-3d) | 2020-03-13 → 2020-03-10 (-3d) |  |  |  |
| 107 | **Transition** |  | 2020-04-09 → 2020-04-06 (-3d) | 30d → 27d |  |  |
| 109 | Planning of the setup |  |  |  | 8d → 5d | constraint finish no earlier than 2020-02-28 → start no earlier than 2020-02-28 |
| 112 | **Software Installation** | 2020-03-16 → 2020-03-11 (-5d) | 2020-03-18 → 2020-03-13 (-5d) |  |  |  |
| 113 | Preparation of the environment for Installation | 2020-03-16 → 2020-03-11 (-5d) | 2020-03-16 → 2020-03-11 (-5d) |  |  |  |
| 114 | Installation of Software | 2020-03-17 → 2020-03-12 (-5d) | 2020-03-18 → 2020-03-13 (-5d) |  |  |  |
| 115 | Software Installed | 2020-03-18 → 2020-03-13 (-5d) | 2020-03-18 → 2020-03-13 (-5d) |  |  |  |
| 116 | **Data Migration** | 2020-03-19 → 2020-03-16 (-3d) | 2020-03-20 → 2020-03-17 (-3d) |  |  |  |
| 117 | Prepare the system to receive training data | 2020-03-19 → 2020-03-16 (-3d) | 2020-03-19 → 2020-03-16 (-3d) |  |  |  |
| 118 | Migrate training information to the system | 2020-03-20 → 2020-03-17 (-3d) | 2020-03-20 → 2020-03-17 (-3d) |  |  |  |
| 119 | Data Migrated | 2020-03-20 → 2020-03-17 (-3d) | 2020-03-20 → 2020-03-17 (-3d) |  |  |  |
| 120 | **Training** | 2020-03-23 → 2020-03-18 (-5d) | 2020-03-26 → 2020-03-23 (-3d) |  |  |  |
| 121 | Train The HRD Staff To Use The Software | 2020-03-23 → 2020-03-18 (-5d) | 2020-03-24 → 2020-03-19 (-5d) |  |  |  |
| 122 | Train The DSI Staff To Use The Software | 2020-03-25 → 2020-03-20 (-5d) | 2020-03-26 → 2020-03-23 (-3d) |  |  |  |
| 123 | Target Users Trained | 2020-03-26 → 2020-03-23 (-3d) | 2020-03-26 → 2020-03-23 (-3d) |  |  |  |
| 124 | **System Tests** | 2020-03-27 → 2020-03-24 (-3d) | 2020-04-02 → 2020-03-30 (-3d) |  |  |  |
| 125 | Run System Tests | 2020-03-27 → 2020-03-24 (-3d) | 2020-04-02 → 2020-03-30 (-3d) |  |  |  |
| 126 | Fix Bugs | 2020-03-27 → 2020-03-24 (-3d) | 2020-04-02 → 2020-03-30 (-3d) |  |  |  |
| 127 | Project Transition Completed | 2020-04-02 → 2020-03-30 (-3d) | 2020-04-02 → 2020-03-30 (-3d) |  |  |  |
| 128 | **Acceptance Tests** | 2020-04-03 → 2020-03-31 (-3d) | 2020-04-09 → 2020-04-06 (-3d) |  |  |  |
| 129 | Run Acceptance Tests | 2020-04-03 → 2020-03-31 (-3d) | 2020-04-09 → 2020-04-06 (-3d) |  |  |  |
| 130 | Fix Bugs | 2020-04-03 → 2020-03-31 (-3d) | 2020-04-09 → 2020-04-06 (-3d) |  |  |  |
| 131 | Acceptance Tests Approved | 2020-04-09 → 2020-04-06 (-3d) | 2020-04-09 → 2020-04-06 (-3d) |  |  |  |
| 132 | **Operation** | 2020-04-13 → 2020-04-07 (-6d) | 2020-07-14 → 2020-07-09 (-5d) |  |  |  |
| 133 | Support | 2020-04-13 → 2020-04-07 (-6d) | 2020-04-17 → 2020-04-14 (-3d) |  |  |  |
| 134 | Warranty | 2020-04-20 → 2020-04-15 (-5d) | 2020-07-14 → 2020-07-09 (-5d) |  |  |  |

## Version 13 (data date 2020-07-23, saved 2019-12-03, file CloseAllDate.mpp)

Note of the change: Added Close

Last finish 2020-07-10 → 2020-07-23 (+13d). Complete tasks 45 → 110.

Added:

| ID | Task | Duration | Start | Finish | Predecessors | Constraint | Resources |
| --- | --- | --- | --- | --- | --- | --- | --- |
| 31 | Control 17 | 1d | 2020-04-13 A | 2020-04-13 A |  | start no earlier than 2020-04-10 |  |
| 32 | Control 18 | 1d | 2020-04-17 A | 2020-04-17 A |  | start no earlier than 2020-04-17 |  |
| 104 | **Sprint 4** | 10d | 2020-03-03 A | 2020-03-16 A |  |  |  |
| 105 | Plan the Sprint | 1d | 2020-03-03 A | 2020-03-03 A | 103 |  | Scrum Master; Consultant 1 (SM); Consultant 2 (SM) |
| 106 | Realize The Sprint | 8d | 2020-03-04 A | 2020-03-13 A | 105 |  | Scrum Master; Consultant 1 (SM); Consultant 2 (SM) |
| 107 | Review The Results | 1d | 2020-03-16 A | 2020-03-16 A | 106 |  | Scrum Master; Consultant 1 (SM); Consultant 2 (SM) |

Changed:

| ID | Task | Start | Finish | Duration | Complete | Total float | Predecessors |
| --- | --- | --- | --- | --- | --- | --- | --- |
| 1 | **Project Management** |  | 2020-07-10 → 2020-07-23 A (+13d) | 154d → 163d | 54% → 100% | 0d → none |  |
| 14 | **Control** |  | 2020-04-03 → 2020-04-17 A (+14d) | 73d → 82d | 44% → 100% | 67d → none |  |
| 22 | Control 8 | 2020-02-07 A | 2020-02-07 A |  | 0% → 100% | 107d → none |  |
| 23 | Control 9 | 2020-02-14 A | 2020-02-14 A |  | 0% → 100% | 102d → none |  |
| 24 | Control 10 | 2020-02-21 A | 2020-02-21 A |  | 0% → 100% | 97d → none |  |
| 25 | Control 11 | 2020-02-28 A | 2020-02-28 A |  | 0% → 100% | 92d → none |  |
| 26 | Control 12 | 2020-03-06 A | 2020-03-06 A |  | 0% → 100% | 87d → none |  |
| 27 | Control 13 | 2020-03-13 A | 2020-03-13 A |  | 0% → 100% | 82d → none |  |
| 28 | Control 14 | 2020-03-20 A | 2020-03-20 A |  | 0% → 100% | 77d → none |  |
| 29 | Control 15 | 2020-03-27 A | 2020-03-27 A |  | 0% → 100% | 72d → none |  |
| 30 | Control 16 | 2020-04-03 A | 2020-04-03 A |  | 0% → 100% | 67d → none |  |
| 33 | **Project Close** | 2020-04-07 → 2020-04-21 A (+14d) | 2020-07-10 → 2020-07-23 A (+13d) |  | 0% → 100% | 0d → none |  |
| 34 | Review Project Objectives | 2020-04-07 → 2020-04-21 A (+14d) | 2020-04-07 → 2020-04-21 A (+14d) |  | 0% → 100% | 62d → none |  |
| 35 | Collect Lessons Learned | 2020-04-08 → 2020-04-22 A (+14d) | 2020-04-08 → 2020-04-22 A (+14d) |  | 0% → 100% | 62d → none |  |
| 36 | Provide Feedback | 2020-04-09 → 2020-04-23 A (+14d) | 2020-04-09 → 2020-04-23 A (+14d) |  | 0% → 100% | 62d → none |  |
| 37 | Close Contracts | 2020-07-10 → 2020-07-23 A (+13d) | 2020-07-10 → 2020-07-23 A (+13d) |  | 0% → 100% | 0d → none |  |
| 38 | Project Closed | 2020-07-10 → 2020-07-23 A (+13d) | 2020-07-10 → 2020-07-23 A (+13d) |  | 0% → 100% | 0d → none |  |
| 64 | **Realization** |  | 2020-03-10 → 2020-03-23 A (+13d) | 37d → 46d | 27% → 100% | 0d → none |  |
| 71 | **Holidays and Absences** |  | 2020-02-07 A |  | 50% → 100% | 0d → none |  |
| 73 | Implement New Requirements |  | 2020-02-03 A |  | 75% → 100% | 0d → none |  |
| 74 | Implement Profile Configuration | 2020-02-04 A | 2020-02-05 A |  | 0% → 100% | 0d → none |  |
| 75 | Test The Implementation | 2020-02-06 A | 2020-02-07 A |  | 0% → 100% | 0d → none |  |
| 76 | Finished Module 2 Implementation | 2020-02-07 A | 2020-02-07 A |  | 0% → 100% | 0d → none |  |
| 77 | **Training Management** | 2020-02-10 A | 2020-02-25 A |  | 0% → 100% | 0d → none |  |
| 78 | Parametrize The Module | 2020-02-10 A | 2020-02-11 A |  | 0% → 100% | 0d → none |  |
| 79 | Implement New Requirements | 2020-02-12 A | 2020-02-17 A |  | 0% → 100% | 0d → none |  |
| 80 | Create Script For Data Migration | 2020-02-18 A | 2020-02-19 A |  | 0% → 100% | 0d → none |  |
| 81 | Allowance | 2020-02-20 A | 2020-02-21 A |  | 0% → 100% | 0d → none |  |
| 82 | Test The Implementation | 2020-02-24 A | 2020-02-25 A |  | 0% → 100% | 0d → none |  |
| 83 | Finished Module 3 Implementation | 2020-02-25 A | 2020-02-25 A |  | 0% → 100% | 0d → none |  |
| 84 | **Interface Implementation** | 2020-02-26 A | 2020-03-03 → 2020-03-10 A (+7d) | 5d → 10d | 0% → 100% | 0d → none |  |
| 85 | Implement the WebService | 2020-02-26 A | 2020-02-26 → 2020-02-27 A (+1d) | 1d → 2d | 0% → 100% | 0d → none |  |
| 86 | Implement the interface to access employees' Data | 2020-02-27 → 2020-02-28 A (+1d) | 2020-02-27 → 2020-03-02 A (+4d) | 1d → 2d | 0% → 100% | 0d → none |  |
| 87 | Implement the interface to access employees' Salaries | 2020-02-28 → 2020-03-03 A (+4d) | 2020-02-28 → 2020-03-04 A (+5d) | 1d → 2d | 0% → 100% | 0d → none |  |
| 88 | Test The Implementation | 2020-03-02 → 2020-03-05 A (+3d) | 2020-03-03 → 2020-03-10 A (+7d) | 2d → 4d | 0% → 100% | 0d → none |  |
| 89 | Finished Module 5 Implementation | 2020-03-03 → 2020-03-10 A (+7d) | 2020-03-03 → 2020-03-10 A (+7d) |  | 0% → 100% | 0d → none |  |
| 90 | **Corporate Information** |  | 2020-03-02 → 2020-03-16 A (+14d) | 31d → 41d | 32% → 100% | 1d → none |  |
| 92 | **Sprint 1** |  | 2020-02-03 A |  | 90% → 100% | 1d → none |  |
| 95 | Review The Results | 2020-02-03 A | 2020-02-03 A |  | 0% → 100% | 1d → none |  |
| 96 | **Sprint 2** | 2020-02-04 A | 2020-02-17 A |  | 0% → 100% | 1d → none |  |
| 97 | Plan The Sprint | 2020-02-04 A | 2020-02-04 A |  | 0% → 100% | 1d → none |  |
| 98 | Realize The Sprint | 2020-02-05 A | 2020-02-14 A |  | 0% → 100% | 1d → none |  |
| 99 | Review The Results | 2020-02-17 A | 2020-02-17 A |  | 0% → 100% | 1d → none |  |
| 100 | **Sprint 3** | 2020-02-18 A | 2020-03-02 A |  | 0% → 100% | 1d → none |  |
| 101 | Plan The Sprint | 2020-02-18 A | 2020-02-18 A |  | 0% → 100% | 1d → none |  |
| 102 | Realize The Sprint | 2020-02-19 A | 2020-02-28 A |  | 0% → 100% | 1d → none |  |
| 103 | Review The Results | 2020-03-02 A | 2020-03-02 A |  | 0% → 100% | 1d → none |  |
| 108 | Sprints Completed | 2020-03-02 → 2020-03-16 A (+14d) | 2020-03-02 → 2020-03-16 A (+14d) |  | 0% → 100% | 1d → none | 103 → 107 |
| 109 | **Integration Tests** | 2020-03-04 → 2020-03-17 A (+13d) | 2020-03-10 → 2020-03-23 A (+13d) |  | 0% → 100% | 0d → none |  |
| 110 | Integration Test Every Module | 2020-03-04 → 2020-03-17 A (+13d) | 2020-03-10 → 2020-03-23 A (+13d) |  | 0% → 100% | 0d → none |  |
| 111 | Fix Bugs | 2020-03-04 → 2020-03-17 A (+13d) | 2020-03-10 → 2020-03-23 A (+13d) |  | 0% → 100% | 0d → none |  |
| 112 | Passed All Integration Tests | 2020-03-10 → 2020-03-23 A (+13d) | 2020-03-10 → 2020-03-23 A (+13d) |  | 0% → 100% | 0d → none |  |
| 113 | **Transition** | 2020-02-28 A | 2020-04-06 → 2020-04-20 A (+14d) | 27d → 36d | 0% → 100% | 0d → none |  |
| 114 | **Hardware and Infrastructure** | 2020-02-28 A | 2020-03-03 A |  | 0% → 100% | 5d → none |  |
| 115 | Planning of the setup | 2020-02-28 A | 2020-02-28 A |  | 0% → 100% | 5d → none |  |
| 116 | Setup of Hardware and Infrastructure | 2020-03-02 A | 2020-03-03 A |  | 0% → 100% | 5d → none |  |
| 117 | Hardware and Infrastructure Installed | 2020-03-03 A | 2020-03-03 A |  | 0% → 100% | 5d → none |  |
| 118 | **Software Installation** | 2020-03-11 → 2020-03-24 A (+13d) | 2020-03-13 → 2020-03-26 A (+13d) |  | 0% → 100% | 0d → none |  |
| 119 | Preparation of the environment for Installation | 2020-03-11 → 2020-03-24 A (+13d) | 2020-03-11 → 2020-03-24 A (+13d) |  | 0% → 100% | 0d → none |  |
| 120 | Installation of Software | 2020-03-12 → 2020-03-25 A (+13d) | 2020-03-13 → 2020-03-26 A (+13d) |  | 0% → 100% | 0d → none |  |
| 121 | Software Installed | 2020-03-13 → 2020-03-26 A (+13d) | 2020-03-13 → 2020-03-26 A (+13d) |  | 0% → 100% | 0d → none |  |
| 122 | **Data Migration** | 2020-03-16 → 2020-03-27 A (+11d) | 2020-03-17 → 2020-03-30 A (+13d) |  | 0% → 100% | 0d → none |  |
| 123 | Prepare the system to receive training data | 2020-03-16 → 2020-03-27 A (+11d) | 2020-03-16 → 2020-03-27 A (+11d) |  | 0% → 100% | 0d → none |  |
| 124 | Migrate training information to the system | 2020-03-17 → 2020-03-30 A (+13d) | 2020-03-17 → 2020-03-30 A (+13d) |  | 0% → 100% | 0d → none |  |
| 125 | Data Migrated | 2020-03-17 → 2020-03-30 A (+13d) | 2020-03-17 → 2020-03-30 A (+13d) |  | 0% → 100% | 0d → none |  |
| 126 | **Training** | 2020-03-18 → 2020-03-31 A (+13d) | 2020-03-23 → 2020-04-03 A (+11d) |  | 0% → 100% | 0d → none |  |
| 127 | Train The HRD Staff To Use The Software | 2020-03-18 → 2020-03-31 A (+13d) | 2020-03-19 → 2020-04-01 A (+13d) |  | 0% → 100% | 0d → none |  |
| 128 | Train The DSI Staff To Use The Software | 2020-03-20 → 2020-04-02 A (+13d) | 2020-03-23 → 2020-04-03 A (+11d) |  | 0% → 100% | 0d → none |  |
| 129 | Target Users Trained | 2020-03-23 → 2020-04-03 A (+11d) | 2020-03-23 → 2020-04-03 A (+11d) |  | 0% → 100% | 0d → none |  |
| 130 | **System Tests** | 2020-03-24 → 2020-04-06 A (+13d) | 2020-03-30 → 2020-04-13 A (+14d) |  | 0% → 100% | 0d → none |  |

| ID | Task | Start | Finish | Complete | Total float |
| --- | --- | --- | --- | --- | --- |
| 131 | Run System Tests | 2020-03-24 → 2020-04-06 A (+13d) | 2020-03-30 → 2020-04-13 A (+14d) | 0% → 100% | 0d → none |
| 132 | Fix Bugs | 2020-03-24 → 2020-04-06 A (+13d) | 2020-03-30 → 2020-04-13 A (+14d) | 0% → 100% | 0d → none |
| 133 | Project Transition Completed | 2020-03-30 → 2020-04-13 A (+14d) | 2020-03-30 → 2020-04-13 A (+14d) | 0% → 100% | 0d → none |
| 134 | **Acceptance Tests** | 2020-03-31 → 2020-04-14 A (+14d) | 2020-04-06 → 2020-04-20 A (+14d) | 0% → 100% | 0d → none |
| 135 | Run Acceptance Tests | 2020-03-31 → 2020-04-14 A (+14d) | 2020-04-06 → 2020-04-20 A (+14d) | 0% → 100% | 0d → none |
| 136 | Fix Bugs | 2020-03-31 → 2020-04-14 A (+14d) | 2020-04-06 → 2020-04-20 A (+14d) | 0% → 100% | 0d → none |
| 137 | Acceptance Tests Approved | 2020-04-06 → 2020-04-20 A (+14d) | 2020-04-06 → 2020-04-20 A (+14d) | 0% → 100% | 0d → none |
| 138 | **Operation** | 2020-04-07 → 2020-04-21 A (+14d) | 2020-07-09 → 2020-07-22 A (+13d) | 0% → 100% | 0d → none |
| 139 | Support | 2020-04-07 → 2020-04-21 A (+14d) | 2020-04-14 → 2020-04-27 A (+13d) | 0% → 100% | 0d → none |
| 140 | Warranty | 2020-04-15 → 2020-04-28 A (+13d) | 2020-07-09 → 2020-07-22 A (+13d) | 0% → 100% | 0d → none |

## Version 14 (data date 2020-01-31, saved 2019-12-03, file Close.mpp)

Note of the change: Added versions for close

Last finish 2020-07-23 → 2020-07-31 (+8d). Complete tasks 110 → 45.

Added:

| ID | Task | Duration | Start | Finish | Predecessors | Constraint | Resources |
| --- | --- | --- | --- | --- | --- | --- | --- |
| 33 | Control 19 | 1d | 2020-04-24 | 2020-04-24 |  | start no earlier than 2020-04-24 |  |
| 76 | Design and Implementation of new Requirements | 10d | 2020-02-06 | 2020-02-19 | 75 |  | Technical Coordinator; Consultant 1 (TC); Consultant 2 (TC); Trainee |

Changed:

| ID | Task | Start | Finish | Duration | Complete | Total float | Predecessors |
| --- | --- | --- | --- | --- | --- | --- | --- |
| 1 | **Project Management** |  | 2020-07-23 A → 2020-07-31 (+8d) | 163d → 169d | 100% → 48% | none → 0d |  |
| 14 | **Control** |  | 2020-04-17 A → 2020-04-24 (+7d) | 82d → 87d | 100% → 37% | none → 68d |  |
| 22 | Control 8 | 2020-02-07 A → 2020-02-07 | 2020-02-07 A → 2020-02-07 |  | 100% → 0% | none → 122d |  |
| 23 | Control 9 | 2020-02-14 A → 2020-02-14 | 2020-02-14 A → 2020-02-14 |  | 100% → 0% | none → 117d |  |
| 24 | Control 10 | 2020-02-21 A → 2020-02-21 | 2020-02-21 A → 2020-02-21 |  | 100% → 0% | none → 112d |  |
| 25 | Control 11 | 2020-02-28 A → 2020-02-28 | 2020-02-28 A → 2020-02-28 |  | 100% → 0% | none → 107d |  |
| 26 | Control 12 | 2020-03-06 A → 2020-03-06 | 2020-03-06 A → 2020-03-06 |  | 100% → 0% | none → 102d |  |
| 27 | Control 13 | 2020-03-13 A → 2020-03-13 | 2020-03-13 A → 2020-03-13 |  | 100% → 0% | none → 97d |  |
| 28 | Control 14 | 2020-03-20 A → 2020-03-20 | 2020-03-20 A → 2020-03-20 |  | 100% → 0% | none → 92d |  |
| 29 | Control 15 | 2020-03-27 A → 2020-03-27 | 2020-03-27 A → 2020-03-27 |  | 100% → 0% | none → 87d |  |
| 30 | Control 16 | 2020-04-03 A → 2020-04-03 | 2020-04-03 A → 2020-04-03 |  | 100% → 0% | none → 82d |  |
| 31 | Control 17 | 2020-04-13 A → 2020-04-13 | 2020-04-13 A → 2020-04-13 |  | 100% → 0% | none → 77d |  |
| 32 | Control 18 | 2020-04-17 A → 2020-04-17 | 2020-04-17 A → 2020-04-17 |  | 100% → 0% | none → 73d |  |
| 34 | **Project Close** | 2020-04-21 A → 2020-04-29 (+8d) | 2020-07-23 A → 2020-07-31 (+8d) |  | 100% → 0% | none → 0d |  |
| 35 | Review Project Objectives | 2020-04-21 A → 2020-04-29 (+8d) | 2020-04-21 A → 2020-04-29 (+8d) |  | 100% → 0% | none → 62d |  |
| 36 | Collect Lessons Learned | 2020-04-22 A → 2020-04-30 (+8d) | 2020-04-22 A → 2020-04-30 (+8d) |  | 100% → 0% | none → 62d |  |
| 37 | Provide Feedback | 2020-04-23 A → 2020-05-04 (+11d) | 2020-04-23 A → 2020-05-04 (+11d) |  | 100% → 0% | none → 62d |  |
| 38 | Close Contracts | 2020-07-23 A → 2020-07-31 (+8d) | 2020-07-23 A → 2020-07-31 (+8d) |  | 100% → 0% | none → 0d |  |
| 39 | Project Closed | 2020-07-23 A → 2020-07-31 (+8d) | 2020-07-23 A → 2020-07-31 (+8d) |  | 100% → 0% | none → 0d |  |
| 65 | **Realization** |  | 2020-03-23 A → 2020-03-31 (+8d) | 46d → 52d | 100% → 20% | none → 0d |  |
| 72 | **Holidays and Absences** |  | 2020-02-07 A → 2020-02-21 (+14d) | 10d → 20d | 100% → 25% | none → 0d |  |
| 74 | Implement New Requirements |  | 2020-02-03 A → 2020-02-03 |  | 100% → 75% | none → 0d |  |
| 75 | Implement Profile Configuration | 2020-02-04 A → 2020-02-04 | 2020-02-05 A → 2020-02-05 |  | 100% → 0% | none → 0d |  |
| 77 | Test The Implementation | 2020-02-06 A → 2020-02-20 (+14d) | 2020-02-07 A → 2020-02-21 (+14d) |  | 100% → 0% | none → 0d | 75 → 76 |
| 78 | Finished Module 2 Implementation | 2020-02-07 A → 2020-02-21 (+14d) | 2020-02-07 A → 2020-02-21 (+14d) |  | 100% → 0% | none → 0d |  |
| 79 | **Training Management** | 2020-02-10 A → 2020-02-24 (+14d) | 2020-02-25 A → 2020-03-10 (+14d) |  | 100% → 0% | none → 0d |  |
| 80 | Parametrize The Module | 2020-02-10 A → 2020-02-24 (+14d) | 2020-02-11 A → 2020-02-25 (+14d) |  | 100% → 0% | none → 0d |  |
| 81 | Implement New Requirements | 2020-02-12 A → 2020-02-26 (+14d) | 2020-02-17 A → 2020-03-02 (+14d) |  | 100% → 0% | none → 0d |  |
| 82 | Create Script For Data Migration | 2020-02-18 A → 2020-03-03 (+14d) | 2020-02-19 A → 2020-03-04 (+14d) |  | 100% → 0% | none → 0d |  |
| 83 | Allowance | 2020-02-20 A → 2020-03-05 (+14d) | 2020-02-21 A → 2020-03-06 (+14d) |  | 100% → 0% | none → 0d |  |
| 84 | Test The Implementation | 2020-02-24 A → 2020-03-09 (+14d) | 2020-02-25 A → 2020-03-10 (+14d) |  | 100% → 0% | none → 0d |  |
| 85 | Finished Module 3 Implementation | 2020-02-25 A → 2020-03-10 (+14d) | 2020-02-25 A → 2020-03-10 (+14d) |  | 100% → 0% | none → 0d |  |
| 86 | **Interface Implementation** | 2020-02-26 A → 2020-03-11 (+14d) | 2020-03-10 A → 2020-03-24 (+14d) |  | 100% → 0% | none → 0d |  |
| 87 | Implement the WebService | 2020-02-26 A → 2020-03-11 (+14d) | 2020-02-27 A → 2020-03-12 (+14d) |  | 100% → 0% | none → 0d |  |
| 88 | Implement the interface to access employees' Data | 2020-02-28 A → 2020-03-13 (+14d) | 2020-03-02 A → 2020-03-16 (+14d) |  | 100% → 0% | none → 0d |  |
| 89 | Implement the interface to access employees' Salaries | 2020-03-03 A → 2020-03-17 (+14d) | 2020-03-04 A → 2020-03-18 (+14d) |  | 100% → 0% | none → 0d |  |
| 90 | Test The Implementation | 2020-03-05 A → 2020-03-19 (+14d) | 2020-03-10 A → 2020-03-24 (+14d) |  | 100% → 0% | none → 0d |  |
| 91 | Finished Module 5 Implementation | 2020-03-10 A → 2020-03-24 (+14d) | 2020-03-10 A → 2020-03-24 (+14d) |  | 100% → 0% | none → 0d |  |
| 92 | **Corporate Information** |  | 2020-03-16 A → 2020-03-16 |  | 100% → 24% | none → 6d |  |
| 94 | **Sprint 1** |  | 2020-02-03 A → 2020-02-03 |  | 100% → 90% | none → 6d |  |
| 97 | Review The Results | 2020-02-03 A → 2020-02-03 | 2020-02-03 A → 2020-02-03 |  | 100% → 0% | none → 6d |  |
| 98 | **Sprint 2** | 2020-02-04 A → 2020-02-04 | 2020-02-17 A → 2020-02-17 |  | 100% → 0% | none → 6d |  |
| 99 | Plan The Sprint | 2020-02-04 A → 2020-02-04 | 2020-02-04 A → 2020-02-04 |  | 100% → 0% | none → 6d |  |
| 100 | Realize The Sprint | 2020-02-05 A → 2020-02-05 | 2020-02-14 A → 2020-02-14 |  | 100% → 0% | none → 6d |  |
| 101 | Review The Results | 2020-02-17 A → 2020-02-17 | 2020-02-17 A → 2020-02-17 |  | 100% → 0% | none → 6d |  |
| 102 | **Sprint 3** | 2020-02-18 A → 2020-02-18 | 2020-03-02 A → 2020-03-02 |  | 100% → 0% | none → 6d |  |
| 103 | Plan The Sprint | 2020-02-18 A → 2020-02-18 | 2020-02-18 A → 2020-02-18 |  | 100% → 0% | none → 6d |  |
| 104 | Realize The Sprint | 2020-02-19 A → 2020-02-19 | 2020-02-28 A → 2020-02-28 |  | 100% → 0% | none → 6d |  |
| 105 | Review The Results | 2020-03-02 A → 2020-03-02 | 2020-03-02 A → 2020-03-02 |  | 100% → 0% | none → 6d |  |
| 106 | **Sprint 4** | 2020-03-03 A → 2020-03-03 | 2020-03-16 A → 2020-03-16 |  | 100% → 0% | none → 6d |  |
| 107 | Plan the Sprint | 2020-03-03 A → 2020-03-03 | 2020-03-03 A → 2020-03-03 |  | 100% → 0% | none → 6d |  |
| 108 | Realize The Sprint | 2020-03-04 A → 2020-03-04 | 2020-03-13 A → 2020-03-13 |  | 100% → 0% | none → 6d |  |
| 109 | Review The Results | 2020-03-16 A → 2020-03-16 | 2020-03-16 A → 2020-03-16 |  | 100% → 0% | none → 6d |  |
| 110 | Sprints Completed | 2020-03-16 A → 2020-03-16 | 2020-03-16 A → 2020-03-16 |  | 100% → 0% | none → 6d |  |
| 111 | **Integration Tests** | 2020-03-17 A → 2020-03-25 (+8d) | 2020-03-23 A → 2020-03-31 (+8d) |  | 100% → 0% | none → 0d |  |
| 112 | Integration Test Every Module | 2020-03-17 A → 2020-03-25 (+8d) | 2020-03-23 A → 2020-03-31 (+8d) |  | 100% → 0% | none → 0d |  |
| 113 | Fix Bugs | 2020-03-17 A → 2020-03-25 (+8d) | 2020-03-23 A → 2020-03-31 (+8d) |  | 100% → 0% | none → 0d |  |
| 114 | Passed All Integration Tests | 2020-03-23 A → 2020-03-31 (+8d) | 2020-03-23 A → 2020-03-31 (+8d) |  | 100% → 0% | none → 0d |  |
| 115 | **Transition** | 2020-02-28 A → 2020-02-28 | 2020-04-20 A → 2020-04-28 (+8d) | 36d → 42d | 100% → 0% | none → 0d |  |
| 116 | **Hardware and Infrastructure** | 2020-02-28 A → 2020-02-28 | 2020-03-03 A → 2020-03-03 |  | 100% → 0% | none → 20d |  |
| 117 | Planning of the setup | 2020-02-28 A → 2020-02-28 | 2020-02-28 A → 2020-02-28 |  | 100% → 0% | none → 20d |  |
| 118 | Setup of Hardware and Infrastructure | 2020-03-02 A → 2020-03-02 | 2020-03-03 A → 2020-03-03 |  | 100% → 0% | none → 20d |  |
| 119 | Hardware and Infrastructure Installed | 2020-03-03 A → 2020-03-03 | 2020-03-03 A → 2020-03-03 |  | 100% → 0% | none → 20d |  |
| 120 | **Software Installation** | 2020-03-24 A → 2020-04-01 (+8d) | 2020-03-26 A → 2020-04-03 (+8d) |  | 100% → 0% | none → 0d |  |
| 121 | Preparation of the environment for Installation | 2020-03-24 A → 2020-04-01 (+8d) | 2020-03-24 A → 2020-04-01 (+8d) |  | 100% → 0% | none → 0d |  |
| 122 | Installation of Software | 2020-03-25 A → 2020-04-02 (+8d) | 2020-03-26 A → 2020-04-03 (+8d) |  | 100% → 0% | none → 0d |  |
| 123 | Software Installed | 2020-03-26 A → 2020-04-03 (+8d) | 2020-03-26 A → 2020-04-03 (+8d) |  | 100% → 0% | none → 0d |  |
| 124 | **Data Migration** | 2020-03-27 A → 2020-04-06 (+10d) | 2020-03-30 A → 2020-04-07 (+8d) |  | 100% → 0% | none → 0d |  |
| 125 | Prepare the system to receive training data | 2020-03-27 A → 2020-04-06 (+10d) | 2020-03-27 A → 2020-04-06 (+10d) |  | 100% → 0% | none → 0d |  |
| 126 | Migrate training information to the system | 2020-03-30 A → 2020-04-07 (+8d) | 2020-03-30 A → 2020-04-07 (+8d) |  | 100% → 0% | none → 0d |  |

| ID | Task | Start | Finish | Complete | Total float |
| --- | --- | --- | --- | --- | --- |
| 127 | Data Migrated | 2020-03-30 A → 2020-04-07 (+8d) | 2020-03-30 A → 2020-04-07 (+8d) | 100% → 0% | none → 0d |
| 128 | **Training** | 2020-03-31 A → 2020-04-08 (+8d) | 2020-04-03 A → 2020-04-14 (+11d) | 100% → 0% | none → 0d |
| 129 | Train The HRD Staff To Use The Software | 2020-03-31 A → 2020-04-08 (+8d) | 2020-04-01 A → 2020-04-09 (+8d) | 100% → 0% | none → 0d |
| 130 | Train The DSI Staff To Use The Software | 2020-04-02 A → 2020-04-13 (+11d) | 2020-04-03 A → 2020-04-14 (+11d) | 100% → 0% | none → 0d |
| 131 | Target Users Trained | 2020-04-03 A → 2020-04-14 (+11d) | 2020-04-03 A → 2020-04-14 (+11d) | 100% → 0% | none → 0d |
| 132 | **System Tests** | 2020-04-06 A → 2020-04-15 (+9d) | 2020-04-13 A → 2020-04-21 (+8d) | 100% → 0% | none → 0d |
| 133 | Run System Tests | 2020-04-06 A → 2020-04-15 (+9d) | 2020-04-13 A → 2020-04-21 (+8d) | 100% → 0% | none → 0d |
| 134 | Fix Bugs | 2020-04-06 A → 2020-04-15 (+9d) | 2020-04-13 A → 2020-04-21 (+8d) | 100% → 0% | none → 0d |
| 135 | Project Transition Completed | 2020-04-13 A → 2020-04-21 (+8d) | 2020-04-13 A → 2020-04-21 (+8d) | 100% → 0% | none → 0d |
| 136 | **Acceptance Tests** | 2020-04-14 A → 2020-04-22 (+8d) | 2020-04-20 A → 2020-04-28 (+8d) | 100% → 0% | none → 0d |
| 137 | Run Acceptance Tests | 2020-04-14 A → 2020-04-22 (+8d) | 2020-04-20 A → 2020-04-28 (+8d) | 100% → 0% | none → 0d |
| 138 | Fix Bugs | 2020-04-14 A → 2020-04-22 (+8d) | 2020-04-20 A → 2020-04-28 (+8d) | 100% → 0% | none → 0d |
| 139 | Acceptance Tests Approved | 2020-04-20 A → 2020-04-28 (+8d) | 2020-04-20 A → 2020-04-28 (+8d) | 100% → 0% | none → 0d |
| 140 | **Operation** | 2020-04-21 A → 2020-04-29 (+8d) | 2020-07-22 A → 2020-07-30 (+8d) | 100% → 0% | none → 0d |
| 141 | Support | 2020-04-21 A → 2020-04-29 (+8d) | 2020-04-27 A → 2020-05-06 (+9d) | 100% → 0% | none → 0d |
| 142 | Warranty | 2020-04-28 A → 2020-05-07 (+9d) | 2020-07-22 A → 2020-07-30 (+8d) | 100% → 0% | none → 0d |

## Version 15 (data date 2020-07-31, saved 2019-12-03, file CloseAll.mpp)

Note of the change: Added versions for close

Last finish stays 2020-07-31. Complete tasks 45 → 112.

Changed:

| ID | Task | Start | Finish | Complete | Total float |
| --- | --- | --- | --- | --- | --- |
| 1 | **Project Management** |  | 2020-07-31 A | 48% → 100% | 0d → none |
| 14 | **Control** |  | 2020-04-24 A | 37% → 100% | 68d → none |
| 22 | Control 8 | 2020-02-07 A | 2020-02-07 A | 0% → 100% | 122d → none |
| 23 | Control 9 | 2020-02-14 A | 2020-02-14 A | 0% → 100% | 117d → none |
| 24 | Control 10 | 2020-02-21 A | 2020-02-21 A | 0% → 100% | 112d → none |
| 25 | Control 11 | 2020-02-28 A | 2020-02-28 A | 0% → 100% | 107d → none |
| 26 | Control 12 | 2020-03-06 A | 2020-03-06 A | 0% → 100% | 102d → none |
| 27 | Control 13 | 2020-03-13 A | 2020-03-13 A | 0% → 100% | 97d → none |
| 28 | Control 14 | 2020-03-20 A | 2020-03-20 A | 0% → 100% | 92d → none |
| 29 | Control 15 | 2020-03-27 A | 2020-03-27 A | 0% → 100% | 87d → none |
| 30 | Control 16 | 2020-04-03 A | 2020-04-03 A | 0% → 100% | 82d → none |
| 31 | Control 17 | 2020-04-13 A | 2020-04-13 A | 0% → 100% | 77d → none |
| 32 | Control 18 | 2020-04-17 A | 2020-04-17 A | 0% → 100% | 73d → none |
| 33 | Control 19 | 2020-04-24 A | 2020-04-24 A | 0% → 100% | 68d → none |
| 34 | **Project Close** | 2020-04-29 A | 2020-07-31 A | 0% → 100% | 0d → none |
| 35 | Review Project Objectives | 2020-04-29 A | 2020-04-29 A | 0% → 100% | 62d → none |
| 36 | Collect Lessons Learned | 2020-04-30 A | 2020-04-30 A | 0% → 100% | 62d → none |
| 37 | Provide Feedback | 2020-05-04 A | 2020-05-04 A | 0% → 100% | 62d → none |
| 38 | Close Contracts | 2020-07-31 A | 2020-07-31 A | 0% → 100% | 0d → none |
| 39 | Project Closed | 2020-07-31 A | 2020-07-31 A | 0% → 100% | 0d → none |
| 65 | **Realization** |  | 2020-03-31 A | 20% → 100% | 0d → none |
| 72 | **Holidays and Absences** |  | 2020-02-21 A | 25% → 100% | 0d → none |
| 74 | Implement New Requirements |  | 2020-02-03 A | 75% → 100% | 0d → none |
| 75 | Implement Profile Configuration | 2020-02-04 A | 2020-02-05 A | 0% → 100% | 0d → none |
| 76 | Design and Implementation of new Requirements | 2020-02-06 A | 2020-02-19 A | 0% → 100% | 0d → none |
| 77 | Test The Implementation | 2020-02-20 A | 2020-02-21 A | 0% → 100% | 0d → none |
| 78 | Finished Module 2 Implementation | 2020-02-21 A | 2020-02-21 A | 0% → 100% | 0d → none |
| 79 | **Training Management** | 2020-02-24 A | 2020-03-10 A | 0% → 100% | 0d → none |
| 80 | Parametrize The Module | 2020-02-24 A | 2020-02-25 A | 0% → 100% | 0d → none |
| 81 | Implement New Requirements | 2020-02-26 A | 2020-03-02 A | 0% → 100% | 0d → none |
| 82 | Create Script For Data Migration | 2020-03-03 A | 2020-03-04 A | 0% → 100% | 0d → none |
| 83 | Allowance | 2020-03-05 A | 2020-03-06 A | 0% → 100% | 0d → none |
| 84 | Test The Implementation | 2020-03-09 A | 2020-03-10 A | 0% → 100% | 0d → none |
| 85 | Finished Module 3 Implementation | 2020-03-10 A | 2020-03-10 A | 0% → 100% | 0d → none |
| 86 | **Interface Implementation** | 2020-03-11 A | 2020-03-24 A | 0% → 100% | 0d → none |
| 87 | Implement the WebService | 2020-03-11 A | 2020-03-12 A | 0% → 100% | 0d → none |
| 88 | Implement the interface to access employees' Data | 2020-03-13 A | 2020-03-16 A | 0% → 100% | 0d → none |
| 89 | Implement the interface to access employees' Salaries | 2020-03-17 A | 2020-03-18 A | 0% → 100% | 0d → none |
| 90 | Test The Implementation | 2020-03-19 A | 2020-03-24 A | 0% → 100% | 0d → none |
| 91 | Finished Module 5 Implementation | 2020-03-24 A | 2020-03-24 A | 0% → 100% | 0d → none |
| 92 | **Corporate Information** |  | 2020-03-16 A | 24% → 100% | 6d → none |
| 94 | **Sprint 1** |  | 2020-02-03 A | 90% → 100% | 6d → none |
| 97 | Review The Results | 2020-02-03 A | 2020-02-03 A | 0% → 100% | 6d → none |
| 98 | **Sprint 2** | 2020-02-04 A | 2020-02-17 A | 0% → 100% | 6d → none |
| 99 | Plan The Sprint | 2020-02-04 A | 2020-02-04 A | 0% → 100% | 6d → none |
| 100 | Realize The Sprint | 2020-02-05 A | 2020-02-14 A | 0% → 100% | 6d → none |
| 101 | Review The Results | 2020-02-17 A | 2020-02-17 A | 0% → 100% | 6d → none |
| 102 | **Sprint 3** | 2020-02-18 A | 2020-03-02 A | 0% → 100% | 6d → none |
| 103 | Plan The Sprint | 2020-02-18 A | 2020-02-18 A | 0% → 100% | 6d → none |
| 104 | Realize The Sprint | 2020-02-19 A | 2020-02-28 A | 0% → 100% | 6d → none |
| 105 | Review The Results | 2020-03-02 A | 2020-03-02 A | 0% → 100% | 6d → none |
| 106 | **Sprint 4** | 2020-03-03 A | 2020-03-16 A | 0% → 100% | 6d → none |
| 107 | Plan the Sprint | 2020-03-03 A | 2020-03-03 A | 0% → 100% | 6d → none |
| 108 | Realize The Sprint | 2020-03-04 A | 2020-03-13 A | 0% → 100% | 6d → none |
| 109 | Review The Results | 2020-03-16 A | 2020-03-16 A | 0% → 100% | 6d → none |
| 110 | Sprints Completed | 2020-03-16 A | 2020-03-16 A | 0% → 100% | 6d → none |
| 111 | **Integration Tests** | 2020-03-25 A | 2020-03-31 A | 0% → 100% | 0d → none |
| 112 | Integration Test Every Module | 2020-03-25 A | 2020-03-31 A | 0% → 100% | 0d → none |
| 113 | Fix Bugs | 2020-03-25 A | 2020-03-31 A | 0% → 100% | 0d → none |
| 114 | Passed All Integration Tests | 2020-03-31 A | 2020-03-31 A | 0% → 100% | 0d → none |
| 115 | **Transition** | 2020-02-28 A | 2020-04-28 A | 0% → 100% | 0d → none |
| 116 | **Hardware and Infrastructure** | 2020-02-28 A | 2020-03-03 A | 0% → 100% | 20d → none |
| 117 | Planning of the setup | 2020-02-28 A | 2020-02-28 A | 0% → 100% | 20d → none |
| 118 | Setup of Hardware and Infrastructure | 2020-03-02 A | 2020-03-03 A | 0% → 100% | 20d → none |
| 119 | Hardware and Infrastructure Installed | 2020-03-03 A | 2020-03-03 A | 0% → 100% | 20d → none |
| 120 | **Software Installation** | 2020-04-01 A | 2020-04-03 A | 0% → 100% | 0d → none |
| 121 | Preparation of the environment for Installation | 2020-04-01 A | 2020-04-01 A | 0% → 100% | 0d → none |
| 122 | Installation of Software | 2020-04-02 A | 2020-04-03 A | 0% → 100% | 0d → none |
| 123 | Software Installed | 2020-04-03 A | 2020-04-03 A | 0% → 100% | 0d → none |
| 124 | **Data Migration** | 2020-04-06 A | 2020-04-07 A | 0% → 100% | 0d → none |

| ID | Task | Start | Finish | Complete | Total float |
| --- | --- | --- | --- | --- | --- |
| 125 | Prepare the system to receive training data | 2020-04-06 A | 2020-04-06 A | 0% → 100% | 0d → none |
| 126 | Migrate training information to the system | 2020-04-07 A | 2020-04-07 A | 0% → 100% | 0d → none |
| 127 | Data Migrated | 2020-04-07 A | 2020-04-07 A | 0% → 100% | 0d → none |
| 128 | **Training** | 2020-04-08 A | 2020-04-14 A | 0% → 100% | 0d → none |
| 129 | Train The HRD Staff To Use The Software | 2020-04-08 A | 2020-04-09 A | 0% → 100% | 0d → none |
| 130 | Train The DSI Staff To Use The Software | 2020-04-13 A | 2020-04-14 A | 0% → 100% | 0d → none |
| 131 | Target Users Trained | 2020-04-14 A | 2020-04-14 A | 0% → 100% | 0d → none |
| 132 | **System Tests** | 2020-04-15 A | 2020-04-21 A | 0% → 100% | 0d → none |
| 133 | Run System Tests | 2020-04-15 A | 2020-04-21 A | 0% → 100% | 0d → none |
| 134 | Fix Bugs | 2020-04-15 A | 2020-04-21 A | 0% → 100% | 0d → none |
| 135 | Project Transition Completed | 2020-04-21 A | 2020-04-21 A | 0% → 100% | 0d → none |
| 136 | **Acceptance Tests** | 2020-04-22 A | 2020-04-28 A | 0% → 100% | 0d → none |
| 137 | Run Acceptance Tests | 2020-04-22 A | 2020-04-28 A | 0% → 100% | 0d → none |
| 138 | Fix Bugs | 2020-04-22 A | 2020-04-28 A | 0% → 100% | 0d → none |
| 139 | Acceptance Tests Approved | 2020-04-28 A | 2020-04-28 A | 0% → 100% | 0d → none |
| 140 | **Operation** | 2020-04-29 A | 2020-07-30 A | 0% → 100% | 0d → none |
| 141 | Support | 2020-04-29 A | 2020-05-06 A | 0% → 100% | 0d → none |
| 142 | Warranty | 2020-05-07 A | 2020-07-30 A | 0% → 100% | 0d → none |

## Version 16 (data date 2020-01-31, saved 2019-12-05, file Status31Jan.mpp)

Note of the change: Updated final Status31Jan

Last finish 2020-07-31 → 2020-07-23 (-8d). Complete tasks 112 → 45.

Added:

| ID | Task | Duration | Start | Finish | Predecessors | Resources |
| --- | --- | --- | --- | --- | --- | --- |
| 87 | Allowance | 3d | 2020-03-09 | 2020-03-11 | 86 | ISTRetail Technical Coordinator; IT Infrastructure Specialist; Trainee (ISTRetail) |

Removed: 31 Control 17; 32 Control 18; 33 Control 19; 76 Design and Implementation of new Requirements; 106 Sprint 4; 107 Plan the Sprint; 108 Realize The Sprint; 109 Review The Results

Changed:

| ID | Task | Start | Finish | Duration | Complete | Total float | Predecessors | Other |
| --- | --- | --- | --- | --- | --- | --- | --- | --- |
| 1 | **Project Management** |  | 2020-07-31 A → 2020-07-23 (-8d) | 169d → 163d | 100% → 54% | none → 0d |  |  |
| 14 | **Control** |  | 2020-04-24 A → 2020-04-03 (-21d) | 87d → 73d | 100% → 44% | none → 76d |  |  |
| 22 | Control 8 | 2020-02-07 A → 2020-02-07 | 2020-02-07 A → 2020-02-07 |  | 100% → 0% | none → 116d |  |  |
| 23 | Control 9 | 2020-02-14 A → 2020-02-14 | 2020-02-14 A → 2020-02-14 |  | 100% → 0% | none → 111d |  |  |
| 24 | Control 10 | 2020-02-21 A → 2020-02-21 | 2020-02-21 A → 2020-02-21 |  | 100% → 0% | none → 106d |  |  |
| 25 | Control 11 | 2020-02-28 A → 2020-02-28 | 2020-02-28 A → 2020-02-28 |  | 100% → 0% | none → 101d |  |  |
| 26 | Control 12 | 2020-03-06 A → 2020-03-06 | 2020-03-06 A → 2020-03-06 |  | 100% → 0% | none → 96d |  |  |
| 27 | Control 13 | 2020-03-13 A → 2020-03-13 | 2020-03-13 A → 2020-03-13 |  | 100% → 0% | none → 91d |  |  |
| 28 | Control 14 | 2020-03-20 A → 2020-03-20 | 2020-03-20 A → 2020-03-20 |  | 100% → 0% | none → 86d |  |  |
| 29 | Control 15 | 2020-03-27 A → 2020-03-27 | 2020-03-27 A → 2020-03-27 |  | 100% → 0% | none → 81d |  |  |
| 30 | Control 16 | 2020-04-03 A → 2020-04-03 | 2020-04-03 A → 2020-04-03 |  | 100% → 0% | none → 76d |  |  |
| 31 | **Project Close** | 2020-04-29 A → 2020-04-21 (-8d) | 2020-07-31 A → 2020-07-23 (-8d) |  | 100% → 0% | none → 0d |  |  |
| 32 | Review Project Objectives | 2020-04-29 A → 2020-04-21 (-8d) | 2020-04-29 A → 2020-04-21 (-8d) |  | 100% → 0% | none → 62d |  |  |
| 33 | Collect Lessons Learned | 2020-04-30 A → 2020-04-22 (-8d) | 2020-04-30 A → 2020-04-22 (-8d) |  | 100% → 0% | none → 62d |  |  |
| 34 | Provide Feedback | 2020-05-04 A → 2020-04-23 (-11d) | 2020-05-04 A → 2020-04-23 (-11d) |  | 100% → 0% | none → 62d |  |  |
| 35 | Close Contracts | 2020-07-31 A → 2020-07-23 (-8d) | 2020-07-31 A → 2020-07-23 (-8d) |  | 100% → 0% | none → 0d |  |  |
| 36 | Project Closed | 2020-07-31 A → 2020-07-23 (-8d) | 2020-07-31 A → 2020-07-23 (-8d) |  | 100% → 0% | none → 0d |  |  |
| 53 | Design the WebService |  |  |  |  |  |  | resources ISTRetail Technical Coordinator [50%]; Trainee (ISTRetail) → ISTRetail Technical Coordinator; Trainee (ISTRetail) |
| 54 | Design Interface To Access Employees' Data |  |  |  |  |  |  | resources ISTRetail Technical Coordinator [50%]; Technical Coordinator; Trainee (ISTRetail) → ISTRetail Technical Coordinator; Technical Coordinator; Trainee (ISTRetail) |
| 55 | Design Interface To Access Employees' Salary |  |  |  |  |  |  | resources ISTRetail Technical Coordinator [50%]; Technical Coordinator; Trainee (ISTRetail) → ISTRetail Technical Coordinator; Technical Coordinator; Trainee (ISTRetail) |
| 62 | **Realization** |  | 2020-03-31 A → 2020-03-18 (-13d) | 52d → 43d | 100% → 26% | none → 0d |  |  |
| 69 | **Holidays and Absences** |  | 2020-02-21 A → 2020-02-07 (-14d) | 20d → 10d | 100% → 50% | none → 3d |  |  |
| 71 | Implement New Requirements |  | 2020-02-03 A → 2020-02-03 |  | 100% → 75% | none → 3d |  |  |
| 72 | Implement Profile Configuration | 2020-02-04 A → 2020-02-04 | 2020-02-05 A → 2020-02-05 |  | 100% → 0% | none → 3d |  |  |
| 73 | Test The Implementation | 2020-02-20 A → 2020-02-06 (-14d) | 2020-02-21 A → 2020-02-07 (-14d) |  | 100% → 0% | none → 3d | Design and Implementation of new Requirements → 72 |  |
| 74 | Finished Module 2 Implementation | 2020-02-21 A → 2020-02-07 (-14d) | 2020-02-21 A → 2020-02-07 (-14d) |  | 100% → 0% | none → 3d |  |  |
| 75 | **Training Management** | 2020-02-24 A → 2020-02-10 (-14d) | 2020-03-10 A → 2020-02-25 (-14d) |  | 100% → 0% | none → 3d |  |  |
| 76 | Parametrize The Module | 2020-02-24 A → 2020-02-10 (-14d) | 2020-02-25 A → 2020-02-11 (-14d) |  | 100% → 0% | none → 3d |  |  |
| 77 | Implement New Requirements | 2020-02-26 A → 2020-02-12 (-14d) | 2020-03-02 A → 2020-02-17 (-14d) |  | 100% → 0% | none → 3d |  |  |
| 78 | Create Script For Data Migration | 2020-03-03 A → 2020-02-18 (-14d) | 2020-03-04 A → 2020-02-19 (-14d) |  | 100% → 0% | none → 3d |  |  |
| 79 | Allowance | 2020-03-05 A → 2020-02-20 (-14d) | 2020-03-06 A → 2020-02-21 (-14d) |  | 100% → 0% | none → 3d |  |  |
| 80 | Test The Implementation | 2020-03-09 A → 2020-02-24 (-14d) | 2020-03-10 A → 2020-02-25 (-14d) |  | 100% → 0% | none → 3d |  |  |
| 81 | Finished Module 3 Implementation | 2020-03-10 A → 2020-02-25 (-14d) | 2020-03-10 A → 2020-02-25 (-14d) |  | 100% → 0% | none → 3d |  |  |
| 82 | **Interface Implementation** | 2020-03-11 A → 2020-03-02 (-9d) | 2020-03-24 A → 2020-03-11 (-13d) | 10d → 8d | 100% → 0% | none → 0d |  |  |
| 83 | Implement the WebService | 2020-03-11 A → 2020-03-02 (-9d) | 2020-03-12 A → 2020-03-02 (-10d) | 2d → 1d | 100% → 0% | none → 0d |  | constraint none → start no earlier than 2020-03-02 |
| 84 | Implement the interface to access employees' Data | 2020-03-13 A → 2020-03-03 (-10d) | 2020-03-16 A → 2020-03-03 (-13d) | 2d → 1d | 100% → 0% | none → 0d |  |  |
| 85 | Implement the interface to access employees' Salaries | 2020-03-17 A → 2020-03-04 (-13d) | 2020-03-18 A → 2020-03-04 (-14d) | 2d → 1d | 100% → 0% | none → 0d |  |  |
| 86 | Test The Implementation | 2020-03-19 A → 2020-03-05 (-14d) | 2020-03-24 A → 2020-03-06 (-18d) | 4d → 2d | 100% → 0% | none → 0d |  |  |
| 88 | Finished Module 5 Implementation | 2020-03-24 A → 2020-03-11 (-13d) | 2020-03-24 A → 2020-03-11 (-13d) |  | 100% → 0% | none → 0d | 86 → 87 |  |
| 89 | **Corporate Information** |  | 2020-03-16 A → 2020-03-02 (-14d) | 41d → 31d | 100% → 32% | none → 7d |  |  |
| 91 | **Sprint 1** |  | 2020-02-03 A → 2020-02-03 |  | 100% → 90% | none → 7d |  |  |
| 94 | Review The Results | 2020-02-03 A → 2020-02-03 | 2020-02-03 A → 2020-02-03 |  | 100% → 0% | none → 7d |  |  |
| 95 | **Sprint 2** | 2020-02-04 A → 2020-02-04 | 2020-02-17 A → 2020-02-17 |  | 100% → 0% | none → 7d |  |  |
| 96 | Plan The Sprint | 2020-02-04 A → 2020-02-04 | 2020-02-04 A → 2020-02-04 |  | 100% → 0% | none → 7d |  |  |
| 97 | Realize The Sprint | 2020-02-05 A → 2020-02-05 | 2020-02-14 A → 2020-02-14 |  | 100% → 0% | none → 7d |  |  |
| 98 | Review The Results | 2020-02-17 A → 2020-02-17 | 2020-02-17 A → 2020-02-17 |  | 100% → 0% | none → 7d |  |  |
| 99 | **Sprint 3** | 2020-02-18 A → 2020-02-18 | 2020-03-02 A → 2020-03-02 |  | 100% → 0% | none → 7d |  |  |
| 100 | Plan The Sprint | 2020-02-18 A → 2020-02-18 | 2020-02-18 A → 2020-02-18 |  | 100% → 0% | none → 7d |  |  |
| 101 | Realize The Sprint | 2020-02-19 A → 2020-02-19 | 2020-02-28 A → 2020-02-28 |  | 100% → 0% | none → 7d |  |  |
| 102 | Review The Results | 2020-03-02 A → 2020-03-02 | 2020-03-02 A → 2020-03-02 |  | 100% → 0% | none → 7d |  |  |
| 103 | Sprints Completed | 2020-03-16 A → 2020-03-02 (-14d) | 2020-03-16 A → 2020-03-02 (-14d) |  | 100% → 0% | none → 7d | Review The Results → 102 |  |
| 104 | **Integration Tests** | 2020-03-25 A → 2020-03-12 (-13d) | 2020-03-31 A → 2020-03-18 (-13d) |  | 100% → 0% | none → 0d |  |  |
| 105 | Integration Test Every Module | 2020-03-25 A → 2020-03-12 (-13d) | 2020-03-31 A → 2020-03-18 (-13d) |  | 100% → 0% | none → 0d |  |  |
| 106 | Fix Bugs | 2020-03-25 A → 2020-03-12 (-13d) | 2020-03-31 A → 2020-03-18 (-13d) |  | 100% → 0% | none → 0d |  |  |
| 107 | Passed All Integration Tests | 2020-03-31 A → 2020-03-18 (-13d) | 2020-03-31 A → 2020-03-18 (-13d) |  | 100% → 0% | none → 0d |  |  |
| 108 | **Transition** | 2020-02-28 A → 2020-03-19 (+20d) | 2020-04-28 A → 2020-04-20 (-8d) | 42d → 22d | 100% → 0% | none → 0d |  |  |
| 109 | **Hardware and Infrastructure** | 2020-02-28 A → 2020-03-19 (+20d) | 2020-03-03 A → 2020-03-23 (+20d) |  | 100% → 0% | none → 0d |  |  |
| 110 | Planning of the setup | 2020-02-28 A → 2020-03-19 (+20d) | 2020-02-28 A → 2020-03-19 (+20d) |  | 100% → 0% | none → 0d | 45 → 107 | constraint start no earlier than 2020-02-28 → start no earlier than 2020-03-02 |
| 111 | Setup of Hardware and Infrastructure | 2020-03-02 A → 2020-03-20 (+18d) | 2020-03-03 A → 2020-03-23 (+20d) |  | 100% → 0% | none → 0d |  |  |
| 112 | Hardware and Infrastructure Installed | 2020-03-03 A → 2020-03-23 (+20d) | 2020-03-03 A → 2020-03-23 (+20d) |  | 100% → 0% | none → 0d |  |  |
| 113 | **Software Installation** | 2020-04-01 A → 2020-03-24 (-8d) | 2020-04-03 A → 2020-03-26 (-8d) |  | 100% → 0% | none → 0d |  |  |
| 114 | Preparation of the environment for Installation | 2020-04-01 A → 2020-03-24 (-8d) | 2020-04-01 A → 2020-03-24 (-8d) |  | 100% → 0% | none → 0d | 112, 104 → 112 |  |
| 115 | Installation of Software | 2020-04-02 A → 2020-03-25 (-8d) | 2020-04-03 A → 2020-03-26 (-8d) |  | 100% → 0% | none → 0d |  |  |
| 116 | Software Installed | 2020-04-03 A → 2020-03-26 (-8d) | 2020-04-03 A → 2020-03-26 (-8d) |  | 100% → 0% | none → 0d |  |  |
| 117 | **Data Migration** | 2020-04-06 A → 2020-03-27 (-10d) | 2020-04-07 A → 2020-03-30 (-8d) |  | 100% → 0% | none → 0d |  |  |
| 118 | Prepare the system to receive training data | 2020-04-06 A → 2020-03-27 (-10d) | 2020-04-06 A → 2020-03-27 (-10d) |  | 100% → 0% | none → 0d |  |  |
| 119 | Migrate training information to the system | 2020-04-07 A → 2020-03-30 (-8d) | 2020-04-07 A → 2020-03-30 (-8d) |  | 100% → 0% | none → 0d |  |  |
| 120 | Data Migrated | 2020-04-07 A → 2020-03-30 (-8d) | 2020-04-07 A → 2020-03-30 (-8d) |  | 100% → 0% | none → 0d |  |  |
| 121 | **Training** | 2020-04-08 A → 2020-03-31 (-8d) | 2020-04-14 A → 2020-04-03 (-11d) |  | 100% → 0% | none → 0d |  |  |
| 122 | Train The HRD Staff To Use The Software | 2020-04-08 A → 2020-03-31 (-8d) | 2020-04-09 A → 2020-04-01 (-8d) |  | 100% → 0% | none → 0d |  |  |

| ID | Task | Start | Finish | Complete | Total float |
| --- | --- | --- | --- | --- | --- |
| 123 | Train The DSI Staff To Use The Software | 2020-04-13 A → 2020-04-02 (-11d) | 2020-04-14 A → 2020-04-03 (-11d) | 100% → 0% | none → 0d |
| 124 | Target Users Trained | 2020-04-14 A → 2020-04-03 (-11d) | 2020-04-14 A → 2020-04-03 (-11d) | 100% → 0% | none → 0d |
| 125 | **System Tests** | 2020-04-15 A → 2020-04-06 (-9d) | 2020-04-21 A → 2020-04-13 (-8d) | 100% → 0% | none → 0d |
| 126 | Run System Tests | 2020-04-15 A → 2020-04-06 (-9d) | 2020-04-21 A → 2020-04-13 (-8d) | 100% → 0% | none → 0d |
| 127 | Fix Bugs | 2020-04-15 A → 2020-04-06 (-9d) | 2020-04-21 A → 2020-04-13 (-8d) | 100% → 0% | none → 0d |
| 128 | Project Transition Completed | 2020-04-21 A → 2020-04-13 (-8d) | 2020-04-21 A → 2020-04-13 (-8d) | 100% → 0% | none → 0d |
| 129 | **Acceptance Tests** | 2020-04-22 A → 2020-04-14 (-8d) | 2020-04-28 A → 2020-04-20 (-8d) | 100% → 0% | none → 0d |
| 130 | Run Acceptance Tests | 2020-04-22 A → 2020-04-14 (-8d) | 2020-04-28 A → 2020-04-20 (-8d) | 100% → 0% | none → 0d |
| 131 | Fix Bugs | 2020-04-22 A → 2020-04-14 (-8d) | 2020-04-28 A → 2020-04-20 (-8d) | 100% → 0% | none → 0d |
| 132 | Acceptance Tests Approved | 2020-04-28 A → 2020-04-20 (-8d) | 2020-04-28 A → 2020-04-20 (-8d) | 100% → 0% | none → 0d |
| 133 | **Operation** | 2020-04-29 A → 2020-04-21 (-8d) | 2020-07-30 A → 2020-07-22 (-8d) | 100% → 0% | none → 0d |
| 134 | Support | 2020-04-29 A → 2020-04-21 (-8d) | 2020-05-06 A → 2020-04-27 (-9d) | 100% → 0% | none → 0d |
| 135 | Warranty | 2020-05-07 A → 2020-04-28 (-9d) | 2020-07-30 A → 2020-07-22 (-8d) | 100% → 0% | none → 0d |

## Version 17 (data date 2020-01-31, saved 2019-12-05, file NewClose.mpp)

Note of the change: ADded new closes

Last finish 2020-07-23 → 2020-07-28 (+5d).

Added:

| ID | Task | Duration | Start | Finish | Predecessors | Resources |
| --- | --- | --- | --- | --- | --- | --- |
| 103 | **Sprint 4** | 10d | 2020-03-03 | 2020-03-16 |  |  |
| 104 | Plan The Sprint | 1d | 2020-03-03 | 2020-03-03 | 102 | Scrum Master; Consultant 1 (SM); Consultant 2 (SM) |
| 105 | Realize The Sprint | 8d | 2020-03-04 | 2020-03-13 | 104 | Scrum Master; Consultant 1 (SM); Consultant 2 (SM) |
| 106 | Review The Results | 1d | 2020-03-16 | 2020-03-16 | 105 | Scrum Master; Consultant 1 (SM); Consultant 2 (SM) |

Changed:

| ID | Task | Start | Finish | Duration | Complete | Total float | Predecessors |
| --- | --- | --- | --- | --- | --- | --- | --- |
| 1 | **Project Management** |  | 2020-07-23 → 2020-07-28 (+5d) | 163d → 166d |  |  |  |
| 31 | **Project Close** | 2020-04-21 → 2020-04-24 (+3d) | 2020-07-23 → 2020-07-28 (+5d) |  |  |  |  |
| 32 | Review Project Objectives | 2020-04-21 → 2020-04-24 (+3d) | 2020-04-21 → 2020-04-24 (+3d) |  |  |  |  |
| 33 | Collect Lessons Learned | 2020-04-22 → 2020-04-27 (+5d) | 2020-04-22 → 2020-04-27 (+5d) |  |  |  |  |
| 34 | Provide Feedback | 2020-04-23 → 2020-04-28 (+5d) | 2020-04-23 → 2020-04-28 (+5d) |  |  |  |  |
| 35 | Close Contracts | 2020-07-23 → 2020-07-28 (+5d) | 2020-07-23 → 2020-07-28 (+5d) |  |  |  |  |
| 36 | Project Closed | 2020-07-23 → 2020-07-28 (+5d) | 2020-07-23 → 2020-07-28 (+5d) |  |  |  |  |
| 62 | **Realization** |  | 2020-03-18 → 2020-03-23 (+5d) | 43d → 46d | 26% → 23% |  |  |
| 82 | **Interface Implementation** |  | 2020-03-11 → 2020-03-13 (+2d) | 8d → 10d |  | 0d → 1d |  |
| 83 | Implement the WebService |  | 2020-03-02 → 2020-03-03 (+1d) | 1d → 2d |  | 0d → 1d |  |
| 84 | Implement the interface to access employees' Data | 2020-03-03 → 2020-03-04 (+1d) | 2020-03-03 → 2020-03-05 (+2d) | 1d → 2d |  | 0d → 1d |  |
| 85 | Implement the interface to access employees' Salaries | 2020-03-04 → 2020-03-06 (+2d) | 2020-03-04 → 2020-03-06 (+2d) |  |  | 0d → 1d |  |
| 86 | Test The Implementation | 2020-03-05 → 2020-03-09 (+4d) | 2020-03-06 → 2020-03-10 (+4d) |  |  | 0d → 1d |  |
| 87 | Allowance | 2020-03-09 → 2020-03-11 (+2d) | 2020-03-11 → 2020-03-13 (+2d) |  |  | 0d → 1d |  |
| 88 | Finished Module 5 Implementation | 2020-03-11 → 2020-03-13 (+2d) | 2020-03-11 → 2020-03-13 (+2d) |  |  | 0d → 1d |  |
| 89 | **Corporate Information** |  | 2020-03-02 → 2020-03-16 (+14d) | 31d → 41d | 32% → 24% | 7d → 0d |  |
| 107 | Sprints Completed | 2020-03-02 → 2020-03-16 (+14d) | 2020-03-02 → 2020-03-16 (+14d) |  |  | 7d → 0d | 102 → 106 |
| 108 | **Integration Tests** | 2020-03-12 → 2020-03-17 (+5d) | 2020-03-18 → 2020-03-23 (+5d) |  |  |  |  |
| 109 | Integration Test Every Module | 2020-03-12 → 2020-03-17 (+5d) | 2020-03-18 → 2020-03-23 (+5d) |  |  |  |  |
| 110 | Fix Bugs | 2020-03-12 → 2020-03-17 (+5d) | 2020-03-18 → 2020-03-23 (+5d) |  |  |  |  |
| 111 | Passed All Integration Tests | 2020-03-18 → 2020-03-23 (+5d) | 2020-03-18 → 2020-03-23 (+5d) |  |  |  |  |
| 112 | **Transition** | 2020-03-19 → 2020-03-24 (+5d) | 2020-04-20 → 2020-04-23 (+3d) |  |  |  |  |
| 113 | **Hardware and Infrastructure** | 2020-03-19 → 2020-03-24 (+5d) | 2020-03-23 → 2020-03-26 (+3d) |  |  |  |  |
| 114 | Planning of the setup | 2020-03-19 → 2020-03-24 (+5d) | 2020-03-19 → 2020-03-24 (+5d) |  |  |  |  |
| 115 | Setup of Hardware and Infrastructure | 2020-03-20 → 2020-03-25 (+5d) | 2020-03-23 → 2020-03-26 (+3d) |  |  |  |  |
| 116 | Hardware and Infrastructure Installed | 2020-03-23 → 2020-03-26 (+3d) | 2020-03-23 → 2020-03-26 (+3d) |  |  |  |  |
| 117 | **Software Installation** | 2020-03-24 → 2020-03-27 (+3d) | 2020-03-26 → 2020-03-31 (+5d) |  |  |  |  |
| 118 | Preparation of the environment for Installation | 2020-03-24 → 2020-03-27 (+3d) | 2020-03-24 → 2020-03-27 (+3d) |  |  |  |  |
| 119 | Installation of Software | 2020-03-25 → 2020-03-30 (+5d) | 2020-03-26 → 2020-03-31 (+5d) |  |  |  |  |
| 120 | Software Installed | 2020-03-26 → 2020-03-31 (+5d) | 2020-03-26 → 2020-03-31 (+5d) |  |  |  |  |
| 121 | **Data Migration** | 2020-03-27 → 2020-04-01 (+5d) | 2020-03-30 → 2020-04-02 (+3d) |  |  |  |  |
| 122 | Prepare the system to receive training data | 2020-03-27 → 2020-04-01 (+5d) | 2020-03-27 → 2020-04-01 (+5d) |  |  |  |  |
| 123 | Migrate training information to the system | 2020-03-30 → 2020-04-02 (+3d) | 2020-03-30 → 2020-04-02 (+3d) |  |  |  |  |
| 124 | Data Migrated | 2020-03-30 → 2020-04-02 (+3d) | 2020-03-30 → 2020-04-02 (+3d) |  |  |  |  |
| 125 | **Training** | 2020-03-31 → 2020-04-03 (+3d) | 2020-04-03 → 2020-04-08 (+5d) |  |  |  |  |
| 126 | Train The HRD Staff To Use The Software | 2020-03-31 → 2020-04-03 (+3d) | 2020-04-01 → 2020-04-06 (+5d) |  |  |  |  |
| 127 | Train The DSI Staff To Use The Software | 2020-04-02 → 2020-04-07 (+5d) | 2020-04-03 → 2020-04-08 (+5d) |  |  |  |  |
| 128 | Target Users Trained | 2020-04-03 → 2020-04-08 (+5d) | 2020-04-03 → 2020-04-08 (+5d) |  |  |  |  |
| 129 | **System Tests** | 2020-04-06 → 2020-04-09 (+3d) | 2020-04-13 → 2020-04-16 (+3d) |  |  |  |  |
| 130 | Run System Tests | 2020-04-06 → 2020-04-09 (+3d) | 2020-04-13 → 2020-04-16 (+3d) |  |  |  |  |
| 131 | Fix Bugs | 2020-04-06 → 2020-04-09 (+3d) | 2020-04-13 → 2020-04-16 (+3d) |  |  |  |  |
| 132 | Project Transition Completed | 2020-04-13 → 2020-04-16 (+3d) | 2020-04-13 → 2020-04-16 (+3d) |  |  |  |  |
| 133 | **Acceptance Tests** | 2020-04-14 → 2020-04-17 (+3d) | 2020-04-20 → 2020-04-23 (+3d) |  |  |  |  |
| 134 | Run Acceptance Tests | 2020-04-14 → 2020-04-17 (+3d) | 2020-04-20 → 2020-04-23 (+3d) |  |  |  |  |
| 135 | Fix Bugs | 2020-04-14 → 2020-04-17 (+3d) | 2020-04-20 → 2020-04-23 (+3d) |  |  |  |  |
| 136 | Acceptance Tests Approved | 2020-04-20 → 2020-04-23 (+3d) | 2020-04-20 → 2020-04-23 (+3d) |  |  |  |  |
| 137 | **Operation** | 2020-04-21 → 2020-04-24 (+3d) | 2020-07-22 → 2020-07-27 (+5d) |  |  |  |  |
| 138 | Support | 2020-04-21 → 2020-04-24 (+3d) | 2020-04-27 → 2020-04-30 (+3d) |  |  |  |  |
| 139 | Warranty | 2020-04-28 → 2020-05-04 (+6d) | 2020-07-22 → 2020-07-27 (+5d) |  |  |  |  |

## Version 18 (data date 2020-07-28, saved 2019-12-05, file NewCloseAll.mpp)

Note of the change: ADded new closes

Last finish stays 2020-07-28. Complete tasks 45 → 109.

Changed:

| ID | Task | Start | Finish | Complete | Total float |
| --- | --- | --- | --- | --- | --- |
| 1 | **Project Management** |  | 2020-07-28 A | 54% → 100% | 0d → none |
| 14 | **Control** |  | 2020-04-03 A | 44% → 100% | 79d → none |
| 22 | Control 8 | 2020-02-07 A | 2020-02-07 A | 0% → 100% | 116d → none |
| 23 | Control 9 | 2020-02-14 A | 2020-02-14 A | 0% → 100% | 111d → none |
| 24 | Control 10 | 2020-02-21 A | 2020-02-21 A | 0% → 100% | 106d → none |
| 25 | Control 11 | 2020-02-28 A | 2020-02-28 A | 0% → 100% | 101d → none |
| 26 | Control 12 | 2020-03-06 A | 2020-03-06 A | 0% → 100% | 96d → none |
| 27 | Control 13 | 2020-03-13 A | 2020-03-13 A | 0% → 100% | 91d → none |
| 28 | Control 14 | 2020-03-20 A | 2020-03-20 A | 0% → 100% | 86d → none |
| 29 | Control 15 | 2020-03-27 A | 2020-03-27 A | 0% → 100% | 81d → none |
| 30 | Control 16 | 2020-04-03 A | 2020-04-03 A | 0% → 100% | 76d → none |
| 31 | **Project Close** | 2020-04-24 A | 2020-07-28 A | 0% → 100% | 0d → none |
| 32 | Review Project Objectives | 2020-04-24 A | 2020-04-24 A | 0% → 100% | 62d → none |
| 33 | Collect Lessons Learned | 2020-04-27 A | 2020-04-27 A | 0% → 100% | 62d → none |
| 34 | Provide Feedback | 2020-04-28 A | 2020-04-28 A | 0% → 100% | 62d → none |
| 35 | Close Contracts | 2020-07-28 A | 2020-07-28 A | 0% → 100% | 0d → none |
| 36 | Project Closed | 2020-07-28 A | 2020-07-28 A | 0% → 100% | 0d → none |
| 62 | **Realization** |  | 2020-03-23 A | 23% → 100% | 0d → none |
| 69 | **Holidays and Absences** |  | 2020-02-07 A | 50% → 100% | 4d → none |
| 71 | Implement New Requirements |  | 2020-02-03 A | 75% → 100% | 4d → none |
| 72 | Implement Profile Configuration | 2020-02-04 A | 2020-02-05 A | 0% → 100% | 3d → none |
| 73 | Test The Implementation | 2020-02-06 A | 2020-02-07 A | 0% → 100% | 3d → none |
| 74 | Finished Module 2 Implementation | 2020-02-07 A | 2020-02-07 A | 0% → 100% | 3d → none |
| 75 | **Training Management** | 2020-02-10 A | 2020-02-25 A | 0% → 100% | 4d → none |
| 76 | Parametrize The Module | 2020-02-10 A | 2020-02-11 A | 0% → 100% | 3d → none |
| 77 | Implement New Requirements | 2020-02-12 A | 2020-02-17 A | 0% → 100% | 3d → none |
| 78 | Create Script For Data Migration | 2020-02-18 A | 2020-02-19 A | 0% → 100% | 3d → none |
| 79 | Allowance | 2020-02-20 A | 2020-02-21 A | 0% → 100% | 3d → none |
| 80 | Test The Implementation | 2020-02-24 A | 2020-02-25 A | 0% → 100% | 3d → none |
| 81 | Finished Module 3 Implementation | 2020-02-25 A | 2020-02-25 A | 0% → 100% | 3d → none |
| 82 | **Interface Implementation** | 2020-03-02 A | 2020-03-13 A | 0% → 100% | 1d → none |
| 83 | Implement the WebService | 2020-03-02 A | 2020-03-03 A | 0% → 100% | 1d → none |
| 84 | Implement the interface to access employees' Data | 2020-03-04 A | 2020-03-05 A | 0% → 100% | 1d → none |
| 85 | Implement the interface to access employees' Salaries | 2020-03-06 A | 2020-03-06 A | 0% → 100% | 1d → none |
| 86 | Test The Implementation | 2020-03-09 A | 2020-03-10 A | 0% → 100% | 1d → none |
| 87 | Allowance | 2020-03-11 A | 2020-03-13 A | 0% → 100% | 1d → none |
| 88 | Finished Module 5 Implementation | 2020-03-13 A | 2020-03-13 A | 0% → 100% | 1d → none |
| 89 | **Corporate Information** |  | 2020-03-16 A | 24% → 100% | 0d → none |
| 91 | **Sprint 1** |  | 2020-02-03 A | 90% → 100% | 0d → none |
| 94 | Review The Results | 2020-02-03 A | 2020-02-03 A | 0% → 100% | 0d → none |
| 95 | **Sprint 2** | 2020-02-04 A | 2020-02-17 A | 0% → 100% | 0d → none |
| 96 | Plan The Sprint | 2020-02-04 A | 2020-02-04 A | 0% → 100% | 0d → none |
| 97 | Realize The Sprint | 2020-02-05 A | 2020-02-14 A | 0% → 100% | 0d → none |
| 98 | Review The Results | 2020-02-17 A | 2020-02-17 A | 0% → 100% | 0d → none |
| 99 | **Sprint 3** | 2020-02-18 A | 2020-03-02 A | 0% → 100% | 0d → none |
| 100 | Plan The Sprint | 2020-02-18 A | 2020-02-18 A | 0% → 100% | 0d → none |
| 101 | Realize The Sprint | 2020-02-19 A | 2020-02-28 A | 0% → 100% | 0d → none |
| 102 | Review The Results | 2020-03-02 A | 2020-03-02 A | 0% → 100% | 0d → none |
| 103 | **Sprint 4** | 2020-03-03 A | 2020-03-16 A | 0% → 100% | 0d → none |
| 104 | Plan The Sprint | 2020-03-03 A | 2020-03-03 A | 0% → 100% | 0d → none |
| 105 | Realize The Sprint | 2020-03-04 A | 2020-03-13 A | 0% → 100% | 0d → none |
| 106 | Review The Results | 2020-03-16 A | 2020-03-16 A | 0% → 100% | 0d → none |
| 107 | Sprints Completed | 2020-03-16 A | 2020-03-16 A | 0% → 100% | 0d → none |
| 108 | **Integration Tests** | 2020-03-17 A | 2020-03-23 A | 0% → 100% | 0d → none |
| 109 | Integration Test Every Module | 2020-03-17 A | 2020-03-23 A | 0% → 100% | 0d → none |
| 110 | Fix Bugs | 2020-03-17 A | 2020-03-23 A | 0% → 100% | 0d → none |
| 111 | Passed All Integration Tests | 2020-03-23 A | 2020-03-23 A | 0% → 100% | 0d → none |
| 112 | **Transition** | 2020-03-24 A | 2020-04-23 A | 0% → 100% | 0d → none |
| 113 | **Hardware and Infrastructure** | 2020-03-24 A | 2020-03-26 A | 0% → 100% | 0d → none |
| 114 | Planning of the setup | 2020-03-24 A | 2020-03-24 A | 0% → 100% | 0d → none |
| 115 | Setup of Hardware and Infrastructure | 2020-03-25 A | 2020-03-26 A | 0% → 100% | 0d → none |
| 116 | Hardware and Infrastructure Installed | 2020-03-26 A | 2020-03-26 A | 0% → 100% | 0d → none |
| 117 | **Software Installation** | 2020-03-27 A | 2020-03-31 A | 0% → 100% | 0d → none |
| 118 | Preparation of the environment for Installation | 2020-03-27 A | 2020-03-27 A | 0% → 100% | 0d → none |
| 119 | Installation of Software | 2020-03-30 A | 2020-03-31 A | 0% → 100% | 0d → none |
| 120 | Software Installed | 2020-03-31 A | 2020-03-31 A | 0% → 100% | 0d → none |
| 121 | **Data Migration** | 2020-04-01 A | 2020-04-02 A | 0% → 100% | 0d → none |
| 122 | Prepare the system to receive training data | 2020-04-01 A | 2020-04-01 A | 0% → 100% | 0d → none |
| 123 | Migrate training information to the system | 2020-04-02 A | 2020-04-02 A | 0% → 100% | 0d → none |
| 124 | Data Migrated | 2020-04-02 A | 2020-04-02 A | 0% → 100% | 0d → none |

| ID | Task | Start | Finish | Complete | Total float |
| --- | --- | --- | --- | --- | --- |
| 125 | **Training** | 2020-04-03 A | 2020-04-08 A | 0% → 100% | 0d → none |
| 126 | Train The HRD Staff To Use The Software | 2020-04-03 A | 2020-04-06 A | 0% → 100% | 0d → none |
| 127 | Train The DSI Staff To Use The Software | 2020-04-07 A | 2020-04-08 A | 0% → 100% | 0d → none |
| 128 | Target Users Trained | 2020-04-08 A | 2020-04-08 A | 0% → 100% | 0d → none |
| 129 | **System Tests** | 2020-04-09 A | 2020-04-16 A | 0% → 100% | 0d → none |
| 130 | Run System Tests | 2020-04-09 A | 2020-04-16 A | 0% → 100% | 0d → none |
| 131 | Fix Bugs | 2020-04-09 A | 2020-04-16 A | 0% → 100% | 0d → none |
| 132 | Project Transition Completed | 2020-04-16 A | 2020-04-16 A | 0% → 100% | 0d → none |
| 133 | **Acceptance Tests** | 2020-04-17 A | 2020-04-23 A | 0% → 100% | 0d → none |
| 134 | Run Acceptance Tests | 2020-04-17 A | 2020-04-23 A | 0% → 100% | 0d → none |
| 135 | Fix Bugs | 2020-04-17 A | 2020-04-23 A | 0% → 100% | 0d → none |
| 136 | Acceptance Tests Approved | 2020-04-23 A | 2020-04-23 A | 0% → 100% | 0d → none |
| 137 | **Operation** | 2020-04-24 A | 2020-07-27 A | 0% → 100% | 0d → none |
| 138 | Support | 2020-04-24 A | 2020-04-30 A | 0% → 100% | 0d → none |
| 139 | Warranty | 2020-05-04 A | 2020-07-27 A | 0% → 100% | 0d → none |

## Version 19 (data date 2020-01-31, saved 2019-12-07, file NewClose.mpp)

Note of the change: Added changes and reports

Last finish 2020-07-28 → 2020-08-05 (+8d). Complete tasks 109 → 45.

Added:

| ID | Task | Duration | Start | Finish | Predecessors | Resources |
| --- | --- | --- | --- | --- | --- | --- |
| 73 | Design and Implementation of new Requirements | 10d | 2020-02-06 | 2020-02-19 | 72 | Technical Coordinator; Consultant 1 (TC); Consultant 2 (TC); Trainee |

Changed:

| ID | Task | Start | Finish | Duration | Complete | Total float | Predecessors |
| --- | --- | --- | --- | --- | --- | --- | --- |
| 1 | **Project Management** |  | 2020-07-28 A → 2020-08-05 (+8d) | 166d → 172d | 100% → 54% | none → 0d |  |
| 14 | **Control** |  | 2020-04-03 A → 2020-04-03 |  | 100% → 44% | none → 85d |  |
| 22 | Control 8 | 2020-02-07 A → 2020-02-07 | 2020-02-07 A → 2020-02-07 |  | 100% → 0% | none → 116d |  |
| 23 | Control 9 | 2020-02-14 A → 2020-02-14 | 2020-02-14 A → 2020-02-14 |  | 100% → 0% | none → 111d |  |
| 24 | Control 10 | 2020-02-21 A → 2020-02-21 | 2020-02-21 A → 2020-02-21 |  | 100% → 0% | none → 106d |  |
| 25 | Control 11 | 2020-02-28 A → 2020-02-28 | 2020-02-28 A → 2020-02-28 |  | 100% → 0% | none → 101d |  |
| 26 | Control 12 | 2020-03-06 A → 2020-03-06 | 2020-03-06 A → 2020-03-06 |  | 100% → 0% | none → 96d |  |
| 27 | Control 13 | 2020-03-13 A → 2020-03-13 | 2020-03-13 A → 2020-03-13 |  | 100% → 0% | none → 91d |  |
| 28 | Control 14 | 2020-03-20 A → 2020-03-20 | 2020-03-20 A → 2020-03-20 |  | 100% → 0% | none → 86d |  |
| 29 | Control 15 | 2020-03-27 A → 2020-03-27 | 2020-03-27 A → 2020-03-27 |  | 100% → 0% | none → 81d |  |
| 30 | Control 16 | 2020-04-03 A → 2020-04-03 | 2020-04-03 A → 2020-04-03 |  | 100% → 0% | none → 76d |  |
| 31 | **Project Close** | 2020-04-24 A → 2020-05-05 (+11d) | 2020-07-28 A → 2020-08-05 (+8d) |  | 100% → 0% | none → 0d |  |
| 32 | Review Project Objectives | 2020-04-24 A → 2020-05-05 (+11d) | 2020-04-24 A → 2020-05-05 (+11d) |  | 100% → 0% | none → 62d |  |
| 33 | Collect Lessons Learned | 2020-04-27 A → 2020-05-06 (+9d) | 2020-04-27 A → 2020-05-06 (+9d) |  | 100% → 0% | none → 62d |  |
| 34 | Provide Feedback | 2020-04-28 A → 2020-05-07 (+9d) | 2020-04-28 A → 2020-05-07 (+9d) |  | 100% → 0% | none → 62d |  |
| 35 | Close Contracts | 2020-07-28 A → 2020-08-05 (+8d) | 2020-07-28 A → 2020-08-05 (+8d) |  | 100% → 0% | none → 0d |  |
| 36 | Project Closed | 2020-07-28 A → 2020-08-05 (+8d) | 2020-07-28 A → 2020-08-05 (+8d) |  | 100% → 0% | none → 0d |  |
| 62 | **Realization** |  | 2020-03-23 A → 2020-03-31 (+8d) | 46d → 52d | 100% → 20% | none → 0d |  |
| 69 | **Holidays and Absences** |  | 2020-02-07 A → 2020-02-21 (+14d) | 10d → 20d | 100% → 25% | none → 0d |  |
| 71 | Implement New Requirements |  | 2020-02-03 A → 2020-02-03 |  | 100% → 75% | none → 0d |  |
| 72 | Implement Profile Configuration | 2020-02-04 A → 2020-02-04 | 2020-02-05 A → 2020-02-05 |  | 100% → 0% | none → 0d |  |
| 74 | Test The Implementation | 2020-02-06 A → 2020-02-20 (+14d) | 2020-02-07 A → 2020-02-21 (+14d) |  | 100% → 0% | none → 0d | 72 → 73 |
| 75 | Finished Module 2 Implementation | 2020-02-07 A → 2020-02-21 (+14d) | 2020-02-07 A → 2020-02-21 (+14d) |  | 100% → 0% | none → 0d |  |
| 76 | **Training Management** | 2020-02-10 A → 2020-02-24 (+14d) | 2020-02-25 A → 2020-03-10 (+14d) |  | 100% → 0% | none → 0d |  |
| 77 | Parametrize The Module | 2020-02-10 A → 2020-02-24 (+14d) | 2020-02-11 A → 2020-02-25 (+14d) |  | 100% → 0% | none → 0d |  |
| 78 | Implement New Requirements | 2020-02-12 A → 2020-02-26 (+14d) | 2020-02-17 A → 2020-03-02 (+14d) |  | 100% → 0% | none → 0d |  |
| 79 | Create Script For Data Migration | 2020-02-18 A → 2020-03-03 (+14d) | 2020-02-19 A → 2020-03-04 (+14d) |  | 100% → 0% | none → 0d |  |
| 80 | Allowance | 2020-02-20 A → 2020-03-05 (+14d) | 2020-02-21 A → 2020-03-06 (+14d) |  | 100% → 0% | none → 0d |  |
| 81 | Test The Implementation | 2020-02-24 A → 2020-03-09 (+14d) | 2020-02-25 A → 2020-03-10 (+14d) |  | 100% → 0% | none → 0d |  |
| 82 | Finished Module 3 Implementation | 2020-02-25 A → 2020-03-10 (+14d) | 2020-02-25 A → 2020-03-10 (+14d) |  | 100% → 0% | none → 0d |  |
| 83 | **Interface Implementation** | 2020-03-02 A → 2020-03-11 (+9d) | 2020-03-13 A → 2020-03-24 (+11d) |  | 100% → 0% | none → 0d |  |
| 84 | Implement the WebService | 2020-03-02 A → 2020-03-11 (+9d) | 2020-03-03 A → 2020-03-12 (+9d) |  | 100% → 0% | none → 0d |  |
| 85 | Implement the interface to access employees' Data | 2020-03-04 A → 2020-03-13 (+9d) | 2020-03-05 A → 2020-03-16 (+11d) |  | 100% → 0% | none → 0d |  |
| 86 | Implement the interface to access employees' Salaries | 2020-03-06 A → 2020-03-17 (+11d) | 2020-03-06 A → 2020-03-17 (+11d) |  | 100% → 0% | none → 0d |  |
| 87 | Test The Implementation | 2020-03-09 A → 2020-03-18 (+9d) | 2020-03-10 A → 2020-03-19 (+9d) |  | 100% → 0% | none → 0d |  |
| 88 | Allowance | 2020-03-11 A → 2020-03-20 (+9d) | 2020-03-13 A → 2020-03-24 (+11d) |  | 100% → 0% | none → 0d |  |
| 89 | Finished Module 5 Implementation | 2020-03-13 A → 2020-03-24 (+11d) | 2020-03-13 A → 2020-03-24 (+11d) |  | 100% → 0% | none → 0d |  |
| 90 | **Corporate Information** |  | 2020-03-16 A → 2020-03-16 |  | 100% → 24% | none → 6d |  |
| 92 | **Sprint 1** |  | 2020-02-03 A → 2020-02-03 |  | 100% → 90% | none → 6d |  |
| 95 | Review The Results | 2020-02-03 A → 2020-02-03 | 2020-02-03 A → 2020-02-03 |  | 100% → 0% | none → 6d |  |
| 96 | **Sprint 2** | 2020-02-04 A → 2020-02-04 | 2020-02-17 A → 2020-02-17 |  | 100% → 0% | none → 6d |  |
| 97 | Plan The Sprint | 2020-02-04 A → 2020-02-04 | 2020-02-04 A → 2020-02-04 |  | 100% → 0% | none → 6d |  |
| 98 | Realize The Sprint | 2020-02-05 A → 2020-02-05 | 2020-02-14 A → 2020-02-14 |  | 100% → 0% | none → 6d |  |
| 99 | Review The Results | 2020-02-17 A → 2020-02-17 | 2020-02-17 A → 2020-02-17 |  | 100% → 0% | none → 6d |  |
| 100 | **Sprint 3** | 2020-02-18 A → 2020-02-18 | 2020-03-02 A → 2020-03-02 |  | 100% → 0% | none → 6d |  |
| 101 | Plan The Sprint | 2020-02-18 A → 2020-02-18 | 2020-02-18 A → 2020-02-18 |  | 100% → 0% | none → 6d |  |
| 102 | Realize The Sprint | 2020-02-19 A → 2020-02-19 | 2020-02-28 A → 2020-02-28 |  | 100% → 0% | none → 6d |  |
| 103 | Review The Results | 2020-03-02 A → 2020-03-02 | 2020-03-02 A → 2020-03-02 |  | 100% → 0% | none → 6d |  |
| 104 | **Sprint 4** | 2020-03-03 A → 2020-03-03 | 2020-03-16 A → 2020-03-16 |  | 100% → 0% | none → 6d |  |
| 105 | Plan The Sprint | 2020-03-03 A → 2020-03-03 | 2020-03-03 A → 2020-03-03 |  | 100% → 0% | none → 6d |  |
| 106 | Realize The Sprint | 2020-03-04 A → 2020-03-04 | 2020-03-13 A → 2020-03-13 |  | 100% → 0% | none → 6d |  |
| 107 | Review The Results | 2020-03-16 A → 2020-03-16 | 2020-03-16 A → 2020-03-16 |  | 100% → 0% | none → 6d |  |
| 108 | Sprints Completed | 2020-03-16 A → 2020-03-16 | 2020-03-16 A → 2020-03-16 |  | 100% → 0% | none → 6d |  |
| 109 | **Integration Tests** | 2020-03-17 A → 2020-03-25 (+8d) | 2020-03-23 A → 2020-03-31 (+8d) |  | 100% → 0% | none → 0d |  |
| 110 | Integration Test Every Module | 2020-03-17 A → 2020-03-25 (+8d) | 2020-03-23 A → 2020-03-31 (+8d) |  | 100% → 0% | none → 0d |  |
| 111 | Fix Bugs | 2020-03-17 A → 2020-03-25 (+8d) | 2020-03-23 A → 2020-03-31 (+8d) |  | 100% → 0% | none → 0d |  |
| 112 | Passed All Integration Tests | 2020-03-23 A → 2020-03-31 (+8d) | 2020-03-23 A → 2020-03-31 (+8d) |  | 100% → 0% | none → 0d |  |
| 113 | **Transition** | 2020-03-24 A → 2020-04-01 (+8d) | 2020-04-23 A → 2020-05-04 (+11d) |  | 100% → 0% | none → 0d |  |
| 114 | **Hardware and Infrastructure** | 2020-03-24 A → 2020-04-01 (+8d) | 2020-03-26 A → 2020-04-03 (+8d) |  | 100% → 0% | none → 0d |  |
| 115 | Planning of the setup | 2020-03-24 A → 2020-04-01 (+8d) | 2020-03-24 A → 2020-04-01 (+8d) |  | 100% → 0% | none → 0d |  |
| 116 | Setup of Hardware and Infrastructure | 2020-03-25 A → 2020-04-02 (+8d) | 2020-03-26 A → 2020-04-03 (+8d) |  | 100% → 0% | none → 0d |  |
| 117 | Hardware and Infrastructure Installed | 2020-03-26 A → 2020-04-03 (+8d) | 2020-03-26 A → 2020-04-03 (+8d) |  | 100% → 0% | none → 0d |  |
| 118 | **Software Installation** | 2020-03-27 A → 2020-04-06 (+10d) | 2020-03-31 A → 2020-04-08 (+8d) |  | 100% → 0% | none → 0d |  |
| 119 | Preparation of the environment for Installation | 2020-03-27 A → 2020-04-06 (+10d) | 2020-03-27 A → 2020-04-06 (+10d) |  | 100% → 0% | none → 0d |  |
| 120 | Installation of Software | 2020-03-30 A → 2020-04-07 (+8d) | 2020-03-31 A → 2020-04-08 (+8d) |  | 100% → 0% | none → 0d |  |
| 121 | Software Installed | 2020-03-31 A → 2020-04-08 (+8d) | 2020-03-31 A → 2020-04-08 (+8d) |  | 100% → 0% | none → 0d |  |
| 122 | **Data Migration** | 2020-04-01 A → 2020-04-09 (+8d) | 2020-04-02 A → 2020-04-13 (+11d) |  | 100% → 0% | none → 0d |  |
| 123 | Prepare the system to receive training data | 2020-04-01 A → 2020-04-09 (+8d) | 2020-04-01 A → 2020-04-09 (+8d) |  | 100% → 0% | none → 0d |  |
| 124 | Migrate training information to the system | 2020-04-02 A → 2020-04-13 (+11d) | 2020-04-02 A → 2020-04-13 (+11d) |  | 100% → 0% | none → 0d |  |
| 125 | Data Migrated | 2020-04-02 A → 2020-04-13 (+11d) | 2020-04-02 A → 2020-04-13 (+11d) |  | 100% → 0% | none → 0d |  |

| ID | Task | Start | Finish | Complete | Total float |
| --- | --- | --- | --- | --- | --- |
| 126 | **Training** | 2020-04-03 A → 2020-04-14 (+11d) | 2020-04-08 A → 2020-04-17 (+9d) | 100% → 0% | none → 0d |
| 127 | Train The HRD Staff To Use The Software | 2020-04-03 A → 2020-04-14 (+11d) | 2020-04-06 A → 2020-04-15 (+9d) | 100% → 0% | none → 0d |
| 128 | Train The DSI Staff To Use The Software | 2020-04-07 A → 2020-04-16 (+9d) | 2020-04-08 A → 2020-04-17 (+9d) | 100% → 0% | none → 0d |
| 129 | Target Users Trained | 2020-04-08 A → 2020-04-17 (+9d) | 2020-04-08 A → 2020-04-17 (+9d) | 100% → 0% | none → 0d |
| 130 | **System Tests** | 2020-04-09 A → 2020-04-20 (+11d) | 2020-04-16 A → 2020-04-24 (+8d) | 100% → 0% | none → 0d |
| 131 | Run System Tests | 2020-04-09 A → 2020-04-20 (+11d) | 2020-04-16 A → 2020-04-24 (+8d) | 100% → 0% | none → 0d |
| 132 | Fix Bugs | 2020-04-09 A → 2020-04-20 (+11d) | 2020-04-16 A → 2020-04-24 (+8d) | 100% → 0% | none → 0d |
| 133 | Project Transition Completed | 2020-04-16 A → 2020-04-24 (+8d) | 2020-04-16 A → 2020-04-24 (+8d) | 100% → 0% | none → 0d |
| 134 | **Acceptance Tests** | 2020-04-17 A → 2020-04-27 (+10d) | 2020-04-23 A → 2020-05-04 (+11d) | 100% → 0% | none → 0d |
| 135 | Run Acceptance Tests | 2020-04-17 A → 2020-04-27 (+10d) | 2020-04-23 A → 2020-05-04 (+11d) | 100% → 0% | none → 0d |
| 136 | Fix Bugs | 2020-04-17 A → 2020-04-27 (+10d) | 2020-04-23 A → 2020-05-04 (+11d) | 100% → 0% | none → 0d |
| 137 | Acceptance Tests Approved | 2020-04-23 A → 2020-05-04 (+11d) | 2020-04-23 A → 2020-05-04 (+11d) | 100% → 0% | none → 0d |
| 138 | **Operation** | 2020-04-24 A → 2020-05-05 (+11d) | 2020-07-27 A → 2020-08-04 (+8d) | 100% → 0% | none → 0d |
| 139 | Support | 2020-04-24 A → 2020-05-05 (+11d) | 2020-04-30 A → 2020-05-11 (+11d) | 100% → 0% | none → 0d |
| 140 | Warranty | 2020-05-04 A → 2020-05-12 (+8d) | 2020-07-27 A → 2020-08-04 (+8d) | 100% → 0% | none → 0d |

## Version 20 (data date 2020-08-05, saved 2019-12-07, file NewNEWCloseAll.mpp)

Note of the change: Added changes and reports

Last finish stays 2020-08-05. Complete tasks 45 → 110.

Changed:

| ID | Task | Start | Finish | Complete | Total float |
| --- | --- | --- | --- | --- | --- |
| 1 | **Project Management** |  | 2020-08-05 A | 54% → 100% | 0d → none |
| 14 | **Control** |  | 2020-04-03 A | 44% → 100% | 85d → none |
| 22 | Control 8 | 2020-02-07 A | 2020-02-07 A | 0% → 100% | 116d → none |
| 23 | Control 9 | 2020-02-14 A | 2020-02-14 A | 0% → 100% | 111d → none |
| 24 | Control 10 | 2020-02-21 A | 2020-02-21 A | 0% → 100% | 106d → none |
| 25 | Control 11 | 2020-02-28 A | 2020-02-28 A | 0% → 100% | 101d → none |
| 26 | Control 12 | 2020-03-06 A | 2020-03-06 A | 0% → 100% | 96d → none |
| 27 | Control 13 | 2020-03-13 A | 2020-03-13 A | 0% → 100% | 91d → none |
| 28 | Control 14 | 2020-03-20 A | 2020-03-20 A | 0% → 100% | 86d → none |
| 29 | Control 15 | 2020-03-27 A | 2020-03-27 A | 0% → 100% | 81d → none |
| 30 | Control 16 | 2020-04-03 A | 2020-04-03 A | 0% → 100% | 76d → none |
| 31 | **Project Close** | 2020-05-05 A | 2020-08-05 A | 0% → 100% | 0d → none |
| 32 | Review Project Objectives | 2020-05-05 A | 2020-05-05 A | 0% → 100% | 62d → none |
| 33 | Collect Lessons Learned | 2020-05-06 A | 2020-05-06 A | 0% → 100% | 62d → none |
| 34 | Provide Feedback | 2020-05-07 A | 2020-05-07 A | 0% → 100% | 62d → none |
| 35 | Close Contracts | 2020-08-05 A | 2020-08-05 A | 0% → 100% | 0d → none |
| 36 | Project Closed | 2020-08-05 A | 2020-08-05 A | 0% → 100% | 0d → none |
| 62 | **Realization** |  | 2020-03-31 A | 20% → 100% | 0d → none |
| 69 | **Holidays and Absences** |  | 2020-02-21 A | 25% → 100% | 0d → none |
| 71 | Implement New Requirements |  | 2020-02-03 A | 75% → 100% | 0d → none |
| 72 | Implement Profile Configuration | 2020-02-04 A | 2020-02-05 A | 0% → 100% | 0d → none |
| 73 | Design and Implementation of new Requirements | 2020-02-06 A | 2020-02-19 A | 0% → 100% | 0d → none |
| 74 | Test The Implementation | 2020-02-20 A | 2020-02-21 A | 0% → 100% | 0d → none |
| 75 | Finished Module 2 Implementation | 2020-02-21 A | 2020-02-21 A | 0% → 100% | 0d → none |
| 76 | **Training Management** | 2020-02-24 A | 2020-03-10 A | 0% → 100% | 0d → none |
| 77 | Parametrize The Module | 2020-02-24 A | 2020-02-25 A | 0% → 100% | 0d → none |
| 78 | Implement New Requirements | 2020-02-26 A | 2020-03-02 A | 0% → 100% | 0d → none |
| 79 | Create Script For Data Migration | 2020-03-03 A | 2020-03-04 A | 0% → 100% | 0d → none |
| 80 | Allowance | 2020-03-05 A | 2020-03-06 A | 0% → 100% | 0d → none |
| 81 | Test The Implementation | 2020-03-09 A | 2020-03-10 A | 0% → 100% | 0d → none |
| 82 | Finished Module 3 Implementation | 2020-03-10 A | 2020-03-10 A | 0% → 100% | 0d → none |
| 83 | **Interface Implementation** | 2020-03-11 A | 2020-03-24 A | 0% → 100% | 0d → none |
| 84 | Implement the WebService | 2020-03-11 A | 2020-03-12 A | 0% → 100% | 0d → none |
| 85 | Implement the interface to access employees' Data | 2020-03-13 A | 2020-03-16 A | 0% → 100% | 0d → none |
| 86 | Implement the interface to access employees' Salaries | 2020-03-17 A | 2020-03-17 A | 0% → 100% | 0d → none |
| 87 | Test The Implementation | 2020-03-18 A | 2020-03-19 A | 0% → 100% | 0d → none |
| 88 | Allowance | 2020-03-20 A | 2020-03-24 A | 0% → 100% | 0d → none |
| 89 | Finished Module 5 Implementation | 2020-03-24 A | 2020-03-24 A | 0% → 100% | 0d → none |
| 90 | **Corporate Information** |  | 2020-03-16 A | 24% → 100% | 6d → none |
| 92 | **Sprint 1** |  | 2020-02-03 A | 90% → 100% | 6d → none |
| 95 | Review The Results | 2020-02-03 A | 2020-02-03 A | 0% → 100% | 6d → none |
| 96 | **Sprint 2** | 2020-02-04 A | 2020-02-17 A | 0% → 100% | 6d → none |
| 97 | Plan The Sprint | 2020-02-04 A | 2020-02-04 A | 0% → 100% | 6d → none |
| 98 | Realize The Sprint | 2020-02-05 A | 2020-02-14 A | 0% → 100% | 6d → none |
| 99 | Review The Results | 2020-02-17 A | 2020-02-17 A | 0% → 100% | 6d → none |
| 100 | **Sprint 3** | 2020-02-18 A | 2020-03-02 A | 0% → 100% | 6d → none |
| 101 | Plan The Sprint | 2020-02-18 A | 2020-02-18 A | 0% → 100% | 6d → none |
| 102 | Realize The Sprint | 2020-02-19 A | 2020-02-28 A | 0% → 100% | 6d → none |
| 103 | Review The Results | 2020-03-02 A | 2020-03-02 A | 0% → 100% | 6d → none |
| 104 | **Sprint 4** | 2020-03-03 A | 2020-03-16 A | 0% → 100% | 6d → none |
| 105 | Plan The Sprint | 2020-03-03 A | 2020-03-03 A | 0% → 100% | 6d → none |
| 106 | Realize The Sprint | 2020-03-04 A | 2020-03-13 A | 0% → 100% | 6d → none |
| 107 | Review The Results | 2020-03-16 A | 2020-03-16 A | 0% → 100% | 6d → none |
| 108 | Sprints Completed | 2020-03-16 A | 2020-03-16 A | 0% → 100% | 6d → none |
| 109 | **Integration Tests** | 2020-03-25 A | 2020-03-31 A | 0% → 100% | 0d → none |
| 110 | Integration Test Every Module | 2020-03-25 A | 2020-03-31 A | 0% → 100% | 0d → none |
| 111 | Fix Bugs | 2020-03-25 A | 2020-03-31 A | 0% → 100% | 0d → none |
| 112 | Passed All Integration Tests | 2020-03-31 A | 2020-03-31 A | 0% → 100% | 0d → none |
| 113 | **Transition** | 2020-04-01 A | 2020-05-04 A | 0% → 100% | 0d → none |
| 114 | **Hardware and Infrastructure** | 2020-04-01 A | 2020-04-03 A | 0% → 100% | 0d → none |
| 115 | Planning of the setup | 2020-04-01 A | 2020-04-01 A | 0% → 100% | 0d → none |
| 116 | Setup of Hardware and Infrastructure | 2020-04-02 A | 2020-04-03 A | 0% → 100% | 0d → none |
| 117 | Hardware and Infrastructure Installed | 2020-04-03 A | 2020-04-03 A | 0% → 100% | 0d → none |
| 118 | **Software Installation** | 2020-04-06 A | 2020-04-08 A | 0% → 100% | 0d → none |
| 119 | Preparation of the environment for Installation | 2020-04-06 A | 2020-04-06 A | 0% → 100% | 0d → none |
| 120 | Installation of Software | 2020-04-07 A | 2020-04-08 A | 0% → 100% | 0d → none |
| 121 | Software Installed | 2020-04-08 A | 2020-04-08 A | 0% → 100% | 0d → none |
| 122 | **Data Migration** | 2020-04-09 A | 2020-04-13 A | 0% → 100% | 0d → none |
| 123 | Prepare the system to receive training data | 2020-04-09 A | 2020-04-09 A | 0% → 100% | 0d → none |
| 124 | Migrate training information to the system | 2020-04-13 A | 2020-04-13 A | 0% → 100% | 0d → none |

| ID | Task | Start | Finish | Complete | Total float |
| --- | --- | --- | --- | --- | --- |
| 125 | Data Migrated | 2020-04-13 A | 2020-04-13 A | 0% → 100% | 0d → none |
| 126 | **Training** | 2020-04-14 A | 2020-04-17 A | 0% → 100% | 0d → none |
| 127 | Train The HRD Staff To Use The Software | 2020-04-14 A | 2020-04-15 A | 0% → 100% | 0d → none |
| 128 | Train The DSI Staff To Use The Software | 2020-04-16 A | 2020-04-17 A | 0% → 100% | 0d → none |
| 129 | Target Users Trained | 2020-04-17 A | 2020-04-17 A | 0% → 100% | 0d → none |
| 130 | **System Tests** | 2020-04-20 A | 2020-04-24 A | 0% → 100% | 0d → none |
| 131 | Run System Tests | 2020-04-20 A | 2020-04-24 A | 0% → 100% | 0d → none |
| 132 | Fix Bugs | 2020-04-20 A | 2020-04-24 A | 0% → 100% | 0d → none |
| 133 | Project Transition Completed | 2020-04-24 A | 2020-04-24 A | 0% → 100% | 0d → none |
| 134 | **Acceptance Tests** | 2020-04-27 A | 2020-05-04 A | 0% → 100% | 0d → none |
| 135 | Run Acceptance Tests | 2020-04-27 A | 2020-05-04 A | 0% → 100% | 0d → none |
| 136 | Fix Bugs | 2020-04-27 A | 2020-05-04 A | 0% → 100% | 0d → none |
| 137 | Acceptance Tests Approved | 2020-05-04 A | 2020-05-04 A | 0% → 100% | 0d → none |
| 138 | **Operation** | 2020-05-05 A | 2020-08-04 A | 0% → 100% | 0d → none |
| 139 | Support | 2020-05-05 A | 2020-05-11 A | 0% → 100% | 0d → none |
| 140 | Warranty | 2020-05-12 A | 2020-08-04 A | 0% → 100% | 0d → none |
